# 4173-602-E-02

How a schedule from MS Project changed from version to version. A marks actual dates.

## Version 1 (saved 2018-05-24, file 4173-02.mpp)

Note of the change: third commit

| ID | WBS | Task | Duration | Start | Finish | Predecessors | Complete | Constraint |
| --- | --- | --- | --- | --- | --- | --- | --- | --- |
| 1 |  | PO RECEIPT | 0.55d | 2017-05-09 08:00 A | 2017-05-10 09:30 A |  | 100% |  |
| 2 |  | DRAWING SUBMISSION FOR APPROVAL | 32.55d | 2017-07-19 08:00 A | 2017-12-29 17:23 A | 1 | 100% |  |
| 3 | 3 | **PR ISSUE** | 55.79d | 2017-06-15 08:00 A | 2017-10-26 09:23 A |  | 100% |  |
| 4 |  | Plates and Rods-SA240 Gr.321 | 0d | 2017-08-05 08:00 A | 2017-08-05 08:00 A | 2 | 100% |  |
| 5 |  | Plates and Rods-SA240 Gr.304 | 0d | 2017-08-05 08:00 A | 2017-08-05 08:00 A | 2 | 100% |  |
| 6 |  | Plates and Rods-IS2062 Gr.B | 0d | 2017-08-14 08:00 A | 2017-08-14 08:00 A | 2 | 100% |  |
| 7 |  | Tube-SA213 TP321 | 3.86d | 2017-06-15 08:00 A | 2017-07-01 09:30 A | 1FS+6.62d | 100% |  |
| 8 |  | Tube-SA213 TP304 | 3.86d | 2017-06-15 08:00 A | 2017-07-01 09:30 A | 1FS+6.62d | 100% |  |
| 9 |  | Blank Forging-SA965 F321 | 0d | 2017-08-03 08:00 A | 2017-08-03 08:00 A | 2 | 100% |  |
| 10 |  | Blank Forging-SA965 F304 | 0d | 2017-08-03 08:00 A | 2017-08-03 08:00 A | 2 | 100% |  |
| 11 |  | Non Standard Forging-SA965 F321 | 0d | 2017-08-03 08:00 A | 2017-08-03 08:00 A | 2 | 100% |  |
| 12 |  | Non Standard Forging-SA965 F304 | 0d | 2017-08-03 08:00 A | 2017-08-03 08:00 A | 2 | 100% |  |
| 13 |  | Non Standard Forging-SA266 Gr.2 | 0d | 2017-08-03 08:00 A | 2017-08-03 08:00 A | 2 | 100% |  |
| 14 |  | Standard Forging-SA182 F321 | 0d | 2017-08-14 08:00 A | 2017-08-14 08:00 A | 2 | 100% |  |
| 15 |  | Standard Forging-SA182 F304 | 0d | 2017-08-14 08:00 A | 2017-08-14 08:00 A | 2 | 100% |  |
| 16 |  | Pipe-SA312 TP304 | 0d | 2017-08-16 08:00 A | 2017-08-16 08:00 A | 2 | 100% |  |
| 17 |  | Gaskets- | 3.31d | 2017-09-23 08:00 A | 2017-10-26 09:23 A | 2 | 100% |  |
| 18 |  | Fasteners- | 0d | 2017-08-16 08:00 A | 2017-08-16 08:00 A | 2 | 100% |  |
| 19 |  | Consumables-SS321 | 0.55d | 2017-10-20 08:00 A | 2017-10-21 09:30 A | 2 | 100% |  |
| 20 |  | Consumables-SS304 | 0.55d | 2017-10-20 08:00 A | 2017-10-21 09:30 A | 2 | 100% |  |
| 21 | 4 | **PO RECEIPT** | 98.21d | 2017-08-03 08:30 A | 2018-03-23 21:30 A |  | 100% |  |
| 22 |  | Plates and Rods-SA240 Gr.321 | 7.72d | 2017-09-01 08:00 A | 2017-10-10 09:29 A | 4 | 100% |  |
| 23 |  | Plates and Rods-SA240 Gr.304 | 26.48d | 2017-09-01 08:00 A | 2018-01-05 09:25 A | 5 | 100% |  |
| 24 |  | Plates and Rods-IS2062 Gr.B | 11.03d | 2017-08-14 08:30 A | 2017-09-08 17:30 A | 6 | 100% |  |
| 25 |  | Tube-SA213 TP321 | 0.55d | 2018-03-23 08:30 A | 2018-03-23 21:30 A |  | 100% | finish no earlier than 2018-03-23 21:30 |
| 26 |  | Tube-SA213 TP304 | 0.55d | 2018-03-23 08:30 A | 2018-03-23 21:30 A |  | 100% | finish no earlier than 2018-03-23 21:30 |
| 27 |  | Blank Forging-SA965 F321 | 41.38d | 2017-08-03 08:30 A | 2017-11-10 17:30 A | 9 | 100% |  |
| 28 |  | Blank Forging-SA965 F304 | 41.38d | 2017-08-03 08:30 A | 2017-11-10 17:30 A | 10 | 100% |  |
| 29 |  | Non Standard Forging-SA965 F321 | 41.38d | 2017-09-27 08:00 A | 2018-01-02 17:30 A | 11 | 100% |  |
| 30 |  | Non Standard Forging-SA965 F304 | 41.38d | 2017-09-27 08:00 A | 2018-01-02 17:30 A | 12 | 100% |  |
| 31 |  | Non Standard Forging-SA266 Gr.2 | 41.38d | 2017-09-27 08:00 A | 2018-01-02 17:30 A | 13 | 100% |  |
| 32 |  | Standard Forging-SA182 F321 | 41.38d | 2017-09-27 08:00 A | 2018-01-02 17:30 A | 14 | 100% |  |
| 33 |  | Standard Forging-SA182 F304 | 41.38d | 2017-09-27 08:00 A | 2018-01-02 17:30 A | 15 | 100% |  |
| 34 |  | Pipe-SA312 TP304 | 16.55d | 2017-08-16 08:30 A | 2017-09-22 17:30 A | 16 | 100% |  |
| 35 |  | Gaskets- | 27.59d | 2017-10-26 09:23 A | 2017-12-29 09:23 A | 17 | 100% |  |
| 36 |  | Fasteners- | 27.59d | 2017-08-16 08:30 A | 2017-10-21 17:30 A | 18 | 100% |  |
| 37 |  | Consumables-SS321 | 13.79d | 2017-10-21 09:30 A | 2017-11-22 09:30 A | 19 | 100% |  |
| 38 |  | Consumables-SS304 | 13.79d | 2017-10-21 09:30 A | 2017-11-22 09:30 A | 20 | 100% |  |
| 39 | 5 | **Fab: 4173-602-E-02** | 180.48d | 2017-09-27 08:30 A | 2018-04-25 17:30 A |  | 100% |  |
| 40 | 5.1 | **MATERIAL RECEIPT** | 151.79d | 2017-09-27 08:30 A | 2018-03-23 17:30 A |  | 100% |  |
| 41 |  | PLATE FOR SHELL | 1d | 2017-09-27 08:30 A | 2017-09-28 16:00 A |  | 100% | start no earlier than 2017-09-27 06:00 |
| 42 |  | SHELL BONNET | 1d | 2017-09-27 08:30 A | 2017-09-28 16:00 A | 41SS | 100% |  |
| 43 |  | SHELL FLANGE | 1d | 2017-09-27 08:30 A | 2017-09-28 16:00 A | 41SS | 100% |  |
| 44 |  | PLATE FOR CHANNEL | 1d | 2017-09-27 08:30 A | 2017-09-28 16:00 A | 41SS | 100% |  |
| 45 |  | CHANNEL BONNET | 1d | 2017-09-27 08:30 A | 2017-09-28 16:00 A | 41SS | 100% |  |
| 46 |  | CHANNEL FLANGE | 1d | 2017-09-27 08:30 A | 2017-09-28 16:00 A | 41SS | 100% |  |
| 47 |  | NOZZLE NECK WITH FLG | 1d | 2017-09-27 08:30 A | 2017-09-28 16:00 A | 41SS | 100% |  |
| 48 |  | U TUBE | 0.55d | 2018-03-23 08:30 A | 2018-03-23 17:30 A | 41SS | 100% | finish no earlier than 2018-03-23 21:30 |
| 49 |  | TUBE SHEET | 1d | 2017-09-27 08:30 A | 2017-09-28 16:00 A | 41SS | 100% |  |
| 50 |  | IMPINGEMENT PLATE | 1d | 2017-09-27 08:30 A | 2017-09-28 16:00 A | 41SS | 100% |  |
| 51 |  | PP PLATE | 1d | 2017-09-27 08:30 A | 2017-09-28 16:00 A | 41SS | 100% |  |
| 52 |  | NAME PLATE | 1d | 2017-09-27 08:30 A | 2017-09-28 16:00 A | 41SS | 100% |  |
| 53 |  | SUPPORT PLATES | 1d | 2017-09-27 08:30 A | 2017-09-28 16:00 A | 41SS | 100% |  |
| 54 |  | BAFFLE PLATE | 1d | 2017-09-27 08:30 A | 2017-09-28 16:00 A | 41SS | 100% |  |
| 55 |  | LIFTING LUG | 1d | 2017-09-27 08:30 A | 2017-09-28 16:00 A | 41SS | 100% |  |
| 56 |  | SRN NOZZLE | 1d | 2017-09-27 08:30 A | 2017-09-28 16:00 A | 41SS | 100% |  |
| 57 |  | NOZZLE FLG | 1d | 2017-09-27 08:30 A | 2017-09-28 16:00 A | 41SS | 100% |  |
| 58 |  | SADDLE MATERIAL | 1d | 2017-09-27 08:30 A | 2017-09-28 16:00 A | 41SS | 100% |  |
| 59 |  | INSULATION CLEAT | 1d | 2017-09-27 08:30 A | 2017-09-28 16:00 A | 41SS | 100% |  |
| 60 |  | SPACER TUBE | 1d | 2017-09-27 08:30 A | 2017-09-28 16:00 A | 41SS | 100% |  |
| 61 |  | SLIDING STRIP | 1d | 2017-09-27 08:30 A | 2017-09-28 16:00 A | 41SS | 100% |  |
| 62 |  | TIE ROD | 1d | 2017-09-27 08:30 A | 2017-09-28 16:00 A | 41SS | 100% |  |
| 63 |  | FASTENERS | 1d | 2017-09-27 08:30 A | 2017-09-28 16:00 A | 41SS | 100% |  |
| 64 |  | GASKETS | 1d | 2017-09-27 08:30 A | 2017-09-28 16:00 A | 41SS | 100% |  |
| 65 | 5.2 | **CHANNEL LS1- FABRICATION** | 7.73d | 2017-09-28 16:00 A | 2017-10-07 16:02 A |  | 100% |  |
| 66 |  | LS1-PLATE MARKING | 3h | 2017-09-28 16:00 A | 2017-09-28 19:00 A | 44 | 100% |  |
| 67 |  | LS1- STAMPING | 3h | 2017-09-28 19:00 A | 2017-09-28 22:00 A | 66 | 100% |  |
| 68 |  | LS1-PL CUTTING | 4h | 2017-09-29 06:00 A | 2017-09-29 10:00 A | 67 | 100% |  |
| 69 |  | LS1-GRINDING | 5h | 2017-09-29 10:00 A | 2017-09-29 15:01 A | 68 | 100% |  |
| 70 |  | LS1-EDGE PREPARATION | 3h | 2017-09-29 15:01 A | 2017-09-29 18:01 A | 69 | 100% |  |

| ID | WBS | Task | Duration | Start | Finish | Predecessors | Complete | Constraint |
| --- | --- | --- | --- | --- | --- | --- | --- | --- |
| 71 |  | LS1-PRE BENDING | 5h | 2017-09-29 18:01 A | 2017-09-30 07:01 A | 70 | 100% |  |
| 72 |  | LS1-PREBEND CUTOFF | 3h | 2017-09-30 07:01 A | 2017-09-30 10:01 A | 71 | 100% |  |
| 73 |  | LS1-EDGE PREPARTION | 3h | 2017-09-30 10:01 A | 2017-09-30 13:01 A | 72 | 100% |  |
| 74 |  | LS1-ROLLING | 6h | 2017-09-30 13:01 A | 2017-09-30 19:02 A | 73 | 100% |  |
| 75 |  | LS1-ACID CLEANING | 5h | 2017-09-30 19:02 A | 2017-10-03 08:02 A | 74 | 100% |  |
| 76 |  | LS1-FITUP | 6h | 2017-10-03 08:02 A | 2017-10-03 14:02 A | 75 | 100% |  |
| 77 |  | LS1-SPIDERUP | 5h | 2017-10-03 14:02 A | 2017-10-03 19:02 A | 76 | 100% |  |
| 78 |  | LS1-FITUP INSPECTION | 1d | 2017-10-03 19:02 A | 2017-10-04 17:32 A | 77 | 100% |  |
| 79 |  | LS1-WELDING | 9h | 2017-10-04 17:32 A | 2017-10-05 10:32 A | 78 | 100% |  |
| 80 |  | LS1-FLUSH GRIND | 4h | 2017-10-05 10:32 A | 2017-10-05 14:32 A | 79 | 100% |  |
| 81 |  | LS1-REROLLING | 6h | 2017-10-05 14:32 A | 2017-10-05 20:32 A | 80 | 100% |  |
| 82 |  | LS1-DPCHECK | 4h | 2017-10-05 20:32 A | 2017-10-06 08:32 A | 81 | 100% |  |
| 83 |  | LS1-RADIOGRAPHY | 1d | 2017-10-06 08:32 A | 2017-10-07 16:02 A | 82 | 100% |  |
| 84 | 5.3 | **SHELL LS2-FABRICATION** | 118.97d | 2017-09-28 19:00 A | 2018-02-16 16:00 A |  | 100% |  |
| 85 |  | LS2-PLATE MARKING | 15.98h | 2017-09-28 19:00 A | 2018-02-02 22:00 A | 41, 66 | 100% | finish no later than 2018-02-12 22:00 |
| 86 |  | LS2-STAMPING | 15.98h | 2018-02-02 06:00 A | 2018-02-02 22:00 A | 85 | 100% |  |
| 87 |  | LS2-PL CUTTING | 5h | 2018-02-03 06:00 A | 2018-02-03 11:00 A | 86 | 100% |  |
| 88 |  | LS2-GRINDING | 5h | 2018-02-03 11:00 A | 2018-02-03 16:01 A | 87 | 100% |  |
| 89 |  | LS2-EDGE PREPARATION | 0.52h | 2018-02-03 16:01 A | 2018-02-03 16:32 A | 88 | 100% |  |
| 90 |  | LS2-PREBENDING | 5h | 2018-02-03 16:32 A | 2018-02-03 21:32 A | 89 | 100% |  |
| 91 |  | LS2-PREBEND CUTOFF | 16.48h | 2018-02-05 06:00 A | 2018-02-06 06:30 A | 90 | 100% |  |
| 92 |  | LS2-EDGE PREPARATION | 15.98h | 2018-02-05 06:00 A | 2018-02-05 22:00 A | 91 | 100% |  |
| 93 |  | LS2-ROLLING | 18.48h | 2018-02-06 06:00 A | 2018-02-07 08:30 A | 92 | 100% |  |
| 94 |  | LS2-ACIDCLEANING | 18.09h | 2018-02-07 08:30 A | 2018-02-08 10:36 A | 93 | 100% |  |
| 95 |  | LS2-FITUP | 14.04h | 2018-02-08 10:36 A | 2018-02-09 08:39 A | 94 | 100% |  |
| 96 |  | LS2-SPIDERUP | 5h | 2018-02-09 08:39 A | 2018-02-09 13:39 A | 95 | 100% |  |
| 97 |  | LS2-FITUP INSPECTION | 0.99d | 2018-02-09 13:39 A | 2018-02-12 12:00 A | 96 | 100% |  |
| 98 |  | LS2-WELDING | 27h | 2018-02-12 12:00 A | 2018-02-14 07:00 A | 97 | 100% |  |
| 99 |  | LS2-FLUSHGRIND | 10h | 2018-02-14 07:00 A | 2018-02-14 17:00 A | 98 | 100% |  |
| 100 |  | LS2-REROLLING | 5h | 2018-02-14 17:00 A | 2018-02-14 22:00 A | 99 | 100% |  |
| 101 |  | LS2-DPCHECK | 16h | 2018-02-14 06:00 A | 2018-02-14 22:00 A | 100 | 100% |  |
| 102 |  | LS2-RADIOGRAPHY | 1d | 2018-02-15 08:30 A | 2018-02-16 16:00 A | 101 | 100% |  |
| 103 | 5.4 | **SHELL LS3- FABRICATION** | 11.21d | 2018-02-09 06:00 A | 2018-02-22 08:30 A |  | 100% |  |
| 104 |  | LS3-PLATE MARKING | 15.98h | 2018-02-09 06:00 A | 2018-02-09 22:00 A | 84 | 100% |  |
| 105 |  | LS3-STAMPING | 15.98h | 2018-02-12 06:00 A | 2018-02-12 22:00 A | 104 | 100% |  |
| 106 |  | LS3-PL CUTTING | 4.5h | 2018-02-12 06:00 A | 2018-02-12 10:30 A | 105 | 100% |  |
| 107 |  | LS3-GRINDING | 17.98h | 2018-02-13 06:00 A | 2018-02-14 08:00 A | 106 | 100% |  |
| 108 |  | LS3-EDGE PREPARATION | 15.98h | 2018-02-15 06:00 A | 2018-02-15 22:00 A | 107 | 100% |  |
| 109 |  | LS3-PREBENDING | 15h | 2018-02-16 06:00 A | 2018-02-16 21:01 A | 108 | 100% |  |
| 110 |  | LS3-PREBEND CUTOFF | 15.98h | 2018-02-17 06:00 A | 2018-02-17 22:00 A | 109 | 100% |  |
| 111 |  | LS3-EDGE PREPARTION | 15.98h | 2018-02-19 06:00 A | 2018-02-19 22:00 A | 110 | 100% |  |
| 112 |  | LS3-ROLLING | 31.97h | 2018-02-19 06:00 A | 2018-02-20 22:00 A | 111 | 100% |  |
| 113 |  | LS3-ACIDCLEANING | 18.48h | 2018-02-21 06:00 A | 2018-02-22 08:30 A | 112 | 100% |  |
| 114 |  | LS3-FITUP | 15.98h | 2018-02-21 06:00 A | 2018-02-21 22:00 A | 113 | 100% |  |
| 115 |  | LS3-SPIDERUP | 16h | 2018-02-17 06:00 A | 2018-02-17 22:00 A | 114 | 100% |  |
| 116 |  | LS3-FITUP INSPECTION | 2.21d | 2018-02-16 06:00 A | 2018-02-17 22:00 A | 115 | 100% |  |
| 117 |  | LS3-WELDING | 42h | 2018-02-16 06:00 A | 2018-02-19 16:00 A | 116 | 100% |  |
| 118 |  | LS3-FLUSHGRIND | 10h | 2018-02-19 16:00 A | 2018-02-20 10:00 A | 117 | 100% |  |
| 119 |  | LS3-REROLLING | 6h | 2018-02-20 10:00 A | 2018-02-20 16:00 A | 118 | 100% |  |
| 120 |  | LS3-DPCHECK | 4h | 2018-02-20 16:00 A | 2018-02-20 20:00 A | 119 | 100% |  |
| 121 | 5.5 | **SHELL DISH FORMING** | 18.66d | 2017-12-26 06:00 A | 2018-01-16 20:30 A |  | 100% |  |
| 122 |  | DISH PLATE MARKING | 15.98h | 2017-12-26 06:00 A | 2017-12-26 22:00 A | 41, 104 | 100% |  |
| 123 |  | DISH PLATE CUTTING | 15.98h | 2017-12-26 06:00 A | 2017-12-26 22:00 A | 122 | 100% |  |
| 124 |  | DISH PLATE GRINDING | 6h | 2017-12-27 06:00 A | 2017-12-27 12:00 A | 123 | 100% |  |
| 125 |  | DISH FORMING | 3d | 2017-12-27 12:00 A | 2018-01-02 16:30 A | 124 | 100% |  |
| 126 |  | DISH INSPECTION | 1.1d | 2018-01-10 06:00 A | 2018-01-10 22:00 A | 125 | 100% |  |
| 127 |  | DISH SURFACE GRINDING | 21.98h | 2018-01-10 06:00 A | 2018-01-11 12:00 A | 126 | 100% |  |
| 128 |  | SF MARKING | 15.98h | 2018-01-10 06:00 A | 2018-01-10 22:00 A | 127 | 100% |  |
| 129 |  | SF CUTTING | 4h | 2018-01-11 06:00 A | 2018-01-11 10:00 A | 128 | 100% |  |
| 130 |  | GRINDING | 15.98h | 2018-01-12 06:00 A | 2018-01-12 22:00 A | 129 | 100% |  |
| 131 |  | DISH EP | 15.98h | 2018-01-12 06:00 A | 2018-01-12 22:00 A | 130 | 100% |  |
| 132 |  | FINAL INSPECTION | 1d | 2018-01-16 06:00 A | 2018-01-16 20:30 A | 131 | 100% |  |
| 133 | 5.6 | **CHANNEL DISH FORMING** | 10.6d | 2018-02-09 22:00 A | 2018-02-22 15:45 A |  | 100% |  |
| 134 |  | DISH PLATE MARKING | 3h | 2018-02-09 22:00 A | 2018-02-12 09:00 A | 45, 122 | 100% |  |
| 135 |  | DISH PLATE CUTTING | 4h | 2018-02-12 09:00 A | 2018-02-12 13:00 A | 134 | 100% |  |
| 136 |  | DISH PLATE GRINDING | 6h | 2018-02-12 13:00 A | 2018-02-12 19:00 A | 135 | 100% |  |
| 137 |  | DISH FORMING | 3d | 2018-02-13 08:30 A | 2018-02-19 12:00 A | 136 | 100% |  |
| 138 |  | DISH INSPECTION | 0.5d | 2018-02-19 12:00 A | 2018-02-19 19:15 A | 137 | 100% |  |
| 139 |  | DISH SURFACE GRINDING | 12h | 2018-02-19 19:15 A | 2018-02-20 15:15 A | 138 | 100% |  |
| 140 |  | SF MARKING | 3h | 2018-02-20 15:15 A | 2018-02-20 18:15 A | 139 | 100% |  |

| ID | WBS | Task | Duration | Start | Finish | Predecessors | Complete | Constraint |
| --- | --- | --- | --- | --- | --- | --- | --- | --- |
| 141 |  | SF CUTTING | 4h | 2018-02-20 18:15 A | 2018-02-21 06:15 A | 140 | 100% |  |
| 142 |  | GRINDING | 6h | 2018-02-21 06:15 A | 2018-02-21 12:15 A | 141 | 100% |  |
| 143 |  | DISH EP | 5h | 2018-02-21 12:15 A | 2018-02-21 17:15 A | 142 | 100% |  |
| 144 |  | FINAL INSPECTION | 1d | 2018-02-21 17:15 A | 2018-02-22 15:45 A | 143 | 100% |  |
| 145 | 5.7 | **PASS PARTITION PLATE WELDING** | 7.66d | 2018-03-15 06:00 A | 2018-03-22 21:00 A |  | 100% |  |
| 146 |  | PP PLATE MARKING | 3h | 2018-03-15 06:00 A | 2018-03-15 09:00 A | 50, 134 | 100% |  |
| 147 |  | CUTTING | 4h | 2018-03-15 11:30 A | 2018-03-15 15:30 A | 146 | 100% |  |
| 148 |  | GRINDING | 4h | 2018-03-15 15:30 A | 2018-03-15 19:30 A | 147 | 100% |  |
| 149 |  | WELDING ONTO CHANNEL | 43h | 2018-03-19 06:00 A | 2018-03-21 17:00 A | 65, 148 | 100% | start no earlier than 2018-03-20 06:00 |
| 150 |  | FLUSH GRIND | 15h | 2018-03-21 17:00 A | 2018-03-22 16:00 A | 149 | 100% |  |
| 151 |  | CLEANING | 5h | 2018-03-22 16:00 A | 2018-03-22 21:00 A | 150 | 100% |  |
| 152 | 5.8 | **NOZZLE FABRICATION(PIPE)** | 6.24d | 2018-02-22 06:00 A | 2018-03-01 16:30 A |  | 100% |  |
| 153 |  | PIPE MARKING | 16h | 2018-02-22 06:00 A | 2018-02-22 22:00 A | 47 | 100% |  |
| 154 |  | CUTTING | 3h | 2018-02-23 06:00 A | 2018-02-23 09:00 A | 153 | 100% |  |
| 155 |  | EDGE PREPARATION | 4h | 2018-02-23 09:00 A | 2018-02-23 13:00 A | 154 | 100% |  |
| 156 |  | MACHINING | 2.17d | 2018-02-23 13:00 A | 2018-02-27 12:30 A | 155 | 100% |  |
| 157 |  | PROFILE MARKING | 5h | 2018-02-27 12:30 A | 2018-02-27 17:30 A | 156 | 100% |  |
| 158 |  | PROFILE CUTTING | 17.5h | 2018-02-28 06:00 A | 2018-03-01 07:30 A | 157 | 100% |  |
| 159 |  | PROFILE GRINDING | 5h | 2018-03-01 07:30 A | 2018-03-01 12:30 A | 158 | 100% |  |
| 160 |  | EDEGE PREPARATION | 4h | 2018-03-01 12:30 A | 2018-03-01 16:30 A | 159 | 100% |  |
| 161 | 5.9 | **NOZZLE FABRICATION(PIPE)** | 1.29d | 2018-02-23 06:00 A | 2018-02-26 08:45 A |  | 100% |  |
| 162 |  | PIPE MARKING | 1h | 2018-02-23 06:00 A | 2018-02-23 07:00 A | 47, 153 | 100% |  |
| 163 |  | CUTTING | 1.5h | 2018-02-23 07:00 A | 2018-02-23 08:30 A | 162 | 100% |  |
| 164 |  | EDGE PREPARATION | 1h | 2018-02-23 08:30 A | 2018-02-23 09:30 A | 163 | 100% |  |
| 165 |  | MACHINING | 0.5d | 2018-02-23 09:30 A | 2018-02-23 19:15 A | 164 | 100% |  |
| 166 |  | PROFILE MARKING | 1h | 2018-02-23 19:15 A | 2018-02-23 20:15 A | 165 | 100% |  |
| 167 |  | PROFILE CUTTING | 1.5h | 2018-02-23 20:15 A | 2018-02-23 21:45 A | 166 | 100% |  |
| 168 |  | PROFILE GRINDING | 2h | 2018-02-23 21:45 A | 2018-02-26 07:45 A | 167 | 100% |  |
| 169 |  | EDEGE PREPARATION | 1h | 2018-02-26 07:45 A | 2018-02-26 08:45 A | 168 | 100% |  |
| 170 | 5.10 | **TUBESHEET FABRICATION** | 13.48d | 2017-09-29 19:31 A | 2017-10-17 06:58 A |  | 100% |  |
| 171 |  | PLATE MARKING | 3h | 2017-09-29 19:31 A | 2017-09-30 06:31 A | 49, 146 | 100% |  |
| 172 |  | STAMPING | 2h | 2017-09-30 06:31 A | 2017-09-30 08:31 A | 171 | 100% |  |
| 173 |  | PLASMA ARC CUTTING | 5h | 2017-09-30 08:31 A | 2017-09-30 13:31 A | 172 | 100% |  |
| 174 |  | GRINDING | 7h | 2017-09-30 13:31 A | 2017-09-30 20:32 A | 173 | 100% |  |
| 175 |  | INSPECTION | 1d | 2017-09-30 20:32 A | 2017-10-03 19:03 A | 174 | 100% |  |
| 176 |  | MACHINING | 1.5d | 2017-10-03 19:03 A | 2017-10-05 08:49 A | 175 | 100% |  |
| 177 |  | HOLES MARKING | 40h | 2017-10-05 08:49 A | 2017-10-07 16:52 A | 176 | 100% |  |
| 178 |  | DRILLING | 80h | 2017-10-07 16:52 A | 2017-10-13 16:57 A | 177 | 100% |  |
| 179 |  | EXPANSION GROOVING | 0h | 2017-10-13 16:57 A | 2017-10-13 16:57 A | 178 | 100% |  |
| 180 |  | TIE ROD HOLE MARKING | 2.5h | 2017-10-13 16:57 A | 2017-10-13 19:27 A | 179 | 100% |  |
| 181 |  | TIE ROD HOLE DRILLING | 5h | 2017-10-13 19:27 A | 2017-10-16 08:27 A | 180 | 100% |  |
| 182 |  | FINAL INSPECTION | 1d | 2017-10-16 08:27 A | 2017-10-17 06:58 A | 181 | 100% |  |
| 183 | 5.11 | **SUPPORT PLATE PREPARATION** | 9.03d | 2017-09-30 06:31 A | 2017-10-11 09:31 A |  | 100% |  |
| 184 |  | PLATE MARKING | 2h | 2017-09-30 06:31 A | 2017-09-30 08:31 A | 53, 171 | 100% |  |
| 185 |  | CUTTING | 3h | 2017-09-30 08:31 A | 2017-09-30 11:31 A | 184 | 100% |  |
| 186 |  | GRINDING | 4h | 2017-09-30 11:31 A | 2017-09-30 15:31 A | 185 | 100% |  |
| 187 |  | AXIS LINE MARKING | 1h | 2017-09-30 15:31 A | 2017-09-30 16:31 A | 186 | 100% |  |
| 188 |  | SLOT MARKING | 1h | 2017-09-30 16:31 A | 2017-09-30 17:31 A | 187 | 100% |  |
| 189 |  | SLOT CUTTING | 1.5h | 2017-09-30 17:31 A | 2017-09-30 19:01 A | 188 | 100% |  |
| 190 |  | DRILLING | 27h | 2017-09-30 19:01 A | 2017-10-04 14:01 A | 189 | 100% |  |
| 191 |  | DRILLING INSPECTION | 1d | 2017-10-04 14:01 A | 2017-10-05 12:31 A | 190 | 100% |  |
| 192 |  | OD MACHINING | 30h | 2017-10-05 12:31 A | 2017-10-07 10:31 A | 191 | 100% |  |
| 193 |  | GRINDING | 4h | 2017-10-07 10:31 A | 2017-10-07 14:31 A | 192 | 100% |  |
| 194 |  | HOLE CHAMFERING | 30h | 2017-10-07 14:31 A | 2017-10-10 12:31 A | 193 | 100% |  |
| 195 |  | TIE ROD HOLE MARKING | 2h | 2017-10-10 12:31 A | 2017-10-10 14:31 A | 194 | 100% |  |
| 196 |  | TIE ROD HOLE DRILLING | 4h | 2017-10-10 14:31 A | 2017-10-10 18:31 A | 195 | 100% |  |
| 197 |  | NOTCH FOR SLIDING STRIP | 3h | 2017-10-10 18:31 A | 2017-10-10 21:31 A | 196 | 100% |  |
| 198 |  | CLEANING | 4h | 2017-10-10 21:31 A | 2017-10-11 09:31 A | 197 | 100% |  |
| 199 | 5.12 | **BAFFLE PLATE PREPARATION** | 127.79d | 2017-09-30 08:31 A | 2018-02-28 21:30 A |  | 100% |  |
| 200 |  | PLATE MARKING | 8h | 2017-09-30 08:31 A | 2017-09-30 16:32 A | 184, 54 | 100% |  |
| 201 |  | CUTTING | 7h | 2017-09-30 16:32 A | 2017-10-03 07:32 A | 200 | 100% |  |
| 202 |  | GRINDING | 9h | 2017-10-03 07:32 A | 2017-10-03 16:33 A | 201 | 100% |  |
| 203 |  | AXIS LINE MARKING | 5h | 2017-10-03 16:33 A | 2017-10-03 21:33 A | 202 | 100% |  |
| 204 |  | STACKKING | 6h | 2017-10-03 21:33 A | 2017-10-04 11:33 A | 203 | 100% |  |
| 205 |  | DRILLING | 125h | 2017-10-04 11:33 A | 2017-10-13 08:41 A | 204 | 100% |  |
| 206 |  | DRILLING INSPECTION | 1d | 2017-10-13 08:41 A | 2017-10-16 07:11 A | 205 | 100% |  |
| 207 |  | OD MACHINING | 125h | 2017-10-16 07:11 A | 2017-10-25 20:11 A | 206 | 100% |  |
| 208 |  | DE-STACKING | 6h | 2017-10-25 20:11 A | 2017-10-26 10:11 A | 207 | 100% |  |
| 209 |  | GRIND THE STACKS | 9h | 2017-10-26 10:11 A | 2017-10-26 19:11 A | 208 | 100% |  |
| 210 |  | HOLE CHAMFERING | 125h | 2017-10-26 19:11 A | 2017-11-06 16:11 A | 209 | 100% |  |

| ID | WBS | Task | Duration | Start | Finish | Predecessors | Complete | Constraint |
| --- | --- | --- | --- | --- | --- | --- | --- | --- |
| 211 |  | NUMERING | 4h | 2017-11-06 16:11 A | 2017-11-06 20:11 A | 210 | 100% |  |
| 212 |  | SUPPORT PLATES ASSY | 3h | 2017-11-06 20:11 A | 2017-11-07 07:11 A | 211 | 100% |  |
| 213 |  | HOLE MATCHING | 1d | 2017-11-07 07:11 A | 2017-11-07 21:41 A | 212 | 100% |  |
| 214 |  | HOLES DRILLING IF REQD | 1d | 2017-11-07 21:41 A | 2017-11-08 20:11 A | 213 | 100% |  |
| 215 |  | CLEANING | 1377.32h | 2017-11-08 20:11 A | 2018-02-28 21:30 A | 214 | 100% | finish no later than 2018-02-28 21:30 |
| 216 | 5.13 | **SLIDING STRIP** | 2d | 2018-02-28 06:00 A | 2018-03-01 19:00 A |  | 100% |  |
| 217 |  | STRIP MARKING | 16h | 2018-02-28 06:00 A | 2018-02-28 22:00 A | 61, 200 | 100% |  |
| 218 |  | STRIP CUTTING | 2h | 2018-03-01 06:00 A | 2018-03-01 08:00 A | 217 | 100% |  |
| 219 |  | STRIP GRINDING | 3h | 2018-03-01 08:00 A | 2018-03-01 11:00 A | 218 | 100% |  |
| 220 |  | STRIP BEND REMEOVAL | 4h | 2018-03-01 11:00 A | 2018-03-01 15:00 A | 219 | 100% |  |
| 221 |  | STRIP MATCHING | 4h | 2018-03-01 15:00 A | 2018-03-01 19:00 A | 220 | 100% |  |
| 222 | 5.14 | **TIE ROD PREPARATION** | 7.86d | 2018-01-25 06:00 A | 2018-02-05 08:00 A |  | 100% |  |
| 223 |  | TIE ROD MARKING | 16h | 2018-01-25 06:00 A | 2018-01-25 22:00 A | 62, 217 | 100% |  |
| 224 |  | TIE ROD CUTTING | 5h | 2018-01-25 22:00 A | 2018-01-29 11:00 A | 223 | 100% |  |
| 225 |  | LENGTH JOINT WELDING IF REQD | 21h | 2018-01-30 06:00 A | 2018-01-31 11:00 A | 224 | 100% |  |
| 226 |  | THREAD MC | 2.83d | 2018-01-31 11:00 A | 2018-02-02 20:00 A | 225 | 100% |  |
| 227 |  | CLEANING | 18h | 2018-02-03 06:00 A | 2018-02-05 08:00 A | 226 | 100% |  |
| 228 | 5.15 | **SPACER TUBE PREPARATION** | 6.9d | 2018-01-29 06:00 A | 2018-02-05 10:00 A |  | 100% |  |
| 229 |  | TUBE MARKING | 12h | 2018-01-29 06:00 A | 2018-01-29 18:00 A | 62, 223 | 100% |  |
| 230 |  | TUBE CUTTING | 15h | 2018-01-29 18:00 A | 2018-01-30 17:00 A | 229 | 100% |  |
| 231 |  | TUBE M/C | 4d | 2018-01-30 17:00 A | 2018-02-03 11:00 A | 230 | 100% |  |
| 232 |  | CLEANING | 15h | 2018-02-03 11:00 A | 2018-02-05 10:00 A | 231 | 100% |  |
| 233 | 5.16 | **CS1-FITUP & WELDING** | 11.72d | 2018-02-14 06:00 A | 2018-02-27 16:00 A |  | 100% |  |
| 234 |  | SHELL LS2+LS3 READY | 6h | 2018-02-16 16:00 A | 2018-02-16 22:00 A | 84 | 100% |  |
| 235 |  | SHELL EP CORRECTION | 16h | 2018-02-16 06:00 A | 2018-02-16 22:00 A | 234 | 100% |  |
| 236 |  | CS1-FITUP | 10h | 2018-02-17 06:00 A | 2018-02-17 16:00 A | 235 | 100% |  |
| 237 |  | CS1-FITUP INSPECTION | 1d | 2018-02-17 16:00 A | 2018-02-19 14:30 A | 236 | 100% |  |
| 238 |  | CS1-WELDING | 80h | 2018-02-14 06:00 A | 2018-02-19 22:00 A | 237 | 100% |  |
| 239 |  | CS1-FLUSHGRIND | 26h | 2018-02-20 06:00 A | 2018-02-21 16:00 A | 238 | 100% |  |
| 240 |  | CS1-DPCHECK | 16h | 2018-02-20 06:00 A | 2018-02-20 22:00 A | 239 | 100% |  |
| 241 |  | CS1-INSIDE WELDING | 80h | 2018-02-14 06:00 A | 2018-02-19 22:00 A | 240 | 100% |  |
| 242 |  | CS1-DRESSUP | 56h | 2018-02-21 06:00 A | 2018-02-24 17:00 A | 241 | 100% |  |
| 243 |  | CS1-DPCHECK | 24h | 2018-02-19 06:00 A | 2018-02-24 17:00 A | 242 | 100% |  |
| 244 |  | CS1-RT | 1d | 2018-02-26 08:30 A | 2018-02-27 16:00 A | 243 | 100% |  |
| 245 | 5.17 | **CS2-FITUP & WELDING** | 16.14d | 2018-02-15 06:00 A | 2018-03-05 16:00 A |  | 100% |  |
| 246 |  | SHELL CS1+SHELL DISH | 16h | 2018-02-15 06:00 A | 2018-02-15 22:00 A | 233, 121 | 100% |  |
| 247 |  | SHELL EP CORRECTION | 0h | 2018-02-15 22:00 A | 2018-02-15 22:00 A | 246 | 100% |  |
| 248 |  | CS2-FITUP | 26h | 2018-02-16 06:00 A | 2018-02-17 16:00 A | 247 | 100% |  |
| 249 |  | CS2-FITUP INSPECTION | 0.45d | 2018-02-17 16:00 A | 2018-02-19 14:30 A | 248 | 100% |  |
| 250 |  | CS2-WELDING | 50h | 2018-02-19 14:30 A | 2018-02-22 16:30 A | 249 | 100% |  |
| 251 |  | CS2-FLUSHGRIND | 20h | 2018-02-22 16:30 A | 2018-02-23 20:30 A | 250 | 100% |  |
| 252 |  | CS2-DPCHECK | 5h | 2018-02-23 20:30 A | 2018-02-26 09:30 A | 251 | 100% |  |
| 253 |  | CS2-INSIDE WELDING | 50h | 2018-02-26 09:30 A | 2018-03-01 11:30 A | 252 | 100% |  |
| 254 |  | CS2-DRESSUP | 20h | 2018-03-01 11:30 A | 2018-03-02 15:30 A | 253 | 100% |  |
| 255 |  | CS2-DPCHECK | 5h | 2018-03-02 15:30 A | 2018-03-02 20:30 A | 254 | 100% |  |
| 256 |  | CS2-RT | 1d | 2018-03-03 08:30 A | 2018-03-05 16:00 A | 255 | 100% |  |
| 257 | 5.18 | **CS3-FITUP & WELDING** | 14.41d | 2018-02-22 15:45 A | 2018-03-12 16:45 A |  | 100% |  |
| 258 |  | SHELL LS1+CH DISH READY | 6h | 2018-02-22 15:45 A | 2018-02-22 21:45 A | 65, 133 | 100% |  |
| 259 |  | SHELL EP CORRECTION | 5h | 2018-02-22 21:45 A | 2018-02-23 10:45 A | 258 | 100% |  |
| 260 |  | CS3-FITUP | 10h | 2018-02-23 10:45 A | 2018-02-23 20:45 A | 259 | 100% |  |
| 261 |  | CS3-FITUP INSPECTION | 1d | 2018-02-23 20:45 A | 2018-02-26 19:15 A | 260 | 100% |  |
| 262 |  | CS3-WELDING | 50h | 2018-02-26 19:15 A | 2018-03-01 21:15 A | 261 | 100% |  |
| 263 |  | CS3-FLUSHGRIND | 20h | 2018-03-01 21:15 A | 2018-03-03 09:15 A | 262 | 100% |  |
| 264 |  | CS3-DPCHECK | 5h | 2018-03-03 09:15 A | 2018-03-03 14:15 A | 263 | 100% |  |
| 265 |  | CS3-INSIDE WELDING | 50h | 2018-03-03 14:15 A | 2018-03-07 16:15 A | 264 | 100% |  |
| 266 |  | CS3-DRESSUP | 20h | 2018-03-07 16:15 A | 2018-03-08 20:15 A | 265 | 100% |  |
| 267 |  | CS3-DPCHECK | 5h | 2018-03-08 20:15 A | 2018-03-09 09:15 A | 266 | 100% |  |
| 268 |  | CS3-RT | 1d | 2018-03-09 09:15 A | 2018-03-12 16:45 A | 267 | 100% |  |
| 269 | 5.19 | **SHELL FLG WELDING** | 6.24d | 2018-02-27 16:00 A | 2018-03-06 10:30 A |  | 100% |  |
| 270 |  | SHELL FLG AND SHELL FIT UP | 6h | 2018-02-27 16:00 A | 2018-02-27 22:00 A | 233, 43 | 100% |  |
| 271 |  | WELDING | 50h | 2018-02-28 06:00 A | 2018-03-03 08:00 A | 270 | 100% |  |
| 272 |  | FLUSH GRIND | 20h | 2018-03-03 08:00 A | 2018-03-05 12:00 A | 271 | 100% |  |
| 273 |  | INSPECTION | 1d | 2018-03-05 12:00 A | 2018-03-06 10:30 A | 272 | 100% |  |
| 274 | 5.20 | **CHANNEL FLG WELDING** | 3.52d | 2018-03-06 10:30 A | 2018-03-09 13:30 A |  | 100% |  |
| 275 |  | CH FLG AND CH FIT UP | 6h | 2018-03-06 10:30 A | 2018-03-06 16:30 A | 269 | 100% |  |
| 276 |  | WELDING | 25h | 2018-03-06 16:30 A | 2018-03-08 09:30 A | 275 | 100% |  |
| 277 |  | FLUSH GRIND | 10h | 2018-03-08 09:30 A | 2018-03-08 19:30 A | 276 | 100% |  |
| 278 |  | INSPECTION | 0.69d | 2018-03-08 19:30 A | 2018-03-09 13:30 A | 277 | 100% |  |
| 279 | 5.21 | **NOZZLE WELDING** | 6.59d | 2018-03-06 10:30 A | 2018-03-14 10:00 A |  | 100% |  |
| 280 |  | NOZZLE READY | 4h | 2018-03-06 10:30 A | 2018-03-06 14:30 A | 269 | 100% |  |

| ID | WBS | Task | Duration | Start | Finish | Predecessors | Complete | Constraint |
| --- | --- | --- | --- | --- | --- | --- | --- | --- |
| 281 |  | ORIENTATION MARKING | 3h | 2018-03-06 14:30 A | 2018-03-06 17:30 A | 280 | 100% |  |
| 282 |  | POSITION MARKING | 5h | 2018-03-06 17:30 A | 2018-03-07 06:30 A | 281 | 100% |  |
| 283 |  | NOZZLE OPENING | 6h | 2018-03-07 06:30 A | 2018-03-07 12:30 A | 282 | 100% |  |
| 284 |  | NOZZLE EP | 5h | 2018-03-07 12:30 A | 2018-03-07 17:30 A | 283 | 100% |  |
| 285 |  | NOZZLE FIT UP | 10h | 2018-03-07 17:30 A | 2018-03-08 11:30 A | 284 | 100% |  |
| 286 |  | NOZZLE WELDING | 10h | 2018-03-08 11:30 A | 2018-03-08 21:30 A | 285 | 100% |  |
| 287 |  | NOZ FLG FITUP | 12h | 2018-03-08 21:30 A | 2018-03-09 17:30 A | 286 | 100% |  |
| 288 |  | WELDING | 18h | 2018-03-09 17:30 A | 2018-03-12 19:30 A | 287 | 100% |  |
| 289 |  | DP/AIR TEST | 8h | 2018-03-12 19:30 A | 2018-03-13 11:30 A | 288 | 100% |  |
| 290 |  | INSPECTION | 1d | 2018-03-13 11:30 A | 2018-03-14 10:00 A | 289 | 100% |  |
| 291 | 5.22 | **NOZZLE WELDING** | 4.66d | 2018-03-09 13:30 A | 2018-03-15 17:00 A |  | 100% |  |
| 292 |  | NOZZLE READY | 5h | 2018-03-09 13:30 A | 2018-03-09 18:30 A | 274 | 100% |  |
| 293 |  | POSITION MARKING | 5h | 2018-03-09 18:30 A | 2018-03-12 07:30 A | 292 | 100% |  |
| 294 |  | NOZZLE OPENING | 8h | 2018-03-12 07:30 A | 2018-03-12 15:30 A | 293 | 100% |  |
| 295 |  | NOZZLE EP | 7h | 2018-03-12 15:30 A | 2018-03-13 06:30 A | 294 | 100% |  |
| 296 |  | NOZZLE FIT UP | 10h | 2018-03-13 06:30 A | 2018-03-13 16:30 A | 295 | 100% |  |
| 297 |  | NOZZLE WELDING | 10h | 2018-03-13 16:30 A | 2018-03-14 10:30 A | 296 | 100% |  |
| 298 |  | DP/AIR TEST | 8h | 2018-03-14 10:30 A | 2018-03-14 18:30 A | 297 | 100% |  |
| 299 |  | INSPECTION | 1d | 2018-03-14 18:30 A | 2018-03-15 17:00 A | 298 | 100% |  |
| 300 | 5.23 | **SADDLE SUPPORT WELDING** | 32d | 2018-02-16 06:00 A | 2018-03-24 17:00 A |  | 100% |  |
| 301 |  | SADDLE SUPPORT PLATE MARKING | 32h | 2018-02-16 06:00 A | 2018-02-19 22:00 A | 269 | 100% |  |
| 302 |  | SADDLE SUPPORT PLATE CUTTING | 36h | 2018-02-20 06:00 A | 2018-02-22 10:00 A | 301 | 100% |  |
| 303 |  | SADDLE SUPPORT PLATE GRINDING | 19h | 2018-02-23 06:00 A | 2018-02-26 09:00 A | 302 | 100% |  |
| 304 |  | DRILLING | 5h | 2018-02-26 09:00 A | 2018-02-26 14:00 A | 303 | 100% |  |
| 305 |  | COMPONENTS WELDING | 40h | 2018-02-26 14:00 A | 2018-02-28 22:00 A | 304 | 100% |  |
| 306 |  | SADDLE SUPPORT PLATE FIT UP | 20h | 2018-03-20 06:00 A | 2018-03-21 10:00 A |  | 100% | start no earlier than 2018-03-20 06:00 |
| 307 |  | SADDLE SUPPORT WELDING | 28h | 2018-03-22 06:00 A | 2018-03-23 18:00 A |  | 100% | start no earlier than 2018-03-22 06:00 |
| 308 |  | BEND REMOVAL | 4h | 2018-03-23 18:00 A | 2018-03-23 22:00 A | 307 | 100% |  |
| 309 |  | GRINDING | 8h | 2018-03-24 08:00 A | 2018-03-24 17:00 A | 308 | 100% | finish no earlier than 2018-03-23 21:30 |
| 310 | 5.24 | **NAME PLATE WELDING** | 1.1d | 2018-02-20 06:00 A | 2018-02-20 22:00 A |  | 100% |  |
| 311 |  | NAME PLATE MARKING | 3h | 2018-02-20 06:00 A | 2018-02-20 09:00 A | 52, 301 | 100% |  |
| 312 |  | CUTTING | 3h | 2018-02-20 09:00 A | 2018-02-20 12:00 A | 311 | 100% |  |
| 313 |  | GRINDING | 4h | 2018-02-20 12:00 A | 2018-02-20 16:00 A | 312 | 100% |  |
| 314 |  | WELDING | 4h | 2018-02-20 16:00 A | 2018-02-20 20:00 A | 313 | 100% |  |
| 315 |  | CLEANING | 2h | 2018-02-20 20:00 A | 2018-02-20 22:00 A | 314 | 100% |  |
| 316 | 5.25 | **LIFTING LUG WELDING** | 3.38d | 2018-02-20 09:00 A | 2018-02-23 10:00 A |  | 100% |  |
| 317 |  | PLATE MARKING | 3h | 2018-02-20 09:00 A | 2018-02-20 12:00 A | 55, 311 | 100% |  |
| 318 |  | CUTTING | 4h | 2018-02-20 12:00 A | 2018-02-20 16:00 A | 317 | 100% |  |
| 319 |  | GRINDING | 8h | 2018-02-20 16:00 A | 2018-02-21 08:00 A | 318 | 100% |  |
| 320 |  | DRILLING | 4h | 2018-02-21 08:00 A | 2018-02-21 12:00 A | 319 | 100% |  |
| 321 |  | PAD FORMING | 10h | 2018-02-21 12:00 A | 2018-02-21 22:00 A | 320 | 100% |  |
| 322 |  | WELDING | 16h | 2018-02-22 06:00 A | 2018-02-22 22:00 A | 321 | 100% |  |
| 323 |  | CLEANING | 4h | 2018-02-23 06:00 A | 2018-02-23 10:00 A | 322 | 100% |  |
| 324 | 5.26 | **INSULATION CLEAT WELDING** | 3.31d | 2018-02-20 12:00 A | 2018-02-23 12:00 A |  | 100% |  |
| 325 |  | PLATE MARKING | 10h | 2018-02-20 12:00 A | 2018-02-20 22:00 A | 59, 317 | 100% |  |
| 326 |  | CUTTING | 10h | 2018-02-21 06:00 A | 2018-02-21 16:00 A | 325 | 100% |  |
| 327 |  | GRINDING | 14h | 2018-02-21 16:00 A | 2018-02-22 14:00 A | 326 | 100% |  |
| 328 |  | WELDING | 6h | 2018-02-22 14:00 A | 2018-02-22 20:00 A | 327 | 100% |  |
| 329 |  | CLEANING | 8h | 2018-02-22 20:00 A | 2018-02-23 12:00 A | 328 | 100% |  |
| 330 | 5.27 | **TUBE BUNDLE ASSEMBLY** | 19.79d | 2018-03-06 06:00 A | 2018-03-28 21:00 A |  | 100% |  |
| 331 |  | TUBE SHEET INSPECTION | 1d | 2018-03-06 06:00 A | 2018-03-06 20:30 A |  | 100% | start no earlier than 2018-03-06 06:00 |
| 332 |  | ASSY FRAME SET UP | 5.33h | 2018-03-06 20:30 A | 2018-03-07 09:50 A | 331 | 100% |  |
| 333 |  | TUBE BUNDLE ASSY | 16h | 2018-03-21 06:00 A | 2018-03-21 22:00 A | 332, 183, 199, 216, 222, 228, 48 | 100% | start no earlier than 2018-03-21 06:00 |
| 334 |  | TUBE TIE ROD STACK WELD | 4h | 2018-03-22 06:00 A | 2018-03-22 10:00 A | 333 | 100% |  |
| 335 |  | U-TUBE INSERT | 15.67h | 2018-03-23 17:30 A | 2018-03-26 17:30 A | 334, 48 | 100% |  |
| 336 |  | TUBE SHEET WELDING | 9.5h | 2018-03-26 17:30 A | 2018-03-27 11:00 A | 335 | 100% |  |
| 337 |  | TUBE ROOT WELDING | 25.22h | 2018-03-26 06:00 A | 2018-03-27 20:13 A | 336 | 100% |  |
| 338 |  | TUBE ROOT WELDING DP | 1.78h | 2018-03-27 20:13 A | 2018-03-27 22:00 A | 337 | 100% |  |
| 339 |  | TUBE WELDING-FINAL | 4h | 2018-03-28 06:00 A | 2018-03-28 10:00 A | 338 | 100% |  |
| 340 |  | TUBE TRIMMING | 4h | 2018-03-28 10:00 A | 2018-03-28 14:00 A | 339 | 100% |  |
| 341 |  | TUBE EXPANSION | 4h | 2018-03-28 14:00 A | 2018-03-28 18:00 A | 340 | 100% |  |
| 342 |  | FINAL INSPECTION | 3h | 2018-03-28 18:00 A | 2018-03-28 21:00 A | 341 | 100% |  |
| 343 | 5.28 | **HYDRO TEST** | 2.9d | 2018-03-28 06:00 A | 2018-03-30 16:00 A |  | 100% |  |
| 344 |  | NDE CLEARANCE | 1h | 2018-03-28 21:00 A | 2018-03-28 22:00 A | 330 | 100% |  |
| 345 |  | PWHT | 1d | 2018-03-29 08:30 A | 2018-03-30 16:00 A | 344 | 100% |  |
| 346 |  | CLEANING AFTER PWHT | 16h | 2018-03-28 06:00 A | 2018-03-28 22:00 A | 345 | 100% |  |
| 347 |  | NDE AFTER PWHT | 16h | 2018-03-28 06:00 A | 2018-03-28 22:00 A | 346 | 100% |  |
| 348 |  | TUBE BUNDLE INSERT | 16h | 2018-03-28 06:00 A | 2018-03-28 22:00 A | 347 | 100% |  |
| 349 |  | SHELL SIDE PNUEMATIC TEST | 18h | 2018-03-28 06:00 A | 2018-03-29 08:00 A | 348 | 100% |  |
| 350 |  | TUBE BUNDLE OUTSIDE TEST | 16h | 2018-03-28 06:00 A | 2018-03-28 22:00 A | 349 | 100% |  |

| ID | WBS | Task | Duration | Start | Finish | Predecessors | Complete |
| --- | --- | --- | --- | --- | --- | --- | --- |
| 351 |  | TPI WITNESS | 16h | 2018-03-28 06:00 A | 2018-03-28 22:00 A | 350 | 100% |
| 352 |  | SHELL SIDE HYDRO TEST | 16h | 2018-03-29 06:00 A | 2018-03-29 22:00 A | 351 | 100% |
| 353 |  | TPI WITNESS | 16h | 2018-03-29 06:00 A | 2018-03-29 22:00 A | 352 | 100% |
| 354 |  | CH ASSY AND HYDRO TEST | 2h | 2018-03-30 06:00 A | 2018-03-30 08:00 A | 353 | 100% |
| 355 |  | TPI WITNESS | 3h | 2018-03-30 08:00 A | 2018-03-30 11:00 A | 354 | 100% |
| 356 | 5.29 | **BLAST CLEANING & PAINTING** | 1.24d | 2018-03-30 16:00 A | 2018-03-31 18:00 A |  | 100% |
| 357 |  | PREPARATION FOR BLAST CLEANING | 1.5h | 2018-03-30 16:00 A | 2018-03-30 17:30 A | 343 | 100% |
| 358 |  | BLAST CLEAN | 0.5d | 2018-03-30 17:30 A | 2018-03-31 08:45 A | 357 | 100% |
| 359 |  | PAINTING - 1COAT | 2.5h | 2018-03-31 08:45 A | 2018-03-31 11:15 A | 358 | 100% |
| 360 |  | TPI WITNESS | 3h | 2018-03-31 11:15 A | 2018-03-31 14:15 A | 359 | 100% |
| 361 |  | DESPATCH CLEARANCE | 3h | 2018-03-31 14:15 A | 2018-03-31 17:15 A | 360 | 100% |
| 362 |  | DESPATCH | 0.75h | 2018-03-31 17:15 A | 2018-03-31 18:00 A | 361 | 100% |
| 363 | 5.30 | **PBG** | 1.72d | 2018-04-24 08:30 A | 2018-04-25 17:30 A |  | 100% |
| 364 |  | PBG SUBMISSION | 8h | 2018-04-24 08:30 A | 2018-04-24 17:30 A | 362FS+9d | 100% |
| 365 |  | FINAL DOCUMENTATION | 8h | 2018-04-25 08:30 A | 2018-04-25 17:30 A | 362FS+9d | 100% |

## Version 2 (saved 2018-05-24, file 4173-126.mpp)

Note of the change: third commit

Last finish stays 2018-04-25. Complete tasks 332 → 324.

Added:

| ID | Task | Duration | Start | Finish | Predecessors | Constraint | Resources |
| --- | --- | --- | --- | --- | --- | --- | --- |
| 39 | **Fab: 4173-602-E-126** | 180.48d | 2017-09-27 08:30 A | 2018-04-25 17:30 A |  |  |  |
| 45 | NOZZLE NECK | 1d | 2017-09-27 08:30 A | 2017-09-28 07:00 A | 41SS |  |  |
| 47 | TUBE | 1d | 2018-03-20 06:00 A | 2018-03-20 20:30 A | 41SS | start no earlier than 2018-03-20 06:00 |  |
| 59 | **CHANNEL(LHS+RHS) LS- FABRICATION** | 10.62d | 2017-09-28 16:00 A | 2017-10-11 10:00 A |  |  |  |
| 60 | LS-PLATE MARKING | 1.75h | 2017-09-28 16:00 A | 2017-09-28 19:30 A | 42 |  | Helper; Plate (Cost) [0.1%]; Fitter |
| 61 | LS- STAMPING | 3h | 2017-09-28 19:30 A | 2017-09-29 06:30 A | 60 |  | Fitter |
| 62 | LS-PL CUTTING | 2h | 2017-09-29 06:30 A | 2017-09-29 08:30 A | 61 |  | Helper; Gas Cutter |
| 63 | LS-GRINDING | 5h | 2017-09-29 10:30 A | 2017-09-29 15:30 A | 62 |  | Grinder |
| 64 | LS-EDGE PREPARATION | 2h | 2017-09-29 15:30 A | 2017-09-29 17:30 A | 63 |  | Grinder |
| 65 | LS-PRE BENDING | 4h | 2017-09-29 17:30 A | 2017-09-29 21:30 A | 64 |  | Helper; Fitter |
| 66 | LS-PREBEND CUTOFF | 6h | 2017-09-30 09:30 A | 2017-09-30 15:30 A | 65 |  | Gas Cutter |
| 67 | LS-EDGE PREPARTION | 2h | 2017-09-30 15:30 A | 2017-09-30 17:30 A | 66 |  | Grinder |
| 68 | LS-ROLLING | 6h | 2017-09-30 17:30 A | 2017-10-03 07:30 A | 67 |  | Helper; Fitter |
| 69 | LS-ACID CLEANING | 8h | 2017-10-03 13:30 A | 2017-10-03 21:30 A | 68 |  | Helper [200%] |
| 70 | LS-FITUP | 3.75h | 2017-10-03 21:30 A | 2017-10-04 09:14 A | 69 |  | Helper; SAW Welder; Fitter |
| 71 | LS-SPIDERUP | 10h | 2017-10-04 17:30 A | 2017-10-05 11:30 A | 70 |  | Fitter |
| 72 | LS-FITUP INSPECTION | 2d | 2017-10-05 11:30 A | 2017-10-07 08:30 A | 71 |  | Fitter |
| 73 | LS-WELDING | 6.5h | 2017-10-07 08:30 A | 2017-10-07 15:00 A | 72 |  | SAW Welder; Helper |
| 74 | LS-FLUSH GRIND | 6h | 2017-10-07 21:30 A | 2017-10-09 11:30 A | 73 |  | Grinder |
| 75 | LS-REROLLING | 12h | 2017-10-09 11:30 A | 2017-10-10 07:30 A | 74 |  | Helper; Fitter |
| 76 | LS-DPCHECK | 4h | 2017-10-10 07:30 A | 2017-10-10 11:30 A | 75 |  | Fitter |
| 77 | LS-RADIOGRAPHY | 1d | 2017-10-10 11:30 A | 2017-10-11 10:00 A | 76 |  |  |
| 78 | **SHELL LS1-FABRICATION** | 8.31d | 2017-09-28 19:30 A | 2017-10-09 12:00 A |  |  |  |
| 80 | LS1-STAMPING | 3h | 2017-09-29 07:30 A | 2017-09-29 10:30 A | 79 |  | Fitter |
| 84 | LS1-PREBENDING | 5h | 2017-09-30 08:01 A | 2017-09-30 13:01 A | 83 |  | Helper; Fitter |
| 86 | LS1-EDGE PREPARATION | 3.5h | 2017-09-30 16:32 A | 2017-09-30 20:02 A | 85 |  | Grinder |
| 88 | LS1-ACIDCLEANING | 4h | 2017-10-03 10:02 A | 2017-10-03 14:03 A | 87 |  | Helper [200%] |
| 93 | LS1-FLUSHGRIND | 10h | 2017-10-06 08:35 A | 2017-10-06 18:36 A | 92 |  | Grinder |
| 97 | **SHELL LS2- FABRICATION** | 8.25d | 2017-09-29 07:30 A | 2017-10-09 15:07 A |  |  |  |
| 105 | LS2-EDGE PREPARTION | 3.5h | 2017-09-30 20:32 A | 2017-10-03 08:02 A | 104 |  | Grinder |
| 134 | LS3-RADIOGRAPHY | 1d | 2017-10-09 08:30 A | 2017-10-10 07:00 A | 133 |  |  |
| 135 | **CHANNEL BONNET FORMING** | 39.69d | 2017-12-27 06:00 A | 2018-02-12 21:30 A |  |  |  |
| 159 | EDGE PREPARATION | 2h | 2018-02-07 09:40 A | 2018-02-07 11:40 A | 158 |  | Grinder |
| 217 | SHELL CS1+LS3 | 6h | 2018-02-05 08:00 A | 2018-02-05 14:00 A | 116, 205 |  | Plate (Cost) [0.1%]; Helper |
| 228 | CH(RHS)+CH DISH(RHS) READY | 6h | 2018-02-14 06:00 A | 2018-02-14 22:00 A | 59, 135 |  | Plate (Cost) [0.1%]; Helper |
| 238 | **CS4-FITUP & WELDING** | 7.11d | 2018-02-15 06:00 A | 2018-02-22 13:03 A |  |  |  |
| 239 | CH(LHS)+CH DISH(LHS) READY | 6h | 2018-02-15 06:00 A | 2018-02-15 12:00 A | 228 |  | Helper |
| 240 | SHELL EP CORRECTION | 3h | 2018-02-15 12:00 A | 2018-02-15 15:01 A | 239 |  | Helper; Grinder [200%] |
| 241 | CS4-FITUP | 7h | 2018-02-15 15:01 A | 2018-02-16 06:01 A | 240 |  | Helper; Fitter [200%] |
| 242 | CS4-FITUP INSPECTION | 0.53d | 2018-02-16 06:01 A | 2018-02-16 13:38 A | 241 |  | Helper; Fitter |
| 243 | CS4-WELDING | 15h | 2018-02-16 20:32 A | 2018-02-17 19:33 A | 242 |  | Helper; SAW Welder [200%] |
| 244 | CS4-FLUSHGRIND | 10h | 2018-02-17 19:33 A | 2018-02-19 13:33 A | 243 |  | Grinder |
| 245 | CS4-DPCHECK | 4h | 2018-02-19 13:33 A | 2018-02-19 17:33 A | 244 |  | Fitter |
| 246 | CS4-INSIDE WELDING | 15h | 2018-02-19 17:33 A | 2018-02-20 16:33 A | 245 |  | Helper; SAW Welder [200%] |
| 247 | CS4-DRESSUP | 10h | 2018-02-20 16:33 A | 2018-02-21 10:33 A | 246 |  | Helper; Grinder [200%] |
| 248 | CS4-DPCHECK | 4h | 2018-02-21 10:33 A | 2018-02-21 14:33 A | 247 |  | Fitter |
| 249 | CS4-RT | 1d | 2018-02-21 14:33 A | 2018-02-22 13:03 A | 248 |  |  |
| 251 | CH FLG AND CH FIT UP-RHS | 8h | 2018-02-21 16:01 A | 2018-02-22 08:01 A | 44, 227 |  | Helper; Forging Non-Std (Cost) [0.1%]; Fitter [200%] |
| 254 | CH FLG AND CH FIT UP-LHS | 8h | 2018-02-23 19:01 A | 2018-02-26 11:01 A | 253 |  | Helper; Fitter [200%] |
| 258 | **NOZZLE WITH RF PAD WELDING** | 11.66d | 2018-03-01 06:00 A | 2018-03-14 15:00 A |  |  |  |
| 268 | RF PAD FITUP | 0.67d | 2018-03-08 20:00 A | 2018-03-09 18:30 A | 267 | finish no earlier than 2018-03-08 21:30 | SAW Welder; Helper [200%]; Plate (Cost) [0.1%]; Fitter |
| 269 | RF PAD WELDING | 9h | 2018-03-09 18:30 A | 2018-03-12 11:30 A | 268 |  | Helper [200%]; SAW Welder |
| 273 | **NOZZLE WITH STIFFENER WELDING** | 11.24d | 2018-03-03 21:30 A | 2018-03-17 08:30 A |  |  |  |
| 278 | ELBOW FITUP | 2.67h | 2018-03-06 14:30 A | 2018-03-06 17:10 A | 277 |  | SAW Welder; Helper [200%]; Fitter |
| 279 | ELBOW WELDING | 3h | 2018-03-06 18:30 A | 2018-03-06 21:30 A | 278 |  | Helper [200%]; SAW Welder |
| 280 | NOZ FLG FITUP | 14.67h | 2018-03-07 06:30 A | 2018-03-08 12:30 A | 279 |  | SAW Welder; Helper [200%]; Forging Std (Cost) [0.1%]; Fitter |
| 281 | NOZ FLG WELDING | 19.12h | 2018-03-08 12:30 A | 2018-03-09 15:37 A | 280 |  | Helper [200%]; SAW Welder |
| 284 | STIFFENER FITUP | 10.67h | 2018-03-14 21:30 A | 2018-03-15 16:10 A | 283 | finish no earlier than 2018-03-14 21:30 | SAW Welder; Helper [200%]; Fitter |
| 285 | STIFFENER WELDING | 11.25h | 2018-03-15 21:30 A | 2018-03-16 16:45 A | 284 |  | Helper [200%]; SAW Welder |
| 323 | TUBE INSERT | 1h | 2018-03-20 06:00 A | 2018-03-20 07:00 A | 47, 322 |  | Helper; Tube (Cost) [0.1%]; Fitter [200%] |
| 327 | AIR TEST | 16h | 2018-03-26 06:00 A | 2018-03-26 22:00 A | 326 |  | Fitter [200%] |
| 331 | DP CHECK | 3h | 2018-03-27 12:40 A | 2018-03-27 15:40 A | 330 |  | Fitter |

Removed: 39 Fab: 4173-602-E-02; 42 SHELL BONNET; 43 SHELL FLANGE; 47 NOZZLE NECK WITH FLG; 48 U TUBE; 51 PP PLATE; 53 SUPPORT PLATES; 56 SRN NOZZLE; 61 SLIDING STRIP; 65 CHANNEL LS1- FABRICATION; 67 LS1- STAMPING; 71 LS1-PRE BENDING; 73 LS1-EDGE PREPARTION; 75 LS1-ACID CLEANING; 80 LS1-FLUSH GRIND; 84 SHELL LS2-FABRICATION; 92 LS2-EDGE PREPARATION; 121 SHELL DISH FORMING; 133 CHANNEL DISH FORMING; 134 DISH PLATE MARKING; 135 DISH PLATE CUTTING; 136 DISH PLATE GRINDING; 137 DISH FORMING; 138 DISH INSPECTION; 139 DISH SURFACE GRINDING; 140 SF MARKING; 141 SF CUTTING; 143 DISH EP; 145 PASS PARTITION PLATE WELDING; 146 PP PLATE MARKING; 149 WELDING ONTO CHANNEL; 169 EDEGE PREPARATION; 183 SUPPORT PLATE PREPARATION; 188 SLOT MARKING; 189 SLOT CUTTING; 195 TIE ROD HOLE MARKING; 196 TIE ROD HOLE DRILLING; 197 NOTCH FOR SLIDING STRIP; 203 AXIS LINE MARKING; 206 DRILLING INSPECTION; 207 OD MACHINING; 210 HOLE CHAMFERING; 212 SUPPORT PLATES ASSY; 216 SLIDING STRIP; 217 STRIP MARKING; 218 STRIP CUTTING; 219 STRIP GRINDING; 220 STRIP BEND REMEOVAL; 221 STRIP MATCHING; 244 CS1-RT; 246 SHELL CS1+SHELL DISH; 256 CS2-RT; 258 SHELL LS1+CH DISH READY; 268 CS3-RT; 269 SHELL FLG WELDING; 270 SHELL FLG AND SHELL FIT UP; 275 CH FLG AND CH FIT UP; 279 NOZZLE WELDING; 291 NOZZLE WELDING; 299 INSPECTION; 309 GRINDING; 313 GRINDING; 318 CUTTING; 319 GRINDING; 320 DRILLING; 323 CLEANING; 325 PLATE MARKING; 326 CUTTING; 327 GRINDING; 329 CLEANING; 335 U-TUBE INSERT; 342 FINAL INSPECTION; 359 PAINTING - 1COAT

Changed:

| ID | Task | Start | Finish | Duration | Predecessors | Other |
| --- | --- | --- | --- | --- | --- | --- |
| 21 | **PO RECEIPT** |  | 2018-03-23 21:30 A → 2018-03-20 21:30 A (-3d) | 98.21d → 96.55d |  | baseline start 2017-07-04 08:00 → 2017-08-03 08:30; baseline finish 2018-01-05 09:25 → 2018-03-20 21:30 |
| 25 | Tube-SA213 TP321 | 2018-03-23 08:30 A → 2018-03-20 08:30 A (-3d) | 2018-03-23 21:30 A → 2018-03-20 21:30 A (-3d) |  |  | constraint finish no earlier than 2018-03-23 21:30 → finish no earlier than 2018-03-20 21:30; baseline start 2017-07-04 08:00 → 2018-03-20 08:30; baseline finish 2017-11-13 17:30 → 2018-03-20 21:30 |
| 26 | Tube-SA213 TP304 | 2018-03-23 08:30 A → 2018-03-20 08:30 A (-3d) | 2018-03-23 21:30 A → 2018-03-20 21:30 A (-3d) |  |  | constraint finish no earlier than 2018-03-23 21:30 → finish no earlier than 2018-03-20 21:30; baseline start 2017-07-04 08:00 → 2018-03-20 08:30; baseline finish 2017-11-13 17:30 → 2018-03-20 21:30 |
| 40 | **MATERIAL RECEIPT** |  | 2018-03-23 17:30 A → 2018-03-20 20:30 A (-3d) | 151.79d → 148.69d |  | baseline finish 2017-09-28 16:00 → 2018-03-20 20:30 |
| 41 | PLATE FOR SHELL |  | 2017-09-28 16:00 A → 2017-09-28 07:00 A |  |  | baseline finish 2017-09-28 16:00 → 2017-09-28 07:00 |
| 42 | PLATE FOR CHANNEL |  | 2017-09-28 16:00 A → 2017-09-28 07:00 A |  |  | baseline finish 2017-09-28 16:00 → 2017-09-28 07:00 |
| 43 | CHANNEL BONNET |  | 2017-09-28 16:00 A → 2017-09-28 07:00 A |  |  | baseline finish 2017-09-28 16:00 → 2017-09-28 07:00 |
| 44 | CHANNEL FLANGE |  | 2017-09-28 16:00 A → 2017-09-28 07:00 A |  |  | baseline finish 2017-09-28 16:00 → 2017-09-28 07:00 |
| 46 | NOZZLE FLG |  | 2017-09-28 16:00 A → 2017-09-28 07:00 A |  |  | baseline finish 2017-09-28 16:00 → 2017-09-28 07:00 |
| 48 | TUBE SHEET |  | 2017-09-28 16:00 A → 2017-09-28 07:00 A |  |  | baseline finish 2017-09-28 16:00 → 2017-09-28 07:00 |
| 49 | IMPINGEMENT PLATE |  | 2017-09-28 16:00 A → 2017-09-28 07:00 A |  |  | baseline finish 2017-09-28 16:00 → 2017-09-28 07:00 |
| 50 | NAME PLATE |  | 2017-09-28 16:00 A → 2017-09-28 07:00 A |  |  | baseline finish 2017-09-28 16:00 → 2017-09-28 07:00 |
| 51 | BAFFLE PLATE |  | 2017-09-28 16:00 A → 2017-09-28 07:00 A |  |  | baseline finish 2017-09-28 16:00 → 2017-09-28 07:00 |
| 52 | LIFTING LUG |  | 2017-09-28 16:00 A → 2017-09-28 07:00 A |  |  | baseline finish 2017-09-28 16:00 → 2017-09-28 07:00 |
| 53 | SADDLE MATERIAL |  | 2017-09-28 16:00 A → 2017-09-28 07:00 A |  |  | baseline finish 2017-09-28 16:00 → 2017-09-28 07:00 |
| 54 | SPACER TUBE |  | 2017-09-28 16:00 A → 2017-09-28 07:00 A |  |  | baseline finish 2017-09-28 16:00 → 2017-09-28 07:00 |
| 55 | INSULATION CLEAT |  | 2017-09-28 16:00 A → 2017-09-28 07:00 A |  |  | baseline finish 2017-09-28 16:00 → 2017-09-28 07:00 |
| 56 | TIE ROD |  | 2017-09-28 16:00 A → 2017-09-28 07:00 A |  |  | baseline finish 2017-09-28 16:00 → 2017-09-28 07:00 |
| 57 | FASTENERS |  | 2017-09-28 16:00 A → 2017-09-28 07:00 A |  |  | baseline finish 2017-09-28 16:00 → 2017-09-28 07:00 |
| 58 | GASKETS |  | 2017-09-28 16:00 A → 2017-09-28 07:00 A |  |  | baseline finish 2017-09-28 16:00 → 2017-09-28 07:00 |
| 79 | LS1-PLATE MARKING | 2017-09-28 16:00 A → 2017-09-28 19:30 A | 2017-09-28 19:00 A → 2017-09-29 07:30 A (+1d) | 3h → 4h | 42 → 41, 60 | resources Fitter; Helper; Plate (Cost) [0.1%] → Helper; Plate (Cost) [0.1%]; Fitter; baseline start 2017-09-28 16:00 → 2017-09-28 19:30; baseline finish 2017-09-28 19:00 → 2017-09-29 07:30 |
| 81 | LS1-PL CUTTING | 2017-09-29 06:00 A → 2017-09-29 10:30 A | 2017-09-29 10:00 A → 2017-09-29 15:31 A | 4h → 5h | LS1- STAMPING → 80 | resources Gas Cutter; Helper → Helper; Gas Cutter; baseline start 2017-09-28 22:00 → 2017-09-29 10:30; baseline finish 2017-09-29 10:00 → 2017-09-29 15:31 |
| 82 | LS1-GRINDING | 2017-09-29 10:00 A → 2017-09-29 15:31 A | 2017-09-29 15:01 A → 2017-09-29 20:31 A |  |  | baseline start 2017-09-29 10:00 → 2017-09-29 15:31; baseline finish 2017-09-29 15:01 → 2017-09-29 20:31 |
| 83 | LS1-EDGE PREPARATION | 2017-09-29 15:01 A → 2017-09-29 20:31 A | 2017-09-29 18:01 A → 2017-09-30 08:01 A (+1d) | 3h → 3.5h |  | baseline start 2017-09-29 15:01 → 2017-09-29 20:31; baseline finish 2017-09-29 18:01 → 2017-09-30 08:01 |
| 85 | LS1-PREBEND CUTOFF | 2017-09-30 07:01 A → 2017-09-30 13:01 A | 2017-09-30 10:01 A → 2017-09-30 16:32 A | 3h → 3.5h | LS1-PRE BENDING → 84 | baseline start 2017-09-30 07:01 → 2017-09-30 13:01; baseline finish 2017-09-30 10:01 → 2017-09-30 16:32 |
| 87 | LS1-ROLLING | 2017-09-30 13:01 A → 2017-09-30 20:02 A | 2017-09-30 19:02 A → 2017-10-03 08:16 A (+3d) | 6h → 4.25h | LS1-EDGE PREPARTION → 86 | resources Fitter; Helper → Helper; Fitter; baseline start 2017-09-30 13:01 → 2017-09-30 20:02; baseline finish 2017-09-30 19:02 → 2017-10-03 08:16 |
| 89 | LS1-FITUP | 2017-10-03 08:02 A → 2017-10-03 14:03 A | 2017-10-03 14:02 A → 2017-10-03 20:03 A |  | LS1-ACID CLEANING → 88 | resources Fitter; Helper; SAW Welder → Helper; SAW Welder; Fitter; baseline start 2017-10-03 08:02 → 2017-10-03 14:03; baseline finish 2017-10-03 14:03 → 2017-10-03 20:03 |
| 90 | LS1-SPIDERUP | 2017-10-03 14:02 A → 2017-10-03 20:03 A | 2017-10-03 19:02 A → 2017-10-04 09:03 A (+1d) |  |  | baseline start 2017-10-03 14:03 → 2017-10-03 20:03; baseline finish 2017-10-03 19:03 → 2017-10-04 09:03 |
| 91 | LS1-FITUP INSPECTION | 2017-10-03 19:02 A → 2017-10-04 09:03 A (+1d) | 2017-10-04 17:32 A → 2017-10-05 07:34 A (+1d) |  |  | baseline start 2017-10-03 19:03 → 2017-10-04 09:03; baseline finish 2017-10-04 17:34 → 2017-10-05 07:34 |
| 92 | LS1-WELDING | 2017-10-04 17:32 A → 2017-10-05 07:34 A (+1d) | 2017-10-05 10:32 A → 2017-10-06 08:35 A (+1d) | 9h → 17h |  | resources Helper; SAW Welder → SAW Welder; Helper; baseline start 2017-10-04 17:34 → 2017-10-05 07:34; baseline finish 2017-10-05 10:34 → 2017-10-06 08:35 |
| 94 | LS1-REROLLING | 2017-10-05 14:32 A → 2017-10-06 18:36 A (+1d) | 2017-10-05 20:32 A → 2017-10-07 08:36 A (+2d) |  | LS1-FLUSH GRIND → 93 | resources Fitter; Helper → Helper; Fitter; baseline start 2017-10-05 14:35 → 2017-10-06 18:36; baseline finish 2017-10-05 20:35 → 2017-10-07 08:36 |
| 95 | LS1-DPCHECK | 2017-10-05 20:32 A → 2017-10-07 08:36 A (+2d) | 2017-10-06 08:32 A → 2017-10-07 12:36 A (+1d) |  |  | baseline start 2017-10-05 20:35 → 2017-10-07 08:36; baseline finish 2017-10-06 08:35 → 2017-10-07 12:36 |
| 96 | LS1-RADIOGRAPHY | 2017-10-06 08:32 A → 2017-10-07 13:30 A (+1d) | 2017-10-07 16:02 A → 2017-10-09 12:00 A (+2d) |  |  | baseline start 2017-10-06 08:35 → 2017-10-07 13:30; baseline finish 2017-10-07 16:05 → 2017-10-09 12:00 |
| 98 | LS2-PLATE MARKING | 2017-09-28 19:00 A → 2017-09-29 07:30 A (+1d) | 2018-02-02 22:00 A → 2017-09-29 11:30 A (-126d) | 15.98h → 4h |  | constraint finish no later than 2018-02-12 22:00 → none; resources Fitter; Helper; Plate (Cost) [0.1%] → Helper; Plate (Cost) [0.1%]; Fitter; baseline start 2017-09-28 19:00 → 2017-09-29 07:30; baseline finish 2017-09-29 07:00 → 2017-09-29 11:30 |
| 99 | LS2-STAMPING | 2018-02-02 06:00 A → 2017-09-29 11:30 A (-126d) | 2018-02-02 22:00 A → 2017-09-29 14:31 A (-126d) | 15.98h → 3h |  | baseline start 2017-09-29 07:00 → 2017-09-29 11:30; baseline finish 2017-09-29 10:00 → 2017-09-29 14:31 |
| 100 | LS2-PL CUTTING | 2018-02-03 06:00 A → 2017-09-29 14:31 A (-127d) | 2018-02-03 11:00 A → 2017-09-29 17:31 A (-127d) | 5h → 3h |  | resources Gas Cutter; Helper → Helper; Gas Cutter; baseline start 2017-09-29 10:00 → 2017-09-29 14:31; baseline finish 2017-09-29 15:01 → 2017-09-29 17:31 |
| 101 | LS2-GRINDING | 2018-02-03 11:00 A → 2017-09-29 19:31 A (-127d) | 2018-02-03 16:01 A → 2017-09-30 08:31 A (-126d) |  |  | baseline start 2017-09-29 15:01 → 2017-09-29 19:31; baseline finish 2017-09-29 20:01 → 2017-09-30 08:31 |
| 102 | LS2-EDGE PREPARATION | 2018-02-03 16:01 A → 2017-09-30 08:31 A (-126d) | 2018-02-03 16:32 A → 2017-09-30 12:01 A (-126d) | 0.52h → 3.5h |  | baseline start 2017-09-29 20:01 → 2017-09-30 08:31; baseline finish 2017-09-30 07:31 → 2017-09-30 12:01 |
| 103 | LS2-PREBENDING | 2018-02-03 16:32 A → 2017-09-30 12:01 A (-126d) | 2018-02-03 21:32 A → 2017-09-30 14:32 A (-126d) | 5h → 2.5h |  | resources Fitter; Helper → Helper; Fitter; baseline start 2017-09-30 07:31 → 2017-09-30 12:01; baseline finish 2017-09-30 12:31 → 2017-09-30 14:32 |
| 104 | LS2-PREBEND CUTOFF | 2018-02-05 06:00 A → 2017-09-30 17:02 A (-128d) | 2018-02-06 06:30 A → 2017-09-30 20:32 A (-129d) | 16.48h → 3.5h |  | baseline start 2017-09-30 12:31 → 2017-09-30 17:02; baseline finish 2017-09-30 16:02 → 2017-09-30 20:32 |
| 106 | LS2-ROLLING | 2018-02-06 06:00 A → 2017-10-03 08:02 A (-126d) | 2018-02-07 08:30 A → 2017-10-03 14:03 A (-127d) | 18.48h → 6h | LS2-EDGE PREPARATION → 105 | resources Fitter; Helper → Helper; Fitter; baseline start 2017-09-30 19:32 → 2017-10-03 08:02; baseline finish 2017-10-03 09:32 → 2017-10-03 14:03 |
| 107 | LS2-ACIDCLEANING | 2018-02-07 08:30 A → 2017-10-03 14:03 A (-127d) | 2018-02-08 10:36 A → 2017-10-03 18:03 A (-128d) | 18.09h → 4h |  | baseline start 2017-10-03 09:32 → 2017-10-03 14:03; baseline finish 2017-10-03 14:33 → 2017-10-03 18:03 |
| 108 | LS2-FITUP | 2018-02-08 10:36 A → 2017-10-03 18:03 A (-128d) | 2018-02-09 08:39 A → 2017-10-03 21:23 A (-129d) | 14.04h → 3.33h |  | resources Fitter; Helper; SAW Welder → Helper; SAW Welder; Fitter; baseline start 2017-10-03 14:33 → 2017-10-03 18:03; baseline finish 2017-10-03 20:33 → 2017-10-03 21:23 |
| 109 | LS2-SPIDERUP | 2018-02-09 08:39 A → 2017-10-04 08:03 A (-128d) | 2018-02-09 13:39 A → 2017-10-04 13:03 A (-128d) |  |  | baseline start 2017-10-03 20:33 → 2017-10-04 08:03; baseline finish 2017-10-04 09:33 → 2017-10-04 13:03 |
| 110 | LS2-FITUP INSPECTION | 2018-02-09 13:39 A → 2017-10-04 13:03 A (-128d) | 2018-02-12 12:00 A → 2017-10-05 11:34 A (-130d) | 0.99d → 1d |  | baseline start 2017-10-04 09:33 → 2017-10-04 13:03; baseline finish 2017-10-05 08:04 → 2017-10-05 11:34 |
| 111 | LS2-WELDING | 2018-02-12 12:00 A → 2017-10-05 11:34 A (-130d) | 2018-02-14 07:00 A → 2017-10-05 21:20 A (-132d) | 27h → 9.75h |  | resources Helper; SAW Welder → SAW Welder; Helper; baseline start 2017-10-05 08:04 → 2017-10-05 11:34; baseline finish 2017-10-06 19:06 → 2017-10-05 21:20 |
| 112 | LS2-FLUSHGRIND | 2018-02-14 07:00 A → 2017-10-06 12:35 A (-131d) | 2018-02-14 17:00 A → 2017-10-07 06:36 A (-130d) |  |  | baseline start 2017-10-06 19:06 → 2017-10-06 12:35; baseline finish 2017-10-07 13:06 → 2017-10-07 06:36 |
| 113 | LS2-REROLLING | 2018-02-14 17:00 A → 2017-10-07 06:36 A (-130d) | 2018-02-14 22:00 A → 2017-10-07 10:36 A (-130d) | 5h → 4h |  | resources Fitter; Helper → Helper; Fitter; baseline start 2017-10-07 13:06 → 2017-10-07 06:36; baseline finish 2017-10-07 19:07 → 2017-10-07 10:36 |
| 114 | LS2-DPCHECK | 2018-02-14 06:00 A → 2017-10-07 12:36 A (-130d) | 2018-02-14 22:00 A → 2017-10-07 16:37 A (-130d) | 16h → 4h |  | baseline start 2017-10-07 19:07 → 2017-10-07 12:36; baseline finish 2017-10-09 07:07 → 2017-10-07 16:37 |
| 115 | LS2-RADIOGRAPHY | 2018-02-15 08:30 A → 2017-10-07 16:37 A (-131d) | 2018-02-16 16:00 A → 2017-10-09 15:07 A (-130d) |  |  | baseline start 2017-10-09 08:30 → 2017-10-07 16:37; baseline finish 2017-10-10 16:00 → 2017-10-09 15:07 |
| 116 | **SHELL LS3- FABRICATION** | 2018-02-09 06:00 A → 2017-09-29 11:30 A (-133d) | 2018-02-22 08:30 A → 2017-10-10 07:00 A (-135d) | 11.21d → 8.52d |  | baseline start 2017-09-29 07:00 → 2017-09-29 11:30; baseline finish 2017-10-10 16:00 → 2017-10-10 07:00 |
| 117 | LS3-PLATE MARKING | 2018-02-09 06:00 A → 2017-09-29 11:30 A (-133d) | 2018-02-09 22:00 A → 2017-09-29 15:31 A (-133d) | 15.98h → 3.5h | SHELL LS2-FABRICATION → 41, 98 | resources Fitter; Helper; Plate (Cost) [0.1%] → Helper; Plate (Cost) [0.1%]; Fitter; baseline start 2017-09-29 07:00 → 2017-09-29 11:30; baseline finish 2017-09-29 10:30 → 2017-09-29 15:31 |
| 118 | LS3-STAMPING | 2018-02-12 06:00 A → 2017-09-29 15:31 A (-136d) | 2018-02-12 22:00 A → 2017-09-29 18:31 A (-136d) | 15.98h → 3h |  | baseline start 2017-09-29 10:30 → 2017-09-29 15:31; baseline finish 2017-09-29 13:30 → 2017-09-29 18:31 |
| 119 | LS3-PL CUTTING | 2018-02-12 06:00 A → 2017-09-29 18:31 A (-136d) | 2018-02-12 10:30 A → 2017-09-29 21:31 A (-136d) | 4.5h → 3h |  | resources Gas Cutter; Helper → Helper; Gas Cutter; baseline start 2017-09-29 13:30 → 2017-09-29 18:31; baseline finish 2017-09-29 18:01 → 2017-09-29 21:31 |
| 120 | LS3-GRINDING | 2018-02-13 06:00 A → 2017-09-30 07:31 A (-136d) | 2018-02-14 08:00 A → 2017-09-30 12:31 A (-137d) | 17.98h → 5h |  | baseline start 2017-09-29 18:01 → 2017-09-30 07:31; baseline finish 2017-09-30 07:01 → 2017-09-30 12:31 |
| 121 | LS3-EDGE PREPARATION | 2018-02-15 06:00 A → 2017-09-30 12:31 A (-138d) | 2018-02-15 22:00 A → 2017-09-30 16:02 A (-138d) | 15.98h → 3.5h |  | baseline start 2017-09-30 07:01 → 2017-09-30 12:31; baseline finish 2017-09-30 10:01 → 2017-09-30 16:02 |
| 122 | LS3-PREBENDING | 2018-02-16 06:00 A → 2017-09-30 16:02 A (-139d) | 2018-02-16 21:01 A → 2017-09-30 18:32 A (-139d) | 15h → 2.5h |  | resources Fitter; Helper → Helper; Fitter; baseline start 2017-09-30 10:01 → 2017-09-30 16:02; baseline finish 2017-09-30 15:02 → 2017-09-30 18:32 |
| 123 | LS3-PREBEND CUTOFF | 2018-02-17 06:00 A → 2017-09-30 21:02 A (-140d) | 2018-02-17 22:00 A → 2017-10-03 08:32 A (-137d) | 15.98h → 3.5h |  | baseline start 2017-09-30 15:02 → 2017-09-30 21:02; baseline finish 2017-09-30 18:02 → 2017-10-03 08:32 |
| 124 | LS3-EDGE PREPARTION | 2018-02-19 06:00 A → 2017-10-03 08:32 A (-139d) | 2018-02-19 22:00 A → 2017-10-03 12:02 A (-139d) | 15.98h → 3.5h |  | baseline start 2017-09-30 18:02 → 2017-10-03 08:32; baseline finish 2017-09-30 21:02 → 2017-10-03 12:02 |
| 125 | LS3-ROLLING | 2018-02-19 06:00 A → 2017-10-03 12:02 A (-139d) | 2018-02-20 22:00 A → 2017-10-03 18:03 A (-140d) | 31.97h → 6h |  | resources Fitter; Helper → Helper; Fitter; baseline start 2017-09-30 21:02 → 2017-10-03 12:02; baseline finish 2017-10-03 11:02 → 2017-10-03 18:03 |
| 126 | LS3-ACIDCLEANING | 2018-02-21 06:00 A → 2017-10-03 18:03 A (-141d) | 2018-02-22 08:30 A → 2017-10-04 06:03 A (-141d) | 18.48h → 4h |  | baseline start 2017-10-03 11:02 → 2017-10-03 18:03; baseline finish 2017-10-03 16:03 → 2017-10-04 06:03 |
| 127 | LS3-FITUP | 2018-02-21 06:00 A → 2017-10-04 06:03 A (-140d) | 2018-02-21 22:00 A → 2017-10-04 09:23 A (-140d) | 15.98h → 3.33h |  | resources Fitter; Helper; SAW Welder → Helper; SAW Welder; Fitter; baseline start 2017-10-03 16:03 → 2017-10-04 06:03; baseline finish 2017-10-04 06:03 → 2017-10-04 09:23 |
| 128 | LS3-SPIDERUP | 2018-02-17 06:00 A → 2017-10-04 12:03 A (-136d) | 2018-02-17 22:00 A → 2017-10-04 17:04 A (-136d) | 16h → 5h |  | baseline start 2017-10-04 06:03 → 2017-10-04 12:03; baseline finish 2017-10-04 11:03 → 2017-10-04 17:04 |
| 129 | LS3-FITUP INSPECTION | 2018-02-16 06:00 A → 2017-10-04 17:04 A (-135d) | 2018-02-17 22:00 A → 2017-10-05 15:35 A (-135d) | 2.21d → 1d |  | baseline start 2017-10-04 11:03 → 2017-10-04 17:04; baseline finish 2017-10-05 09:34 → 2017-10-05 15:35 |
| 130 | LS3-WELDING | 2018-02-16 06:00 A → 2017-10-05 15:35 A (-134d) | 2018-02-19 16:00 A → 2017-10-06 09:20 A (-136d) | 42h → 9.75h |  | resources Helper; SAW Welder → SAW Welder; Helper; baseline start 2017-10-05 09:34 → 2017-10-05 15:35; baseline finish 2017-10-06 15:36 → 2017-10-06 09:20 |
| 131 | LS3-FLUSHGRIND | 2018-02-19 16:00 A → 2017-10-06 16:36 A (-136d) | 2018-02-20 10:00 A → 2017-10-07 10:36 A (-136d) |  |  | baseline start 2017-10-06 15:36 → 2017-10-06 16:36; baseline finish 2017-10-07 09:36 → 2017-10-07 10:36 |
| 132 | LS3-REROLLING | 2018-02-20 10:00 A → 2017-10-07 10:36 A (-136d) | 2018-02-20 16:00 A → 2017-10-07 14:37 A (-136d) | 6h → 4h |  | resources Fitter; Helper → Helper; Fitter; baseline start 2017-10-07 09:36 → 2017-10-07 10:36; baseline finish 2017-10-07 15:37 → 2017-10-07 14:37 |
| 133 | LS3-DPCHECK | 2018-02-20 16:00 A → 2017-10-07 16:37 A (-136d) | 2018-02-20 20:00 A → 2017-10-07 20:37 A (-136d) |  |  | baseline start 2017-10-07 15:37 → 2017-10-07 16:37; baseline finish 2017-10-07 19:37 → 2017-10-07 20:37 |
| 136 | DISH PLATE MARKING | 2017-12-26 06:00 A → 2017-12-27 06:00 A (+1d) | 2017-12-26 22:00 A → 2017-12-27 10:00 A (+1d) | 15.98h → 2h | 41, 117 → none | constraint none → start no earlier than 2017-12-27 06:00; resources Fitter; Helper; Plate (Cost) [0.1%] → Helper; Plate (Cost) [0.1%]; Fitter; baseline start 2017-09-29 10:30 → 2017-12-27 06:00; baseline finish 2017-09-29 13:30 → 2017-12-27 10:00 |
| 137 | DISH PLATE CUTTING | 2017-12-26 06:00 A → 2017-12-27 10:00 A (+1d) | 2017-12-26 22:00 A → 2017-12-27 15:00 A (+1d) | 15.98h → 5h |  | resources Gas Cutter; Helper → Helper; Gas Cutter; baseline start 2017-09-29 13:30 → 2017-12-27 10:00; baseline finish 2017-09-29 17:31 → 2017-12-27 15:00 |

| ID | Task | Start | Finish | Duration | Predecessors | Other |
| --- | --- | --- | --- | --- | --- | --- |
| 138 | DISH PLATE GRINDING | 2017-12-27 06:00 A → 2017-12-27 15:00 A | 2017-12-27 12:00 A → 2017-12-27 22:00 A | 6h → 7h |  | baseline start 2017-09-29 17:31 → 2017-12-27 15:00; baseline finish 2017-09-30 07:31 → 2017-12-27 22:00 |
| 139 | DISH FORMING | 2017-12-27 12:00 A → 2017-12-28 08:30 A (+1d) | 2018-01-02 16:30 A → 2018-01-03 15:30 A (+1d) | 3d → 6d |  | baseline start 2017-09-30 08:30 → 2017-12-28 08:30; baseline finish 2017-10-07 12:00 → 2018-01-03 15:30 |
| 140 | DISH INSPECTION | 2018-01-10 06:00 A → 2018-01-09 16:30 A (-1d) | 2018-01-10 22:00 A → 2018-01-11 13:30 A (+1d) | 1.1d → 2d |  | baseline start 2017-10-07 12:00 → 2018-01-09 16:30; baseline finish 2017-10-07 19:16 → 2018-01-11 13:30 |
| 141 | DISH SURFACE GRINDING | 2018-01-10 06:00 A → 2018-01-11 13:30 A (+1d) | 2018-01-11 12:00 A → 2018-01-16 13:30 A (+5d) | 21.98h → 32h |  | baseline start 2017-10-07 19:16 → 2018-01-11 13:30; baseline finish 2017-10-09 15:17 → 2018-01-16 13:30 |
| 142 | SF MARKING | 2018-01-10 06:00 A → 2018-01-16 13:30 A (+6d) | 2018-01-10 22:00 A → 2018-01-16 17:30 A (+6d) | 15.98h → 4h |  | baseline start 2017-10-09 15:17 → 2018-01-16 13:30; baseline finish 2017-10-09 18:17 → 2018-01-16 17:30 |
| 143 | SF CUTTING | 2018-01-11 06:00 A → 2018-01-16 17:30 A (+5d) | 2018-01-11 10:00 A → 2018-01-17 06:30 A (+6d) | 4h → 5h |  | resources Gas Cutter; Helper → Helper; Gas Cutter; baseline start 2017-10-09 18:17 → 2018-01-16 17:30; baseline finish 2017-10-10 06:17 → 2018-01-17 06:30 |
| 144 | GRINDING | 2018-01-12 06:00 A → 2018-01-17 06:30 A (+5d) | 2018-01-12 22:00 A → 2018-01-17 13:30 A (+5d) | 15.98h → 7h |  | baseline start 2017-10-10 06:17 → 2018-01-17 06:30; baseline finish 2017-10-10 12:17 → 2018-01-17 13:30 |
| 145 | DISH EP | 2018-01-12 06:00 A → 2018-01-17 13:30 A (+5d) | 2018-01-12 22:00 A → 2018-01-17 19:30 A (+5d) | 15.98h → 6h |  | baseline start 2017-10-10 12:17 → 2018-01-17 13:30; baseline finish 2017-10-10 17:18 → 2018-01-17 19:30 |
| 146 | FINAL INSPECTION | 2018-01-16 06:00 A → 2018-01-17 19:30 A (+1d) | 2018-01-16 20:30 A → 2018-02-12 21:30 A (+27d) | 1d → 21.1d |  | constraint none → finish no later than 2018-02-12 21:30; baseline start 2017-10-10 17:18 → 2018-01-17 19:30; baseline finish 2017-10-11 15:49 → 2018-02-12 21:30 |
| 147 | **NOZZLE FABRICATION(PIPE)** | 2018-02-22 06:00 A → 2018-02-05 06:00 A (-17d) | 2018-03-01 16:30 A → 2018-02-09 16:30 A (-20d) | 6.24d → 5.14d |  | baseline start 2017-09-28 16:00 → 2018-02-05 06:00; baseline finish 2017-10-04 13:33 → 2018-02-09 16:30 |
| 148 | PIPE MARKING | 2018-02-22 06:00 A → 2018-02-06 06:00 A (-16d) | 2018-02-22 22:00 A → 2018-02-07 06:40 A (-15d) | 16h → 4.3h | NOZZLE NECK WITH FLG → 45 | resources Fitter; Helper; Pipe (Cost) [0.1%] → Helper; Pipe (Cost) [0.1%]; Fitter; baseline start 2017-09-28 16:00 → 2018-02-06 06:00; baseline finish 2017-09-28 19:00 → 2018-02-07 06:40 |
| 149 | CUTTING | 2018-03-15 11:30 A → 2018-02-05 06:00 A (-38d) | 2018-03-15 15:30 A → 2018-02-07 06:40 A (-36d) | 4h → 4.33h | PP PLATE MARKING → 148 | resources Gas Cutter → Helper; Gas Cutter; baseline start 2017-09-29 19:31 → 2018-02-05 06:00; baseline finish 2017-09-30 07:31 → 2018-02-07 06:40 |
| 150 | EDGE PREPARATION | 2018-02-23 09:00 A → 2018-02-06 06:00 A (-17d) | 2018-02-23 13:00 A → 2018-02-06 12:00 A (-17d) | 4h → 6h | 158 → 149 | baseline start 2017-09-29 06:00 → 2018-02-06 06:00; baseline finish 2017-09-29 10:00 → 2018-02-06 12:00 |
| 151 | MACHINING | 2018-02-23 13:00 A → 2018-02-06 12:00 A (-17d) | 2018-02-27 12:30 A → 2018-02-08 11:30 A (-19d) |  |  | baseline start 2017-09-29 10:00 → 2018-02-06 12:00; baseline finish 2017-10-03 09:32 → 2018-02-08 11:30 |
| 152 | PROFILE MARKING | 2018-02-27 12:30 A → 2018-02-08 11:30 A (-19d) | 2018-02-27 17:30 A → 2018-02-08 15:30 A (-19d) | 5h → 4h |  | resources Fitter; Helper → Helper; Fitter; baseline start 2017-10-03 09:32 → 2018-02-08 11:30; baseline finish 2017-10-03 14:33 → 2018-02-08 15:30 |
| 153 | PROFILE CUTTING | 2018-02-28 06:00 A → 2018-02-08 15:30 A (-20d) | 2018-03-01 07:30 A → 2018-02-08 20:30 A (-21d) | 17.5h → 5h |  | resources Gas Cutter; Helper → Helper; Gas Cutter; baseline start 2017-10-03 14:33 → 2018-02-08 15:30; baseline finish 2017-10-03 20:33 → 2018-02-08 20:30 |
| 154 | PROFILE GRINDING | 2018-03-01 07:30 A → 2018-02-08 20:30 A (-21d) | 2018-03-01 12:30 A → 2018-02-09 10:30 A (-20d) | 5h → 6h |  | baseline start 2017-10-03 20:33 → 2018-02-08 20:30; baseline finish 2017-10-04 09:33 → 2018-02-09 10:30 |
| 155 | EDGE PREPARATION | 2018-02-23 08:30 A → 2018-02-09 10:30 A (-14d) | 2018-02-23 09:30 A → 2018-02-09 16:30 A (-14d) | 1h → 6h | 180 → 154 | baseline start 2017-09-28 21:30 → 2018-02-09 10:30; baseline finish 2017-09-29 06:30 → 2018-02-09 16:30 |
| 156 | **NOZZLE FABRICATION(PIPE)** | 2018-02-23 06:00 A → 2018-02-07 06:40 A (-16d) | 2018-02-26 08:45 A → 2018-02-08 20:40 A (-18d) | 1.29d → 2.07d |  | baseline start 2017-09-28 19:00 → 2018-02-07 06:40; baseline finish 2017-09-29 21:46 → 2018-02-08 20:40 |
| 157 | PIPE MARKING | 2018-02-23 06:00 A → 2018-02-07 06:40 A (-16d) | 2018-02-23 07:00 A → 2018-02-07 07:40 A (-16d) |  | NOZZLE NECK WITH FLG, 148 → 45, 148 | resources Fitter; Helper; Pipe (Cost) → Helper; Pipe (Cost) [0.1%]; Fitter; baseline start 2017-09-28 19:00 → 2018-02-07 06:40; baseline finish 2017-09-28 20:00 → 2018-02-07 07:40 |
| 158 | CUTTING | 2018-02-23 06:00 A → 2018-02-07 07:40 A (-16d) | 2018-02-23 09:00 A → 2018-02-07 09:40 A (-16d) | 3h → 2h | 148 → 157 | resources Gas Cutter; Helper → Helper; Gas Cutter; baseline start 2017-09-28 19:00 → 2018-02-07 07:40; baseline finish 2017-09-28 22:00 → 2018-02-07 09:40 |
| 160 | MACHINING | 2018-02-23 09:30 A → 2018-02-07 11:40 A (-16d) | 2018-02-23 19:15 A → 2018-02-08 12:40 A (-15d) | 0.5d → 1d | 155 → 159 | baseline start 2017-09-29 06:30 → 2018-02-07 11:40; baseline finish 2017-09-29 16:16 → 2018-02-08 12:40 |
| 161 | PROFILE MARKING | 2018-02-23 19:15 A → 2018-02-08 12:40 A (-15d) | 2018-02-23 20:15 A → 2018-02-08 13:40 A (-15d) |  |  | resources Fitter; Helper → Helper; Fitter; baseline start 2017-09-29 16:16 → 2018-02-08 12:40; baseline finish 2017-09-29 17:16 → 2018-02-08 13:40 |
| 162 | PROFILE CUTTING | 2018-02-23 20:15 A → 2018-02-08 13:40 A (-15d) | 2018-02-23 21:45 A → 2018-02-08 15:40 A (-15d) | 1.5h → 2h |  | resources Gas Cutter; Helper → Helper; Gas Cutter; baseline start 2017-09-29 17:16 → 2018-02-08 13:40; baseline finish 2017-09-29 18:46 → 2018-02-08 15:40 |
| 163 | PROFILE GRINDING | 2018-02-23 21:45 A → 2018-02-08 15:40 A (-15d) | 2018-02-26 07:45 A → 2018-02-08 18:40 A (-18d) | 2h → 3h |  | baseline start 2017-09-29 18:46 → 2018-02-08 15:40; baseline finish 2017-09-29 20:46 → 2018-02-08 18:40 |
| 164 | EDEGE PREPARATION | 2018-03-01 12:30 A → 2018-02-08 18:40 A (-21d) | 2018-03-01 16:30 A → 2018-02-08 20:40 A (-21d) | 4h → 2h | 154 → 163 | baseline start 2017-10-04 09:33 → 2018-02-08 18:40; baseline finish 2017-10-04 13:33 → 2018-02-08 20:40 |
| 165 | **TUBESHEET FABRICATION** | 2017-09-29 19:31 A → 2017-09-28 16:00 A (-1d) | 2017-10-17 06:58 A → 2017-11-04 13:27 A (+18d) | 13.48d → 30.72d |  | baseline start 2017-09-29 19:31 → 2017-09-28 16:00; baseline finish 2017-10-17 06:58 → 2017-11-04 13:27 |
| 166 | PLATE MARKING | 2017-09-29 19:31 A → 2017-09-28 16:00 A (-1d) | 2017-09-30 06:31 A → 2017-09-28 20:00 A (-2d) | 3h → 2h | 48, PP PLATE MARKING → 48 | resources Fitter; Helper; Forging Non-Std (Cost) → Helper; Tube Sheet (Cost) [0.1%]; Fitter; baseline start 2017-09-29 19:31 → 2017-09-28 16:00; baseline finish 2017-09-30 06:31 → 2017-09-28 20:00 |
| 167 | STAMPING | 2017-09-30 06:31 A → 2017-09-28 20:00 A (-2d) | 2017-09-30 08:31 A → 2017-09-29 07:00 A (-1d) | 2h → 3h |  | baseline start 2017-09-30 06:31 → 2017-09-28 20:00; baseline finish 2017-09-30 08:31 → 2017-09-29 07:00 |
| 168 | PLASMA ARC CUTTING | 2017-09-30 08:31 A → 2017-09-29 07:00 A (-1d) | 2017-09-30 13:31 A → 2017-09-29 12:00 A (-1d) |  |  | resources Gas Cutter; Helper → Helper; Gas Cutter; baseline start 2017-09-30 08:31 → 2017-09-29 07:00; baseline finish 2017-09-30 13:31 → 2017-09-29 12:00 |
| 169 | GRINDING | 2018-02-21 06:15 A → 2017-09-29 12:00 A (-145d) | 2018-02-21 12:15 A → 2017-09-29 19:01 A (-145d) | 6h → 7h | SF CUTTING → 168 | baseline start 2017-10-10 09:17 → 2017-09-29 12:00; baseline finish 2017-10-10 15:18 → 2017-09-29 19:01 |
| 170 | INSPECTION | 2017-09-30 20:32 A → 2017-09-29 19:01 A (-1d) | 2017-10-03 19:03 A → 2017-10-03 16:03 A | 1d → 2d | 297 → 169 | baseline start 2017-09-30 20:32 → 2017-09-29 19:01; baseline finish 2017-10-03 19:03 → 2017-10-03 16:03 |
| 171 | MACHINING | 2017-10-03 19:03 A → 2017-10-03 16:03 A | 2017-10-05 08:49 A → 2017-10-05 13:04 A | 1.5d → 2d |  | baseline start 2017-10-03 19:03 → 2017-10-03 16:03; baseline finish 2017-10-05 08:49 → 2017-10-05 13:04 |
| 172 | HOLES MARKING | 2017-10-05 08:49 A → 2017-10-05 13:04 A | 2017-10-07 16:52 A → 2017-10-13 11:11 A (+6d) | 40h → 110h |  | baseline start 2017-10-05 08:49 → 2017-10-05 13:04; baseline finish 2017-10-07 16:52 → 2017-10-13 11:11 |
| 173 | DRILLING | 2017-10-07 16:52 A → 2017-10-13 11:11 A (+6d) | 2017-10-13 16:57 A → 2017-11-02 07:25 A (+20d) | 80h → 220h |  | baseline start 2017-10-07 16:52 → 2017-10-13 11:11; baseline finish 2017-10-13 16:57 → 2017-11-02 07:25 |
| 174 | EXPANSION GROOVING | 2017-10-13 16:57 A → 2017-11-02 07:25 A (+20d) | 2017-10-13 16:57 A → 2017-11-02 07:25 A (+20d) |  |  | resources Fitter [200%]; Helper → Helper; Fitter [200%]; baseline start 2017-10-13 16:57 → 2017-11-02 07:25; baseline finish 2017-10-13 16:57 → 2017-11-02 07:25 |
| 175 | TIE ROD HOLE MARKING | 2017-10-13 16:57 A → 2017-11-02 07:25 A (+20d) | 2017-10-13 19:27 A → 2017-11-02 10:25 A (+20d) | 2.5h → 3h |  | resources Fitter; Helper → Helper; Rod (Cost) [0.1%]; Fitter; baseline start 2017-10-13 16:57 → 2017-11-02 07:25; baseline finish 2017-10-13 19:27 → 2017-11-02 10:25 |
| 176 | TIE ROD HOLE DRILLING | 2017-10-13 19:27 A → 2017-11-02 10:25 A (+20d) | 2017-10-16 08:27 A → 2017-11-02 16:26 A (+17d) | 5h → 6h |  | baseline start 2017-10-13 19:27 → 2017-11-02 10:25; baseline finish 2017-10-16 08:27 → 2017-11-02 16:26 |
| 177 | FINAL INSPECTION | 2018-02-21 17:15 A → 2017-11-02 16:26 A (-111d) | 2018-02-22 15:45 A → 2017-11-04 13:27 A (-110d) | 1d → 2d | DISH EP → 176 | baseline start 2017-10-10 20:18 → 2017-11-02 16:26; baseline finish 2017-10-11 18:49 → 2017-11-04 13:27 |
| 178 | **BAFFLE PLATE PREPARATION** | 2017-09-30 08:31 A → 2017-09-28 16:00 A (-2d) | 2018-02-28 21:30 A → 2017-12-06 08:52 A (-84d) | 127.79d → 57.99d |  | baseline start 2017-09-30 08:31 → 2017-09-28 16:00; baseline finish 2017-11-09 12:31 → 2017-12-06 08:52 |
| 179 | PLATE MARKING | 2017-09-30 06:31 A → 2017-09-28 16:00 A (-2d) | 2017-09-30 08:31 A → 2017-09-29 18:01 A (-1d) | 2h → 18h | SUPPORT PLATES, 166 → 51 | resources Fitter; Helper; Plate (Cost) [0.1%] → Helper; Plate (Cost) [0.1%]; Fitter; baseline start 2017-09-30 06:31 → 2017-09-28 16:00; baseline finish 2017-09-30 08:31 → 2017-09-29 18:01 |
| 180 | CUTTING | 2018-02-23 07:00 A → 2017-09-29 18:01 A (-147d) | 2018-02-23 08:30 A → 2017-10-03 07:02 A (-143d) | 1.5h → 21h | 157 → 179 | resources Gas Cutter; Helper → Helper; Gas Cutter; baseline start 2017-09-28 20:00 → 2017-09-29 18:01; baseline finish 2017-09-28 21:30 → 2017-10-03 07:02 |
| 181 | GRINDING | 2018-03-15 15:30 A → 2017-10-03 07:02 A (-163d) | 2018-03-15 19:30 A → 2017-10-05 10:04 A (-161d) | 4h → 35h | 149 → 180 | resources Grinder → Helper; Grinder; baseline start 2017-09-30 07:31 → 2017-10-03 07:02; baseline finish 2017-09-30 11:31 → 2017-10-05 10:04 |
| 182 | AXIS LINE MARKING | 2017-09-30 15:31 A → 2017-10-05 10:04 A (+5d) | 2017-09-30 16:31 A → 2017-10-06 09:05 A (+6d) | 1h → 15h | 301 → 181 | baseline start 2017-09-30 15:32 → 2017-10-05 10:04; baseline finish 2017-09-30 16:32 → 2017-10-06 09:05 |
| 183 | STACKKING | 2017-10-03 21:33 A → 2017-10-06 09:05 A (+3d) | 2017-10-04 11:33 A → 2017-10-07 09:06 A (+3d) | 6h → 16h | AXIS LINE MARKING → 182 | baseline start 2017-10-03 21:33 → 2017-10-06 09:05; baseline finish 2017-10-04 11:33 → 2017-10-07 09:06 |
| 184 | DRILLING | 2017-09-30 19:01 A → 2017-10-07 09:06 A (+7d) | 2017-10-04 14:01 A → 2017-10-25 11:19 A (+21d) | 27h → 210h | SLOT CUTTING → 183 | resources Driller → Driller [200%]; baseline start 2017-09-30 19:02 → 2017-10-07 09:06; baseline finish 2017-10-04 14:04 → 2017-10-25 11:19 |
| 185 | DRILLING INSPECTION | 2017-10-04 14:01 A → 2017-10-25 11:19 A (+21d) | 2017-10-05 12:31 A → 2017-10-27 08:21 A (+22d) | 1d → 2d |  | baseline start 2017-10-04 14:04 → 2017-10-25 11:19; baseline finish 2017-10-05 12:34 → 2017-10-27 08:21 |
| 186 | OD MACHINING | 2017-10-05 12:31 A → 2017-10-27 08:21 A (+22d) | 2017-10-07 10:31 A → 2017-11-13 16:34 A (+37d) | 30h → 200h |  | resources Lathe → Lathe [200%]; baseline start 2017-10-05 12:34 → 2017-10-27 08:21; baseline finish 2017-10-07 10:36 → 2017-11-13 16:34 |
| 187 | DE-STACKING | 2017-10-25 20:11 A → 2017-11-13 16:34 A (+19d) | 2017-10-26 10:11 A → 2017-11-14 16:35 A (+19d) | 6h → 16h | OD MACHINING → 186 | baseline start 2017-10-25 20:20 → 2017-11-13 16:34; baseline finish 2017-10-26 10:20 → 2017-11-14 16:35 |
| 188 | GRIND THE STACKS | 2017-10-26 10:11 A → 2017-11-14 16:35 A (+19d) | 2017-10-26 19:11 A → 2017-11-16 14:37 A (+21d) | 9h → 30h |  | baseline start 2017-10-26 10:20 → 2017-11-14 16:35; baseline finish 2017-10-26 19:21 → 2017-11-16 14:37 |
| 189 | HOLE CHAMFERING | 2017-10-07 14:31 A → 2017-11-16 14:37 A (+40d) | 2017-10-10 12:31 A → 2017-12-02 06:49 A (+53d) | 30h → 200h | 307 → 188 | resources Fitter [200%]; Helper → Driller [200%]; baseline start 2017-10-07 14:37 → 2017-11-16 14:37; baseline finish 2017-10-10 12:38 → 2017-12-02 06:49 |
| 190 | NUMERING | 2017-11-06 16:11 A → 2017-12-02 06:49 A (+26d) | 2017-11-06 20:11 A → 2017-12-02 19:50 A (+26d) | 4h → 13h | HOLE CHAMFERING → 189 | resources Fitter; Helper → Helper; Fitter; baseline start 2017-11-06 16:29 → 2017-12-02 06:49; baseline finish 2017-11-06 20:29 → 2017-12-02 19:50 |
| 191 | HOLE MATCHING | 2017-11-07 07:11 A → 2017-12-02 19:50 A (+25d) | 2017-11-07 21:41 A → 2017-12-04 18:21 A (+27d) |  | SUPPORT PLATES ASSY → 190 | resources Fitter → Fitter [200%]; baseline start 2017-11-07 07:29 → 2017-12-02 19:50; baseline finish 2017-11-07 22:00 → 2017-12-04 18:21 |
| 192 | HOLES DRILLING IF REQD | 2017-11-07 21:41 A → 2017-12-04 18:21 A (+27d) | 2017-11-08 20:11 A → 2017-12-05 16:52 A (+27d) |  |  | baseline start 2017-11-08 06:00 → 2017-12-04 18:21; baseline finish 2017-11-08 20:31 → 2017-12-05 16:52 |
| 193 | CLEANING | 2018-03-22 16:00 A → 2017-12-05 16:52 A (-107d) | 2018-03-22 21:00 A → 2017-12-06 08:52 A (-106d) | 5h → 8h | 253 → 192 | baseline start 2017-10-11 10:07 → 2017-12-05 16:52; baseline finish 2017-10-11 15:08 → 2017-12-06 08:52 |
| 194 | **TIE ROD PREPARATION** | 2018-01-25 06:00 A → 2017-09-28 07:00 A (-119d) | 2018-02-05 08:00 A → 2017-10-03 15:00 A (-125d) | 7.86d → 3.86d |  | baseline start 2017-09-30 18:32 → 2017-09-28 07:00; baseline finish 2017-10-06 07:35 → 2017-10-03 15:00 |
| 195 | TIE ROD MARKING | 2018-01-25 06:00 A → 2017-09-28 07:00 A (-119d) | 2018-01-25 22:00 A → 2017-09-28 10:00 A (-119d) | 16h → 2.25h | 56, STRIP MARKING → 56 | resources Fitter; Helper; Rod (Cost) [0.1%] → Helper; Rod (Cost) [0.1%]; Fitter; baseline start 2017-09-30 18:32 → 2017-09-28 07:00; baseline finish 2017-10-03 06:32 → 2017-09-28 10:00 |
| 196 | TIE ROD CUTTING | 2018-01-25 22:00 A → 2017-09-28 10:00 A (-119d) | 2018-01-29 11:00 A → 2017-09-28 12:00 A (-123d) | 5h → 2h |  | resources Gas Cutter; Helper → Helper; Gas Cutter; baseline start 2017-10-03 06:32 → 2017-09-28 10:00; baseline finish 2017-10-03 11:32 → 2017-09-28 12:00 |
| 197 | LENGTH JOINT WELDING IF REQD | 2018-01-30 06:00 A → 2017-09-28 14:00 A (-124d) | 2018-01-31 11:00 A → 2017-09-28 21:30 A (-125d) | 21h → 7.5h |  | resources SAW Welder; Helper → Helper; SAW Welder; baseline start 2017-10-03 11:32 → 2017-09-28 14:00; baseline finish 2017-10-03 21:33 → 2017-09-28 21:30 |
| 198 | THREAD MC | 2018-01-31 11:00 A → 2017-09-29 13:00 A (-124d) | 2018-02-02 20:00 A → 2017-10-03 10:00 A (-122d) | 2.83d → 2d |  | baseline start 2017-10-03 21:33 → 2017-09-29 13:00; baseline finish 2017-10-05 18:35 → 2017-10-03 10:00 |
| 199 | CLEANING | 2017-10-10 21:31 A → 2017-10-03 10:00 A (-7d) | 2017-10-11 09:31 A → 2017-10-03 15:00 A (-8d) | 4h → 5h | NOTCH FOR SLIDING STRIP → 198 | resources Helper → Fitter; baseline start 2017-10-10 21:39 → 2017-10-03 10:00; baseline finish 2017-10-11 09:39 → 2017-10-03 15:00 |
| 200 | **SPACER TUBE PREPARATION** | 2018-01-29 06:00 A → 2017-09-28 10:00 A (-123d) | 2018-02-05 10:00 A → 2017-10-07 19:00 A (-121d) | 6.9d → 8.34d |  | baseline start 2017-10-03 06:32 → 2017-09-28 10:00; baseline finish 2017-10-10 10:38 → 2017-10-07 19:00 |
| 201 | TUBE MARKING | 2018-01-29 06:00 A → 2017-09-28 10:00 A (-123d) | 2018-01-29 18:00 A → 2017-09-29 19:00 A (-122d) | 12h → 8.75h |  | resources Fitter; Helper; Tube (Cost) [0.1%] → Helper [200%]; Tube (Cost) [0.1%]; Fitter [200%]; baseline start 2017-10-03 06:32 → 2017-09-28 10:00; baseline finish 2017-10-03 18:33 → 2017-09-29 19:00 |
| 202 | TUBE CUTTING | 2018-01-29 18:00 A → 2017-09-29 19:00 A (-122d) | 2018-01-30 17:00 A → 2017-10-03 13:00 A (-119d) | 15h → 26h |  | resources Gas Cutter; Helper → Helper [200%]; Gas Cutter [200%]; baseline start 2017-10-03 18:33 → 2017-09-29 19:00; baseline finish 2017-10-04 17:34 → 2017-10-03 13:00 |
| 203 | TUBE M/C | 2018-01-30 17:00 A → 2017-10-03 13:00 A (-119d) | 2018-02-03 11:00 A → 2017-10-07 07:00 A (-119d) |  |  | baseline start 2017-10-04 17:34 → 2017-10-03 13:00; baseline finish 2017-10-09 11:37 → 2017-10-07 07:00 |
| 204 | CLEANING | 2017-11-08 20:11 A → 2017-10-07 07:00 A (-32d) | 2018-02-28 21:30 A → 2017-10-07 19:00 A (-144d) | 1377.32h → 12h | 192 → 203 | constraint finish no later than 2018-02-28 21:30 → none; resources Helper → Fitter; baseline start 2017-11-08 20:31 → 2017-10-07 07:00; baseline finish 2017-11-09 12:31 → 2017-10-07 19:00 |
| 205 | **CS1-FITUP & WELDING** | 2018-02-14 06:00 A → 2018-01-29 06:00 A (-16d) | 2018-02-27 16:00 A → 2018-02-03 17:30 A (-24d) | 11.72d → 6.31d |  | baseline start 2017-10-10 16:00 → 2018-01-29 06:00; baseline finish 2017-10-27 17:11 → 2018-02-03 17:30 |
| 206 | SHELL LS2+LS3 READY | 2018-02-16 16:00 A → 2018-01-29 06:00 A (-18d) | 2018-02-16 22:00 A → 2018-01-29 22:00 A (-18d) |  | SHELL LS2-FABRICATION → 78, 97 | resources Helper; Plate (Cost) [0.1%] → Plate (Cost) [0.1%]; Helper; baseline start 2017-10-10 16:00 → 2018-01-29 06:00; baseline finish 2017-10-10 22:00 → 2018-01-29 22:00 |
| 207 | SHELL EP CORRECTION | 2018-02-16 06:00 A → 2018-01-29 06:00 A (-18d) | 2018-02-16 22:00 A → 2018-01-29 07:56 A (-18d) | 16h → 1.94h |  | resources Grinder [200%]; Helper → Helper; Grinder [200%]; baseline start 2017-10-11 06:00 → 2018-01-29 06:00; baseline finish 2017-10-11 11:00 → 2018-01-29 07:56 |
| 208 | CS1-FITUP | 2018-02-17 06:00 A → 2018-01-30 06:00 A (-18d) | 2018-02-17 16:00 A → 2018-01-30 09:20 A (-18d) | 10h → 3.33h |  | resources Fitter [200%]; Helper → Helper; Fitter [200%]; baseline start 2017-10-11 11:00 → 2018-01-30 06:00; baseline finish 2017-10-11 21:01 → 2018-01-30 09:20 |

| ID | Task | Start | Finish | Duration | Predecessors | Other |
| --- | --- | --- | --- | --- | --- | --- |
| 209 | CS1-FITUP INSPECTION | 2018-02-17 16:00 A → 2018-01-30 13:00 A (-18d) | 2018-02-19 14:30 A → 2018-01-31 08:21 A (-19d) | 1d → 0.78d |  | resources Fitter; Helper → Helper; Fitter; baseline start 2017-10-11 21:01 → 2018-01-30 13:00; baseline finish 2017-10-12 19:32 → 2018-01-31 08:21 |
| 210 | CS1-WELDING | 2018-02-14 06:00 A → 2018-02-01 06:00 A (-13d) | 2018-02-19 22:00 A → 2018-02-01 12:40 A (-18d) | 80h → 6.67h |  | resources SAW Welder [200%]; Helper → Helper; SAW Welder [200%]; baseline start 2017-10-12 19:32 → 2018-02-01 06:00; baseline finish 2017-10-17 21:35 → 2018-02-01 12:40 |
| 211 | CS1-FLUSHGRIND | 2018-02-20 06:00 A → 2018-02-01 21:01 A (-19d) | 2018-02-21 16:00 A → 2018-02-02 15:01 A (-19d) | 26h → 10h |  | baseline start 2017-10-17 21:35 → 2018-02-01 21:01; baseline finish 2017-10-20 09:36 → 2018-02-02 15:01 |
| 212 | CS1-DPCHECK | 2018-02-20 06:00 A → 2018-02-02 10:00 A (-18d) | 2018-02-20 22:00 A → 2018-02-02 14:00 A (-18d) | 16h → 4h |  | baseline start 2017-10-20 09:36 → 2018-02-02 10:00; baseline finish 2017-10-20 14:37 → 2018-02-02 14:00 |
| 213 | CS1-INSIDE WELDING | 2018-02-14 06:00 A → 2018-02-02 14:00 A (-12d) | 2018-02-19 22:00 A → 2018-02-02 17:00 A (-17d) | 80h → 3.01h |  | resources SAW Welder [200%]; Helper → Helper; SAW Welder [200%]; baseline start 2017-10-20 14:37 → 2018-02-02 14:00; baseline finish 2017-10-24 16:40 → 2018-02-02 17:00 |
| 214 | CS1-DRESSUP | 2018-02-21 06:00 A → 2018-02-03 13:00 A (-18d) | 2018-02-24 17:00 A → 2018-02-03 17:30 A (-21d) | 56h → 4.5h |  | resources Grinder [200%]; Helper → Helper; Grinder [200%]; baseline start 2017-10-24 16:40 → 2018-02-03 13:00; baseline finish 2017-10-25 20:41 → 2018-02-03 17:30 |
| 215 | CS1-DPCHECK | 2018-02-19 06:00 A → 2018-02-03 06:00 A (-16d) | 2018-02-24 17:00 A → 2018-02-03 10:00 A (-21d) | 24h → 4h |  | baseline start 2017-10-25 20:41 → 2018-02-03 06:00; baseline finish 2017-10-26 09:41 → 2018-02-03 10:00 |
| 216 | **CS2-FITUP & WELDING** | 2018-02-15 06:00 A → 2018-02-05 06:00 A (-10d) | 2018-03-05 16:00 A → 2018-02-13 17:01 A (-20d) | 16.14d → 7.38d |  | baseline start 2017-10-27 17:11 → 2018-02-05 06:00; baseline finish 2017-11-15 09:22 → 2018-02-13 17:01 |
| 218 | SHELL EP CORRECTION | 2018-02-15 22:00 A → 2018-02-05 14:01 A (-10d) | 2018-02-15 22:00 A → 2018-02-05 17:01 A (-10d) | 0h → 3h | SHELL CS1+SHELL DISH → 217 | resources Grinder [200%]; Helper → Helper; Grinder [200%]; baseline start 2017-10-30 07:11 → 2018-02-05 14:01; baseline finish 2017-10-30 12:11 → 2018-02-05 17:01 |
| 219 | CS2-FITUP | 2018-02-16 06:00 A → 2018-02-05 17:01 A (-11d) | 2018-02-17 16:00 A → 2018-02-05 20:37 A (-12d) | 26h → 3.61h |  | resources Fitter [200%]; Helper → Helper; Fitter [200%]; baseline start 2017-10-30 12:11 → 2018-02-05 17:01; baseline finish 2017-10-31 06:12 → 2018-02-05 20:37 |
| 220 | CS2-FITUP INSPECTION | 2018-02-17 16:00 A → 2018-02-05 06:00 A (-12d) | 2018-02-19 14:30 A → 2018-02-05 20:37 A (-14d) | 0.45d → 0.83d |  | resources Fitter; Helper → Helper; Fitter; baseline start 2017-10-31 06:12 → 2018-02-05 06:00; baseline finish 2017-10-31 20:43 → 2018-02-05 20:37 |
| 221 | CS2-WELDING | 2018-02-19 14:30 A → 2018-02-07 09:00 A (-12d) | 2018-02-22 16:30 A → 2018-02-07 19:08 A (-15d) | 50h → 10.13h |  | resources SAW Welder [200%]; Helper → Helper; SAW Welder [200%]; baseline start 2017-10-31 20:43 → 2018-02-07 09:00; baseline finish 2017-11-04 06:46 → 2018-02-07 19:08 |
| 222 | CS2-FLUSHGRIND | 2018-02-22 16:30 A → 2018-02-09 11:00 A (-13d) | 2018-02-23 20:30 A → 2018-02-09 21:01 A (-14d) | 20h → 10h |  | baseline start 2017-11-04 06:46 → 2018-02-09 11:00; baseline finish 2017-11-06 10:47 → 2018-02-09 21:01 |
| 223 | CS2-DPCHECK | 2018-02-23 20:30 A → 2018-02-09 21:01 A (-14d) | 2018-02-26 09:30 A → 2018-02-12 09:01 A (-14d) | 5h → 4h |  | baseline start 2017-11-06 10:47 → 2018-02-09 21:01; baseline finish 2017-11-06 15:48 → 2018-02-12 09:01 |
| 224 | CS2-INSIDE WELDING | 2018-02-26 09:30 A → 2018-02-10 08:00 A (-16d) | 2018-03-01 11:30 A → 2018-02-12 11:20 A (-17d) | 50h → 13.34h |  | resources SAW Welder [200%]; Helper → Helper; SAW Welder [200%]; baseline start 2017-11-06 15:48 → 2018-02-10 08:00; baseline finish 2017-11-09 17:51 → 2018-02-12 11:20 |
| 225 | CS2-DRESSUP | 2018-03-01 11:30 A → 2018-02-10 08:00 A (-19d) | 2018-03-02 15:30 A → 2018-02-12 11:20 A (-18d) | 20h → 10.6h |  | resources Grinder [200%]; Helper → Helper; Grinder [200%]; baseline start 2017-11-09 17:51 → 2018-02-10 08:00; baseline finish 2017-11-10 21:52 → 2018-02-12 11:20 |
| 226 | CS2-DPCHECK | 2018-03-02 15:30 A → 2018-02-13 13:00 A (-17d) | 2018-03-02 20:30 A → 2018-02-13 17:01 A (-17d) | 5h → 4h |  | baseline start 2017-11-10 21:52 → 2018-02-13 13:00; baseline finish 2017-11-13 10:52 → 2018-02-13 17:01 |
| 227 | **CS3-FITUP & WELDING** | 2018-02-22 15:45 A → 2018-02-14 06:00 A (-8d) | 2018-03-12 16:45 A → 2018-02-19 21:01 A (-21d) | 14.41d → 5.45d |  | baseline start 2017-10-11 18:49 → 2018-02-14 06:00; baseline finish 2017-10-31 11:00 → 2018-02-19 21:01 |
| 229 | SHELL EP CORRECTION | 2018-02-22 21:45 A → 2018-02-14 06:00 A (-8d) | 2018-02-23 10:45 A → 2018-02-14 08:08 A (-9d) | 5h → 2.15h | SHELL LS1+CH DISH READY → 228 | resources Grinder [200%]; Helper → Helper; Grinder [200%]; baseline start 2017-10-12 08:49 → 2018-02-14 06:00; baseline finish 2017-10-12 13:49 → 2018-02-14 08:08 |
| 230 | CS3-FITUP | 2018-02-23 10:45 A → 2018-02-14 06:00 A (-9d) | 2018-02-23 20:45 A → 2018-02-14 11:00 A (-9d) | 10h → 5h |  | resources Fitter [200%]; Helper → Helper; Fitter [200%]; baseline start 2017-10-12 13:49 → 2018-02-14 06:00; baseline finish 2017-10-13 07:50 → 2018-02-14 11:00 |
| 231 | CS3-FITUP INSPECTION | 2018-02-23 20:45 A → 2018-02-16 09:30 A (-7d) | 2018-02-26 19:15 A → 2018-02-16 16:59 A (-10d) | 1d → 0.52d |  | resources Fitter; Helper → Helper; Fitter; baseline start 2017-10-13 07:50 → 2018-02-16 09:30; baseline finish 2017-10-16 06:21 → 2018-02-16 16:59 |
| 232 | CS3-WELDING | 2018-02-26 19:15 A → 2018-02-17 13:00 A (-9d) | 2018-03-01 21:15 A → 2018-02-19 12:01 A (-10d) | 50h → 15h |  | resources SAW Welder [200%]; Helper → Helper; SAW Welder [200%]; baseline start 2017-10-16 06:21 → 2018-02-17 13:00; baseline finish 2017-10-20 08:24 → 2018-02-19 12:01 |
| 233 | CS3-FLUSHGRIND | 2018-03-01 21:15 A → 2018-02-17 06:00 A (-12d) | 2018-03-03 09:15 A → 2018-02-17 16:01 A (-14d) | 20h → 10h |  | baseline start 2017-10-20 08:24 → 2018-02-17 06:00; baseline finish 2017-10-21 12:25 → 2018-02-17 16:01 |
| 234 | CS3-DPCHECK | 2018-03-03 09:15 A → 2018-02-17 06:00 A (-14d) | 2018-03-03 14:15 A → 2018-02-17 10:00 A (-14d) | 5h → 4h |  | baseline start 2017-10-21 12:25 → 2018-02-17 06:00; baseline finish 2017-10-21 17:26 → 2018-02-17 10:00 |
| 235 | CS3-INSIDE WELDING | 2018-03-03 14:15 A → 2018-02-19 06:00 A (-12d) | 2018-03-07 16:15 A → 2018-02-19 21:01 A (-16d) | 50h → 15h |  | resources SAW Welder [200%]; Helper → Helper; SAW Welder [200%]; baseline start 2017-10-21 17:26 → 2018-02-19 06:00; baseline finish 2017-10-25 19:29 → 2018-02-19 21:01 |
| 236 | CS3-DRESSUP | 2018-03-07 16:15 A → 2018-02-19 06:00 A (-16d) | 2018-03-08 20:15 A → 2018-02-19 16:01 A (-17d) | 20h → 10h |  | resources Grinder [200%]; Helper → Helper; Grinder [200%]; baseline start 2017-10-25 19:29 → 2018-02-19 06:00; baseline finish 2017-10-27 07:30 → 2018-02-19 16:01 |
| 237 | CS3-DPCHECK | 2018-03-08 20:15 A → 2018-02-19 06:00 A (-17d) | 2018-03-09 09:15 A → 2018-02-19 10:00 A (-18d) | 5h → 4h |  | baseline start 2017-10-27 07:30 → 2018-02-19 06:00; baseline finish 2017-10-27 12:30 → 2018-02-19 10:00 |
| 250 | **CHANNEL FLG WELDING** | 2018-03-06 10:30 A → 2018-02-21 16:01 A (-13d) | 2018-03-09 13:30 A → 2018-02-28 06:01 A (-9d) | 3.52d → 4.83d |  | baseline start 2017-10-31 11:00 → 2018-02-21 16:01; baseline finish 2017-11-06 21:36 → 2018-02-28 06:01 |
| 252 | WELDING | 2018-02-28 06:00 A → 2018-02-22 08:01 A (-6d) | 2018-03-03 08:00 A → 2018-02-23 09:01 A (-8d) | 50h → 17h | SHELL FLG AND SHELL FIT UP → 251 | resources SAW Welder; Helper → Helper; SAW Welder; baseline start 2017-10-30 07:11 → 2018-02-22 08:01; baseline finish 2017-11-02 09:14 → 2018-02-23 09:01 |
| 253 | FLUSH GRIND | 2018-03-21 17:00 A → 2018-02-23 09:01 A (-26d) | 2018-03-22 16:00 A → 2018-02-23 19:01 A (-27d) | 15h → 10h | WELDING ONTO CHANNEL → 252 | baseline start 2017-10-10 11:06 → 2018-02-23 09:01; baseline finish 2017-10-11 10:07 → 2018-02-23 19:01 |
| 255 | WELDING | 2018-03-06 16:30 A → 2018-02-26 11:01 A (-8d) | 2018-03-08 09:30 A → 2018-02-27 12:01 A (-9d) | 25h → 17h | CH FLG AND CH FIT UP → 254 | resources SAW Welder; Helper → Helper; SAW Welder; baseline start 2017-10-31 17:01 → 2018-02-26 11:01; baseline finish 2017-11-03 19:04 → 2018-02-27 12:01 |
| 256 | FLUSH GRIND | 2018-03-03 08:00 A → 2018-02-27 12:01 A (-4d) | 2018-03-05 12:00 A → 2018-02-28 06:01 A (-5d) | 20h → 10h | 252 → 255 | baseline start 2017-11-02 09:14 → 2018-02-27 12:01; baseline finish 2017-11-03 13:15 → 2018-02-28 06:01 |
| 257 | INSPECTION | 2018-03-05 12:00 A → 2018-02-23 19:01 A (-10d) | 2018-03-06 10:30 A → 2018-02-27 16:01 A (-7d) | 1d → 2d | 256 → 253 | baseline start 2017-11-03 13:15 → 2018-02-23 19:01; baseline finish 2017-11-04 11:46 → 2018-02-27 16:01 |
| 259 | NOZZLE READY | 2018-03-06 10:30 A → 2018-03-01 06:00 A (-5d) | 2018-03-06 14:30 A → 2018-03-02 21:30 A (-4d) | 4h → 31.5h | SHELL FLG WELDING → 147, 156 | constraint none → finish no earlier than 2018-03-03 21:30; resources Helper; Pipe (Cost) [0.1%] → Helper; baseline start 2017-09-28 16:00 → 2018-03-01 06:00; baseline finish 2017-09-28 20:00 → 2018-03-02 21:30 |
| 260 | ORIENTATION MARKING | 2018-03-06 14:30 A → 2018-03-02 06:00 A (-4d) | 2018-03-06 17:30 A → 2018-03-02 06:00 A (-4d) | 3h → 0h |  | resources Fitter; Helper → Helper; Fitter; baseline start 2017-09-28 20:00 → 2018-03-02 06:00; baseline finish 2017-09-29 07:00 → 2018-03-02 06:00 |
| 261 | POSITION MARKING | 2018-03-06 17:30 A → 2018-03-03 06:00 A (-3d) | 2018-03-07 06:30 A → 2018-03-03 06:00 A (-4d) | 5h → 0h |  | constraint none → finish no earlier than 2018-03-07 21:30; resources Fitter; Helper → Helper; Fitter; baseline start 2017-09-29 07:00 → 2018-03-03 06:00; baseline finish 2017-09-29 12:00 → 2018-03-03 06:00 |
| 262 | NOZZLE OPENING | 2018-03-07 06:30 A → 2018-03-05 06:00 A (-2d) | 2018-03-07 12:30 A → 2018-03-05 06:00 A (-2d) | 6h → 0h |  | resources Gas Cutter; Helper → Helper; Gas Cutter; baseline start 2017-09-29 12:00 → 2018-03-05 06:00; baseline finish 2017-09-29 18:01 → 2018-03-05 06:00 |
| 263 | NOZZLE EP | 2018-03-07 12:30 A → 2018-03-06 06:00 A (-1d) | 2018-03-07 17:30 A → 2018-03-06 06:00 A (-1d) | 5h → 0h |  | baseline start 2017-09-29 18:01 → 2018-03-06 06:00; baseline finish 2017-09-30 07:01 → 2018-03-06 06:00 |
| 264 | NOZZLE FIT UP | 2018-03-07 17:30 A → 2018-03-06 06:00 A (-1d) | 2018-03-08 11:30 A → 2018-03-06 18:00 A (-2d) | 10h → 8h |  | resources Fitter; SAW Welder; Helper [200%] → SAW Welder; Helper [200%]; Pipe (Cost) [0.1%]; Fitter; baseline start 2017-09-30 07:01 → 2018-03-06 06:00; baseline finish 2017-09-30 17:02 → 2018-03-06 18:00 |
| 265 | NOZZLE WELDING | 2018-03-08 11:30 A → 2018-03-06 18:00 A (-2d) | 2018-03-08 21:30 A → 2018-03-07 07:18 A (-1d) | 10h → 5.31h |  | resources SAW Welder; Helper [200%] → Helper [200%]; SAW Welder; baseline start 2017-09-30 17:02 → 2018-03-06 18:00; baseline finish 2017-10-03 11:02 → 2018-03-07 07:18 |
| 266 | NOZ FLG FITUP | 2018-03-08 21:30 A → 2018-03-07 12:00 A (-1d) | 2018-03-09 17:30 A → 2018-03-07 20:00 A (-2d) | 12h → 8h |  | resources Fitter; SAW Welder; Helper [200%]; Forging Std (Cost) [0.1%] → SAW Welder; Helper [200%]; Fitter; baseline start 2017-10-03 11:02 → 2018-03-07 12:00; baseline finish 2017-10-04 07:03 → 2018-03-07 20:00 |
| 267 | WELDING | 2018-03-09 17:30 A → 2018-03-08 08:00 A (-1d) | 2018-03-12 19:30 A → 2018-03-08 17:00 A (-4d) | 18h → 9h |  | resources SAW Welder; Helper [200%] → Helper [200%]; SAW Welder; baseline start 2017-10-04 07:03 → 2018-03-08 08:00; baseline finish 2017-10-05 09:04 → 2018-03-08 17:00 |
| 270 | FLUSH GRIND | 2018-03-08 09:30 A → 2018-03-12 14:30 A (+4d) | 2018-03-08 19:30 A → 2018-03-13 08:30 A (+5d) |  | 255 → 269 | baseline start 2017-11-03 19:04 → 2018-03-12 14:30; baseline finish 2017-11-06 07:05 → 2018-03-13 08:30 |
| 271 | DP/AIR TEST | 2018-03-12 19:30 A → 2018-03-13 08:30 A (+1d) | 2018-03-13 11:30 A → 2018-03-13 16:30 A |  | 267 → 270 | baseline start 2017-10-05 09:04 → 2018-03-13 08:30; baseline finish 2017-10-05 17:05 → 2018-03-13 16:30 |
| 272 | INSPECTION | 2018-03-08 19:30 A → 2018-03-13 16:30 A (+5d) | 2018-03-09 13:30 A → 2018-03-14 15:00 A (+5d) | 0.69d → 1d | 270 → 271 | constraint none → finish no earlier than 2018-03-09 21:30; resources Fitter → Fitter [200%]; baseline start 2017-11-06 07:05 → 2018-03-13 16:30; baseline finish 2017-11-06 21:36 → 2018-03-14 15:00 |
| 274 | NOZZLE READY | 2018-03-09 13:30 A → 2018-03-03 21:30 A (-6d) | 2018-03-09 18:30 A → 2018-03-05 10:30 A (-4d) |  | 250 → 259 | resources Helper; Pipe (Cost) [0.1%] → Helper; baseline start 2017-10-06 15:36 → 2018-03-03 21:30; baseline finish 2017-10-06 20:36 → 2018-03-05 10:30 |
| 275 | POSITION MARKING | 2018-03-09 18:30 A → 2018-03-05 10:30 A (-4d) | 2018-03-12 07:30 A → 2018-03-05 15:30 A (-7d) |  |  | resources Fitter; Helper → Helper; Fitter; baseline start 2017-10-06 20:36 → 2018-03-05 10:30; baseline finish 2017-10-07 09:36 → 2018-03-05 15:30 |
| 276 | NOZZLE OPENING | 2018-03-12 07:30 A → 2018-03-05 15:30 A (-7d) | 2018-03-12 15:30 A → 2018-03-06 07:30 A (-6d) |  |  | resources Gas Cutter; Helper → Helper; Gas Cutter; baseline start 2017-10-07 09:36 → 2018-03-05 15:30; baseline finish 2017-10-07 17:37 → 2018-03-06 07:30 |
| 277 | NOZZLE EP | 2018-03-12 15:30 A → 2018-03-06 07:30 A (-6d) | 2018-03-13 06:30 A → 2018-03-06 14:30 A (-7d) |  |  | baseline start 2017-10-07 17:37 → 2018-03-06 07:30; baseline finish 2017-10-09 08:37 → 2018-03-06 14:30 |
| 282 | NOZZLE FIT UP | 2018-03-13 06:30 A → 2018-03-12 07:30 A (-1d) | 2018-03-13 16:30 A → 2018-03-12 15:15 A (-1d) | 10h → 7.75h | 277 → 281 | resources Fitter; SAW Welder; Helper [200%] → SAW Welder; Helper [200%]; Fitter; baseline start 2017-10-09 08:37 → 2018-03-12 07:30; baseline finish 2017-10-09 18:38 → 2018-03-12 15:15 |
| 283 | NOZZLE WELDING | 2018-03-13 16:30 A → 2018-03-13 13:30 A | 2018-03-14 10:30 A → 2018-03-14 09:48 A | 10h → 12.31h |  | resources SAW Welder; Helper [200%] → Helper [200%]; SAW Welder; baseline start 2017-10-09 18:38 → 2018-03-13 13:30; baseline finish 2017-10-10 12:38 → 2018-03-14 09:48 |
| 286 | DP/AIR TEST | 2018-03-14 10:30 A → 2018-03-16 20:30 A (+2d) | 2018-03-14 18:30 A → 2018-03-16 21:30 A (+2d) | 8h → 1h | 283 → 285 | constraint none → finish no earlier than 2018-03-16 21:30; baseline start 2017-10-10 12:38 → 2018-03-16 20:30; baseline finish 2017-10-10 20:39 → 2018-03-16 21:30 |
| 287 | INSPECTION | 2018-03-13 11:30 A → 2018-03-16 21:30 A (+3d) | 2018-03-14 10:00 A → 2018-03-17 08:30 A (+3d) | 1d → 0.21d | 271 → 286 | constraint none → finish no earlier than 2018-03-16 21:30; baseline start 2017-10-05 17:05 → 2018-03-16 21:30; baseline finish 2017-10-06 15:36 → 2018-03-17 08:30 |
| 288 | **SADDLE SUPPORT WELDING** | 2018-02-16 06:00 A → 2018-01-22 06:00 A (-25d) | 2018-03-24 17:00 A → 2018-03-12 21:00 A (-12d) | 32d → 41.86d |  | baseline start 2017-09-28 16:00 → 2018-01-22 06:00; baseline finish 2017-10-23 18:18 → 2018-03-12 21:00 |
| 289 | SADDLE SUPPORT PLATE MARKING | 2018-02-16 06:00 A → 2018-01-22 06:00 A (-25d) | 2018-02-19 22:00 A → 2018-01-23 10:00 A (-27d) | 32h → 10.25h | SHELL FLG WELDING → none | constraint none → start no earlier than 2018-01-22 06:00; resources Fitter; Helper; Plate (Cost) [0.1%] → Helper; Plate (Cost) [0.1%]; Fitter; baseline start 2017-09-28 16:00 → 2018-01-22 06:00; baseline finish 2017-09-29 20:01 → 2018-01-23 10:00 |
| 290 | SADDLE SUPPORT PLATE CUTTING | 2018-02-20 06:00 A → 2018-01-23 10:00 A (-28d) | 2018-02-22 10:00 A → 2018-01-24 19:00 A (-29d) | 36h → 25h |  | resources Gas Cutter; Helper → Helper; Gas Cutter; baseline start 2017-09-29 20:01 → 2018-01-23 10:00; baseline finish 2017-10-03 13:02 → 2018-01-24 19:00 |
| 291 | SADDLE SUPPORT PLATE GRINDING | 2018-02-23 06:00 A → 2018-01-24 19:00 A (-30d) | 2018-02-26 09:00 A → 2018-01-30 11:00 A (-27d) | 19h → 40h |  | baseline start 2017-10-03 13:02 → 2018-01-24 19:00; baseline finish 2017-10-05 21:05 → 2018-01-30 11:00 |
| 292 | DRILLING | 2017-10-04 11:33 A → 2018-01-30 11:00 A (+118d) | 2017-10-13 08:41 A → 2018-01-30 21:00 A (+109d) | 125h → 10h | 183 → 291 | baseline start 2017-10-04 11:33 → 2018-01-30 11:00; baseline finish 2017-10-13 08:41 → 2018-01-30 21:00 |
| 293 | COMPONENTS WELDING | 2018-02-26 14:00 A → 2018-01-30 21:00 A (-27d) | 2018-02-28 22:00 A → 2018-02-03 17:00 A (-25d) | 40h → 60h | 308 → 292 | resources SAW Welder; Helper [200%] → Helper [200%]; SAW Welder; baseline start 2017-10-06 15:06 → 2018-01-30 21:00; baseline finish 2017-10-12 15:11 → 2018-02-03 17:00 |
| 294 | SADDLE SUPPORT PLATE FIT UP | 2018-03-20 06:00 A → 2018-02-05 21:00 A (-43d) | 2018-03-21 10:00 A → 2018-02-07 19:00 A (-42d) | 20h → 30h | none → 293 | constraint start no earlier than 2018-03-20 06:00 → none; resources Fitter; Helper → Helper; Fitter; baseline start 2017-10-12 15:11 → 2018-02-05 21:00; baseline finish 2017-10-18 11:14 → 2018-02-07 19:00 |
| 295 | SADDLE SUPPORT WELDING | 2018-03-22 06:00 A → 2018-03-06 06:00 A (-16d) | 2018-03-23 18:00 A → 2018-03-06 17:00 A (-17d) | 28h → 11.01h |  | constraint start no earlier than 2018-03-22 06:00 → start no earlier than 2018-03-06 06:00; resources SAW Welder; Helper [200%] → Helper [200%]; SAW Welder; baseline start 2017-10-18 11:14 → 2018-03-06 06:00; baseline finish 2017-10-20 15:16 → 2018-03-06 17:00 |
| 296 | BEND REMOVAL | 2018-03-23 18:00 A → 2018-03-07 10:00 A (-16d) | 2018-03-23 22:00 A → 2018-03-07 20:37 A (-16d) | 4h → 10.62h |  | resources Fitter; Helper → Helper; Fitter; baseline start 2017-10-20 15:16 → 2018-03-07 10:00; baseline finish 2017-10-21 19:17 → 2018-03-07 20:37 |
| 297 | GRINDING | 2017-09-30 13:31 A → 2018-03-12 06:00 A (+163d) | 2017-09-30 20:32 A → 2018-03-12 21:00 A (+163d) | 7h → 15h | 168 → none | constraint none → start no earlier than 2018-03-12 06:00; baseline start 2017-09-30 13:31 → 2018-03-12 06:00; baseline finish 2017-09-30 20:32 → 2018-03-12 21:00 |
| 298 | **NAME PLATE WELDING** | 2018-02-20 06:00 A → 2018-03-30 09:15 A (+38d) | 2018-02-20 22:00 A → 2018-03-30 21:45 A (+38d) | 1.1d → 0.86d |  | baseline start 2017-09-29 20:01 → 2018-03-30 09:15; baseline finish 2017-09-30 20:02 → 2018-03-30 21:45 |
| 299 | NAME PLATE MARKING | 2018-02-20 06:00 A → 2018-03-30 09:15 A (+38d) | 2018-02-20 09:00 A → 2018-03-30 12:15 A (+38d) | 3h → 2h | 50, 289 → 333 | resources Fitter; Helper; Plate (Cost) [0.1%] → Helper; Plate (Cost) [0.1%]; Fitter; baseline start 2017-09-29 20:01 → 2018-03-30 09:15; baseline finish 2017-09-30 07:01 → 2018-03-30 12:15 |
| 300 | CUTTING | 2017-09-30 08:31 A → 2018-03-30 12:15 A (+181d) | 2017-09-30 11:31 A → 2018-03-30 13:45 A (+181d) | 3h → 1.5h | 179 → 299 | resources Gas Cutter; Helper → Helper; Gas Cutter; baseline start 2017-09-30 08:31 → 2018-03-30 12:15; baseline finish 2017-09-30 11:31 → 2018-03-30 13:45 |
| 301 | GRINDING | 2017-09-30 11:31 A → 2018-03-30 13:45 A (+181d) | 2017-09-30 15:31 A → 2018-03-30 17:45 A (+181d) |  |  | resources Grinder; Helper → Grinder; baseline start 2017-09-30 11:31 → 2018-03-30 13:45; baseline finish 2017-09-30 15:32 → 2018-03-30 17:45 |
| 302 | WELDING | 2018-02-20 16:00 A → 2018-03-30 17:45 A (+38d) | 2018-02-20 20:00 A → 2018-03-30 19:45 A (+38d) | 4h → 2h | GRINDING → 301 | resources SAW Welder; Helper [200%] → Helper [200%]; SAW Welder; baseline start 2017-09-30 14:02 → 2018-03-30 17:45; baseline finish 2017-09-30 18:02 → 2018-03-30 19:45 |
| 303 | CLEANING | 2018-02-03 06:00 A → 2018-03-30 19:45 A (+55d) | 2018-02-05 08:00 A → 2018-03-30 21:45 A (+53d) | 18h → 2h | 198 → 302 | resources Fitter → Helper; baseline start 2017-10-05 18:35 → 2018-03-30 19:45; baseline finish 2017-10-06 07:35 → 2018-03-30 21:45 |
| 304 | **LIFTING LUG WELDING** | 2018-02-20 09:00 A → 2018-01-23 13:00 A (-28d) | 2018-02-23 10:00 A → 2018-01-29 19:00 A (-25d) | 3.38d → 3.72d |  | baseline start 2017-09-30 07:01 → 2018-01-23 13:00; baseline finish 2017-10-05 08:04 → 2018-01-29 19:00 |

| ID | Task | Start | Finish | Duration | Predecessors | Other |
| --- | --- | --- | --- | --- | --- | --- |
| 305 | PLATE MARKING | 2017-09-30 08:31 A → 2018-01-23 13:00 A (+115d) | 2017-09-30 16:32 A → 2018-01-23 16:00 A (+115d) | 8h → 2.5h | 179, 51 → 52, 299 | resources Fitter; Helper; Plate (Cost) [0.1%] → Helper; Plate (Cost) [0.1%]; Fitter; baseline start 2017-09-30 08:31 → 2018-01-23 13:00; baseline finish 2017-09-30 16:32 → 2018-01-23 16:00 |
| 306 | CUTTING | 2017-09-30 16:32 A → 2018-01-23 16:00 A (+115d) | 2017-10-03 07:32 A → 2018-01-23 18:00 A (+112d) | 7h → 2h |  | resources Gas Cutter; Helper → Helper; Gas Cutter; baseline start 2017-09-30 16:32 → 2018-01-23 16:00; baseline finish 2017-10-03 07:32 → 2018-01-23 18:00 |
| 307 | GRINDING | 2017-10-07 10:31 A → 2018-01-23 20:00 A (+108d) | 2017-10-07 14:31 A → 2018-01-24 12:00 A (+109d) | 4h → 8h | 186 → 306 | baseline start 2017-10-07 10:36 → 2018-01-23 20:00; baseline finish 2017-10-07 14:37 → 2018-01-24 12:00 |
| 308 | DRILLING | 2018-02-26 09:00 A → 2018-01-24 12:00 A (-33d) | 2018-02-26 14:00 A → 2018-01-24 17:00 A (-33d) |  | 291 → 307 | baseline start 2017-10-05 21:05 → 2018-01-24 12:00; baseline finish 2017-10-06 15:06 → 2018-01-24 17:00 |
| 309 | PAD FORMING | 2018-02-21 12:00 A → 2018-01-24 17:00 A (-28d) | 2018-02-21 22:00 A → 2018-01-25 13:00 A (-27d) | 10h → 12h | DRILLING → 308 | resources Fitter [200%]; Helper → Helper; Fitter [200%]; baseline start 2017-10-03 10:02 → 2018-01-24 17:00; baseline finish 2017-10-03 20:03 → 2018-01-25 13:00 |
| 310 | WELDING | 2018-02-22 06:00 A → 2018-01-25 13:00 A (-28d) | 2018-02-22 22:00 A → 2018-01-29 06:11 A (-24d) | 16h → 9.19h |  | resources SAW Welder; Helper [200%] → Helper [200%]; SAW Welder; baseline start 2017-10-03 20:03 → 2018-01-25 13:00; baseline finish 2017-10-04 20:04 → 2018-01-29 06:11 |
| 311 | CLEANING | 2018-02-03 11:00 A → 2018-01-29 15:00 A (-5d) | 2018-02-05 10:00 A → 2018-01-29 19:00 A (-7d) | 15h → 4h | 203 → 310 | resources Fitter → Helper; baseline start 2017-10-09 11:37 → 2018-01-29 15:00; baseline finish 2017-10-10 10:38 → 2018-01-29 19:00 |
| 312 | **INSULATION CLEAT WELDING** | 2018-02-20 12:00 A → 2018-01-23 16:00 A (-28d) | 2018-02-23 12:00 A → 2018-01-29 14:00 A (-25d) | 3.31d → 3.17d |  | baseline start 2017-09-30 10:01 → 2018-01-23 16:00; baseline finish 2017-10-05 10:04 → 2018-01-29 14:00 |
| 313 | PLATE MARKING | 2018-02-20 09:00 A → 2018-01-23 16:00 A (-28d) | 2018-02-20 12:00 A → 2018-01-24 10:00 A (-27d) | 3h → 6h | 52, 299 → 55, 305 | resources Fitter; Helper; Plate (Cost) [0.1%] → Helper; Plate (Cost) [0.1%]; Fitter; baseline start 2017-09-30 07:01 → 2018-01-23 16:00; baseline finish 2017-09-30 10:01 → 2018-01-24 10:00 |
| 314 | CUTTING | 2018-02-20 09:00 A → 2018-01-24 10:00 A (-27d) | 2018-02-20 12:00 A → 2018-01-24 15:30 A (-27d) | 3h → 5.5h | 299 → 313 | resources Gas Cutter; Helper → Helper; Gas Cutter; baseline start 2017-09-30 07:01 → 2018-01-24 10:00; baseline finish 2017-09-30 10:01 → 2018-01-24 15:30 |
| 315 | GRINDING | 2017-10-03 07:32 A → 2018-01-24 20:00 A (+113d) | 2017-10-03 16:33 A → 2018-01-25 19:00 A (+114d) | 9h → 15h | 306 → 314 | resources Grinder; Helper → Grinder; baseline start 2017-10-03 07:32 → 2018-01-24 20:00; baseline finish 2017-10-03 16:33 → 2018-01-25 19:00 |
| 316 | WELDING | 2018-02-22 14:00 A → 2018-01-25 19:00 A (-28d) | 2018-02-22 20:00 A → 2018-01-29 06:48 A (-24d) | 6h → 3.81h | GRINDING → 315 | resources SAW Welder; Helper [200%] → Helper [200%]; SAW Welder; baseline start 2017-10-04 12:03 → 2018-01-25 19:00; baseline finish 2017-10-04 18:04 → 2018-01-29 06:48 |
| 317 | CLEANING | 2018-02-20 20:00 A → 2018-01-29 09:00 A (-22d) | 2018-02-20 22:00 A → 2018-01-29 14:00 A (-22d) | 2h → 5h | 302 → 316 | baseline start 2017-09-30 18:02 → 2018-01-29 09:00; baseline finish 2017-09-30 20:02 → 2018-01-29 14:00 |
| 318 | **TUBE BUNDLE ASSEMBLY** |  | 2018-03-28 21:00 A → 2018-03-27 19:40 A (-1d) | 19.79d → 18.6d |  | baseline start 2017-10-17 06:58 → 2018-03-06 06:00; baseline finish 2017-11-30 20:33 → 2018-03-27 19:40 |
| 319 | TUBE SHEET INSPECTION |  | 2018-03-06 20:30 A → 2018-03-06 13:15 A | 1d → 0.5d |  | resources Fitter; Forging Non-Std (Cost) [0.1%] → Tube Sheet (Cost) [0.1%]; Fitter; baseline start 2017-10-17 06:58 → 2018-03-06 06:00; baseline finish 2017-10-17 21:29 → 2018-03-06 13:15 |
| 320 | ASSY FRAME SET UP | 2018-03-06 20:30 A → 2018-03-18 06:00 A (+12d) | 2018-03-07 09:50 A → 2018-03-18 06:00 A (+11d) | 5.33h → 0h |  | resources Fitter [200%]; Helper → Helper; Fitter [200%]; baseline start 2017-10-17 21:29 → 2018-03-18 06:00; baseline finish 2017-10-20 09:30 → 2018-03-18 06:00 |
| 321 | TUBE BUNDLE ASSY | 2018-03-21 06:00 A → 2018-03-19 06:00 A (-2d) | 2018-03-21 22:00 A → 2018-03-19 06:00 A (-2d) | 16h → 0h | 320, SUPPORT PLATE PREPARATION, 178, SLIDING STRIP, 194, 200, U TUBE → 178, 194, 200, 47 | constraint start no earlier than 2018-03-21 06:00 → none; resources Fitter [200%]; Helper [300%] → Helper [300%]; Fitter [200%]; baseline start 2017-11-09 12:31 → 2018-03-19 06:00; baseline finish 2017-11-10 18:18 → 2018-03-19 06:00 |
| 322 | TUBE TIE ROD STACK WELD | 2018-03-22 06:00 A → 2018-03-19 06:00 A (-3d) | 2018-03-22 10:00 A → 2018-03-19 06:00 A (-3d) | 4h → 0h |  | resources SAW Welder [200%]; Helper → Helper [200%]; SAW Welder; baseline start 2017-11-10 18:18 → 2018-03-19 06:00; baseline finish 2017-11-13 10:18 → 2018-03-19 06:00 |
| 324 | TUBE SHEET WELDING | 2018-03-26 17:30 A → 2018-03-21 06:00 A (-5d) | 2018-03-27 11:00 A → 2018-03-22 12:09 A (-5d) | 9.5h → 22.15h | U-TUBE INSERT → 323 | resources SAW Welder; Helper → Helper [200%]; SAW Welder; baseline start 2017-11-14 09:19 → 2018-03-21 06:00; baseline finish 2017-11-16 12:21 → 2018-03-22 12:09 |
| 325 | TUBE ROOT WELDING | 2018-03-26 06:00 A → 2018-03-22 06:00 A (-4d) | 2018-03-27 20:13 A → 2018-03-22 20:30 A (-5d) | 25.22h → 14.5h |  | resources SAW Welder [200%]; Helper → Helper [200%]; SAW Welder; baseline start 2017-11-16 12:21 → 2018-03-22 06:00; baseline finish 2017-11-20 12:24 → 2018-03-22 20:30 |
| 326 | TUBE ROOT WELDING DP | 2018-03-27 20:13 A → 2018-03-23 19:00 A (-4d) | 2018-03-27 22:00 A → 2018-03-23 22:00 A (-4d) | 1.78h → 3h |  | resources SAW Welder; Helper → Fitter; baseline start 2017-11-20 12:24 → 2018-03-23 19:00; baseline finish 2017-11-20 19:40 → 2018-03-23 22:00 |
| 328 | TUBE WELDING-FINAL | 2018-03-28 06:00 A → 2018-03-26 06:00 A (-2d) | 2018-03-28 10:00 A → 2018-03-26 22:00 A (-2d) | 4h → 16h | 326 → 327 | resources SAW Welder [200%]; Helper [200%] → Helper [200%]; SAW Welder [200%]; baseline start 2017-11-21 15:41 → 2018-03-26 06:00; baseline finish 2017-11-24 17:44 → 2018-03-26 22:00 |
| 329 | TUBE TRIMMING | 2018-03-28 10:00 A → 2018-03-27 06:00 A (-1d) | 2018-03-28 14:00 A → 2018-03-27 08:40 A (-1d) | 4h → 2.67h |  | resources Grinder [200%]; Helper → Helper; Grinder [200%]; baseline start 2017-11-24 17:44 → 2018-03-27 06:00; baseline finish 2017-11-29 14:47 → 2018-03-27 08:40 |
| 330 | TUBE EXPANSION | 2018-03-28 14:00 A → 2018-03-27 08:40 A (-1d) | 2018-03-28 18:00 A → 2018-03-27 12:40 A (-1d) |  |  | resources Fitter [200%]; Helper → Helper; Fitter [200%]; baseline start 2017-11-29 14:47 → 2018-03-27 08:40; baseline finish 2017-11-29 14:47 → 2018-03-27 12:40 |
| 332 | FINAL INSPECTION | 2017-10-16 08:27 A → 2018-03-27 15:40 A (+162d) | 2017-10-17 06:58 A → 2018-03-27 19:40 A (+161d) | 1d → 4h | 176 → 331 | resources Fitter → Fitter [200%]; baseline start 2017-10-16 08:27 → 2018-03-27 15:40; baseline finish 2017-10-17 06:58 → 2018-03-27 19:40 |
| 333 | **HYDRO TEST** | 2018-03-28 06:00 A → 2018-03-27 19:40 A (-1d) | 2018-03-30 16:00 A → 2018-03-30 09:15 A | 2.9d → 2.59d |  | baseline start 2017-11-30 20:33 → 2018-03-27 19:40; baseline finish 2017-12-27 08:59 → 2018-03-30 09:15 |
| 334 | NDE CLEARANCE | 2018-03-28 21:00 A → 2018-03-27 19:40 A (-1d) | 2018-03-28 22:00 A → 2018-03-27 22:00 A (-1d) | 1h → 0.16d |  | baseline start 2017-11-30 20:33 → 2018-03-27 19:40; baseline finish 2017-12-01 19:04 → 2018-03-27 22:00 |
| 335 | PWHT | 2018-03-29 08:30 A → 2018-03-28 06:00 A (-1d) | 2018-03-30 16:00 A → 2018-03-28 20:30 A (-2d) |  |  | baseline start 2017-12-02 08:30 → 2018-03-28 06:00; baseline finish 2017-12-08 12:00 → 2018-03-28 20:30 |
| 336 | CLEANING AFTER PWHT | 2018-03-28 06:00 A → 2018-03-28 20:30 A |  | 16h → 1.5h |  | resources Fitter; Helper → Helper; Fitter; baseline start 2017-12-08 12:00 → 2018-03-28 20:30; baseline finish 2017-12-11 20:02 → 2018-03-28 22:00 |
| 337 | NDE AFTER PWHT |  |  |  |  | baseline start 2017-12-11 20:02 → 2018-03-28 06:00; baseline finish 2017-12-13 18:04 → 2018-03-28 22:00 |
| 338 | TUBE BUNDLE INSERT |  |  |  |  | resources Fitter [200%]; Helper [300%] → Helper [300%]; Fitter [200%]; baseline start 2017-12-13 18:04 → 2018-03-28 06:00; baseline finish 2017-12-15 11:05 → 2018-03-28 22:00 |
| 339 | SHELL SIDE PNUEMATIC TEST |  | 2018-03-29 08:00 A → 2018-03-28 22:00 A (-1d) | 18h → 16h |  | resources Fitter [300%]; Helper [200%] → Helper [200%]; Fitter [300%]; baseline start 2017-12-15 11:05 → 2018-03-28 06:00; baseline finish 2017-12-18 09:07 → 2018-03-28 22:00 |
| 340 | TUBE BUNDLE OUTSIDE TEST |  |  |  |  | resources Fitter [300%]; Helper [200%] → Helper [200%]; Fitter [300%]; baseline start 2017-12-18 09:07 → 2018-03-28 06:00; baseline finish 2017-12-20 07:09 → 2018-03-28 22:00 |
| 341 | TPI WITNESS | 2018-03-28 06:00 A → 2018-03-29 06:00 A (+1d) | 2018-03-28 22:00 A → 2018-03-29 10:00 A (+1d) | 16h → 0.28d |  | baseline start 2017-12-20 07:09 → 2018-03-29 06:00; baseline finish 2017-12-20 14:25 → 2018-03-29 10:00 |
| 342 | SHELL SIDE HYDRO TEST | 2018-03-29 06:00 A → 2018-03-29 10:00 A | 2018-03-29 22:00 A → 2018-03-29 12:00 A | 16h → 2h |  | resources Fitter [300%]; Helper [200%] → Helper [200%]; Fitter [300%]; baseline start 2017-12-20 14:25 → 2018-03-29 10:00; baseline finish 2017-12-22 12:26 → 2018-03-29 12:00 |
| 343 | TPI WITNESS | 2018-03-29 06:00 A → 2018-03-29 12:00 A | 2018-03-29 22:00 A → 2018-03-29 19:15 A | 16h → 0.5d |  | baseline start 2017-12-22 12:26 → 2018-03-29 12:00; baseline finish 2017-12-22 19:42 → 2018-03-29 19:15 |
| 344 | CH ASSY AND HYDRO TEST | 2018-03-30 06:00 A → 2018-03-29 19:15 A (-1d) | 2018-03-30 08:00 A → 2018-03-29 21:15 A (-1d) |  |  | resources Fitter [300%]; Helper [200%] → Helper [200%]; Fitter [300%]; baseline start 2017-12-22 19:42 → 2018-03-29 19:15; baseline finish 2017-12-26 17:44 → 2018-03-29 21:15 |
| 345 | TPI WITNESS | 2018-03-30 08:00 A → 2018-03-29 21:15 A (-1d) | 2018-03-30 11:00 A → 2018-03-30 09:15 A | 3h → 0.28d |  | baseline start 2017-12-26 17:44 → 2018-03-29 21:15; baseline finish 2017-12-27 08:59 → 2018-03-30 09:15 |
| 346 | **BLAST CLEANING & PAINTING** | 2018-03-30 16:00 A → 2018-03-28 06:00 A (-2d) | 2018-03-31 18:00 A → 2018-03-30 11:30 A (-1d) | 1.24d → 2.59d |  | baseline start 2017-12-27 08:59 → 2018-03-28 06:00; baseline finish 2018-01-09 06:04 → 2018-03-30 11:30 |
| 347 | PREPARATION FOR BLAST CLEANING | 2018-03-30 16:00 A → 2018-03-28 06:00 A (-2d) | 2018-03-30 17:30 A → 2018-03-28 22:00 A (-2d) | 1.5h → 16h | 333 → 318 | resources Fitter [200%]; Helper [200%] → Helper [200%]; Fitter [200%]; baseline start 2017-12-27 08:59 → 2018-03-28 06:00; baseline finish 2017-12-29 07:01 → 2018-03-28 22:00 |
| 348 | BLAST CLEAN | 2018-03-30 17:30 A → 2018-03-29 06:00 A (-1d) | 2018-03-31 08:45 A → 2018-03-29 20:30 A (-2d) | 0.5d → 1d |  | baseline start 2017-12-29 08:30 → 2018-03-29 06:00; baseline finish 2018-01-04 12:00 → 2018-03-29 20:30 |
| 349 | TPI WITNESS | 2018-03-31 11:15 A → 2018-03-29 20:30 A (-2d) | 2018-03-31 14:15 A → 2018-03-30 08:30 A (-1d) | 3h → 4h | PAINTING - 1COAT → 348 | baseline start 2018-01-06 09:02 → 2018-03-29 20:30; baseline finish 2018-01-06 16:18 → 2018-03-30 08:30 |
| 350 | DESPATCH CLEARANCE | 2018-03-31 14:15 A → 2018-03-30 08:30 A (-1d) | 2018-03-31 17:15 A → 2018-03-30 11:30 A (-1d) |  |  | baseline start 2018-01-06 16:18 → 2018-03-30 08:30; baseline finish 2018-01-08 07:33 → 2018-03-30 11:30 |
| 351 | DESPATCH | 2018-03-31 17:15 A → 2018-03-30 06:00 A (-1d) | 2018-03-31 18:00 A → 2018-03-30 08:40 A (-1d) | 0.75h → 2.67h | 350 → none | constraint none → start no earlier than 2018-03-30 06:00; resources Fitter [200%]; Helper [200%] → Helper [200%]; Fitter [200%]; baseline start 2018-01-08 07:33 → 2018-03-30 06:00; baseline finish 2018-01-09 06:04 → 2018-03-30 08:40 |
| 352 | **PBG** | 2018-04-24 08:30 A → 2018-04-24 06:00 A |  | 1.72d → 1.9d |  | baseline start 2018-04-12 08:30 → 2018-04-21 08:30; baseline finish 2018-04-13 16:00 → 2018-04-21 14:40 |
| 353 | PBG SUBMISSION | 2018-04-24 08:30 A → 2018-04-24 06:00 A | 2018-04-24 17:30 A → 2018-04-24 21:30 A |  | 351FS+9d → 346FS+19d | constraint none → start no earlier than 2018-04-21 06:00; baseline start 2018-04-12 08:30 → 2018-04-21 08:30; baseline finish 2018-04-13 16:00 → 2018-04-21 12:30 |
| 354 | FINAL DOCUMENTATION | 2018-04-25 08:30 A → 2018-04-25 06:00 A |  |  | 351FS+9d → 351FS+10d | baseline start none → 2018-04-21 09:40; baseline finish none → 2018-04-21 14:40 |

## Version 3 (saved 2018-05-24, file 4174.mpp)

Note of the change: third commit

Last finish 2018-04-25 → 2018-02-05 (-79d). Complete tasks 324 → 374.

Added:

| ID | Task | Duration | Start | Finish | Predecessors | Resources |
| --- | --- | --- | --- | --- | --- | --- |
| 1 | **2093-E-45-HEAT EXCHANGER** | 200.94d | 2017-05-19 08:00 A | 2018-02-05 17:00 A |  |  |
| 3 | CRM | 1d | 2017-05-20 08:00 A | 2017-05-20 17:00 A | 2 |  |
| 6 | PLATES AND RODS-SA516 Gr.60 | 0d | 2017-05-28 08:00 A | 2017-05-28 08:00 A | 4FS+2d |  |
| 7 | PLATES AND RODS-SA240 Gr.32205 | 0d | 2017-07-11 08:00 A | 2017-07-11 08:00 A | 4FS+2d |  |
| 8 | TUBES-SA789 UNS32205 | 0d | 2017-05-23 08:00 A | 2017-05-23 08:00 A | 4FS+2d |  |
| 9 | BLANK FORGING-SA182 F60 | 0d | 2017-07-12 08:00 A | 2017-07-12 08:00 A | 4FS+2d |  |
| 10 | BLANK FORGING-SA266 Gr.2 | 0d | 2017-07-12 08:00 A | 2017-07-12 08:00 A | 4FS+2d |  |
| 11 | STD FORGING-SA105 | 0d | 2017-07-04 08:00 A | 2017-07-04 08:00 A | 4FS+2d |  |
| 12 | NON STD FORGING-SA266 Gr.2 | 0d | 2017-07-12 08:00 A | 2017-07-12 08:00 A | 4FS+1d |  |
| 13 | PIPE-SA106 Gr.B | 6d | 2017-07-04 08:00 A | 2017-07-11 17:00 A | 4FS+1d |  |
| 14 | GASKET | 1d | 2017-07-12 08:00 A | 2017-07-12 17:00 A | 4FS+1d |  |
| 16 | CONSUMABLES-CS | 1d | 2017-07-12 08:00 A | 2017-07-12 17:00 A | 4FS+1d |  |
| 17 | CONSUMABLES-DUPLEX | 1d | 2017-07-12 08:00 A | 2017-07-12 17:00 A | 4FS+1d |  |
| 18 | **MATERIAL ORDERING AND RECEIPT** | 97.94d | 2017-06-27 08:00 A | 2017-11-02 17:00 A |  |  |
| 19 | PLATES AND RODS-SA516 Gr.60 | 57d | 2017-07-18 08:00 A | 2017-09-26 17:00 A | 6 |  |
| 20 | PLATES AND RODS-SA240 Gr.32205 | 43d | 2017-08-31 08:00 A | 2017-10-23 17:00 A | 7 |  |
| 21 | TUBES-SA789 UNS32205 | 77d | 2017-06-27 08:00 A | 2017-10-06 09:30 A | 8 |  |
| 22 | BLANK FORGING-SA182 F60 | 50d | 2017-07-25 08:00 A | 2017-09-27 17:30 A | 9 |  |
| 23 | BLANK FORGING-SA266 Gr.2 | 50d | 2017-07-27 08:00 A | 2017-09-30 17:30 A | 10 |  |
| 24 | STD FORGING-SA105 | 50d | 2017-07-25 08:00 A | 2017-09-27 17:30 A | 11 |  |
| 25 | NON STD FORGING-SA266 Gr.2 | 50d | 2017-07-25 08:00 A | 2017-09-27 17:30 A | 12 |  |
| 26 | PIPE-SA106 Gr.B | 31d | 2017-07-27 08:00 A | 2017-09-01 17:00 A | 13 |  |
| 27 | GASKET | 70d | 2017-07-31 08:00 A | 2017-10-24 17:00 A | 14 |  |
| 28 | FASTENERS | 75d | 2017-08-01 08:00 A | 2017-10-31 17:00 A | 15 |  |
| 29 | CONSUMABLES-CS | 26d | 2017-08-02 08:00 A | 2017-09-01 17:00 A | 16 |  |
| 30 | CONSUMABLES-DUPLEX | 32d | 2017-09-26 08:00 A | 2017-11-02 17:00 A | 17 |  |
| 31 | Fabricaton Start Date Reset | 1min | 2017-08-03 08:00 A | 2017-08-03 08:01 A |  |  |
| 32 | **Fabrication** | 140.94d | 2017-08-03 08:00 A | 2018-02-05 17:00 A |  |  |
| 35 | SHELL FLANGE | 1.81d | 2017-08-03 08:30 A | 2017-08-04 16:00 A | 31SS |  |
| 38 | NOZZLE PIPE | 1.81d | 2017-08-03 08:30 A | 2017-08-04 16:00 A | 31SS |  |
| 40 | U TUBE | 1.81d | 2017-08-03 08:30 A | 2017-08-04 16:00 A | 31SS |  |
| 42 | PP PLATE | 1.81d | 2017-08-03 08:30 A | 2017-08-04 16:00 A | 31SS |  |
| 44 | SUPPORT PLATES | 1.81d | 2017-08-03 08:30 A | 2017-08-04 16:00 A | 31SS |  |
| 47 | PIPE FOR DAVIT ASSY | 1.81d | 2017-08-03 08:30 A | 2017-08-04 16:00 A | 31SS |  |
| 51 | SLIDING STRIP/SLIDING STRIP | 1.81d | 2017-08-03 08:30 A | 2017-08-04 16:00 A | 31SS |  |
| 53 | FASTENERS | 1.81d | 2017-08-03 08:30 A | 2017-08-04 16:00 A | 31SS |  |
| 55 | MATL HANDELING | 50h | 2017-08-03 08:00 A | 2017-08-07 10:03 A | 31SS | Fitter [200%] |
| 56 | **CHANNEL LS1- FABRICATION** | 5d | 2017-08-04 16:00 A | 2017-08-10 16:00 A |  |  |
| 58 | LS1- STAMPING | 1h | 2017-08-04 18:00 A | 2017-08-04 19:00 A | 57 | Fitter |
| 62 | LS1-PRE BENDING | 2.5h | 2017-08-05 12:00 A | 2017-08-05 14:31 A | 61 | Fitter; Helper |
| 64 | LS1-EDGE PREPARTION | 3h | 2017-08-05 16:31 A | 2017-08-05 19:31 A | 63 | Grinder |
| 66 | LS1-ACID CLEANING | 0h | 2017-08-07 06:31 A | 2017-08-07 06:31 A | 65 | Helper [200%] |
| 71 | LS1-FLUSH GRIND | 3h | 2017-08-08 11:47 A | 2017-08-08 14:48 A | 70 | Grinder |
| 75 | **SHELL LS2-FABRICATION** | 5.29d | 2017-08-04 18:00 A | 2017-08-11 10:48 A |  |  |
| 83 | LS2-EDGE PREPARATION | 3h | 2017-08-05 20:01 A | 2017-08-07 07:01 A | 82 | Grinder |
| 113 | **SHELL LS4- FABRICATION** | 6.31d | 2017-08-05 06:00 A | 2017-08-14 11:00 A |  |  |
| 114 | LS4-PLATE MARKING | 2h | 2017-08-05 06:00 A | 2017-08-05 08:00 A | 34, 95 | Fitter; Helper |
| 115 | LS4-STAMPING | 1h | 2017-08-05 08:00 A | 2017-08-05 09:00 A | 114 | Fitter |
| 116 | LS4-PL CUTTING | 2h | 2017-08-05 09:00 A | 2017-08-05 11:00 A | 115 | Gas Cutter; Helper |
| 117 | LS4-GRINDING | 6h | 2017-08-05 11:00 A | 2017-08-05 17:01 A | 116 | Grinder |
| 118 | LS4-EDGE PREPARATION | 4h | 2017-08-05 17:01 A | 2017-08-05 21:01 A | 117 | Grinder |
| 119 | LS4-PREBENDING | 3h | 2017-08-05 21:01 A | 2017-08-07 08:01 A | 118 | Fitter; Helper |
| 120 | LS4-PREBEND CUTOFF | 2h | 2017-08-07 08:01 A | 2017-08-07 10:01 A | 119 | Gas Cutter |
| 121 | LS4-EDGE PREPARTION | 4h | 2017-08-07 10:01 A | 2017-08-07 14:02 A | 120 | Grinder |
| 122 | LS4-ROLLING | 3h | 2017-08-07 14:02 A | 2017-08-07 17:02 A | 121 | Fitter; Helper |
| 123 | LS4-ACID CLEANING | 0h | 2017-08-07 17:02 A | 2017-08-07 17:02 A | 122 | Helper [200%] |
| 124 | LS4-FITUP | 4h | 2017-08-07 17:02 A | 2017-08-07 21:02 A | 123 | Fitter; Helper; SAW Welder |
| 125 | LS4-SPIDERUP | 3h | 2017-08-07 21:02 A | 2017-08-08 08:02 A | 124 | Fitter |
| 126 | LS4-FITUP INSPECTION | 0.91d | 2017-08-08 08:02 A | 2017-08-08 15:18 A | 125 | Fitter |
| 127 | LS4-WELDING | 19h | 2017-08-08 15:18 A | 2017-08-09 18:19 A | 126 | Helper; SAW Welder |
| 128 | LS4-FLUSHGRIND | 6h | 2017-08-09 18:19 A | 2017-08-10 08:19 A | 127 | Grinder |
| 129 | LS4-REROLLING | 3h | 2017-08-10 08:19 A | 2017-08-10 11:19 A | 128 | Fitter; Helper |
| 130 | LS4-DPCHECK | 2h | 2017-08-10 11:19 A | 2017-08-10 13:19 A | 129 | Fitter |
| 131 | LS4-RADIOGRAPHY | 1.81d | 2017-08-10 13:30 A | 2017-08-14 11:00 A | 130 |  |
| 132 | **SHELL DISH FORMING** | 7.44d | 2017-08-05 08:00 A | 2017-08-16 12:02 A |  |  |
| 143 | **PASS PARTITION PLATE WELDING** | 6.75d | 2017-08-04 16:00 A | 2017-08-14 14:02 A |  |  |
| 144 | PP PLATE MARKING | 3h | 2017-08-04 16:00 A | 2017-08-04 19:00 A | 42 | Fitter; Helper |
| 147 | WELD OVERLAY | 10h | 2017-08-05 13:00 A | 2017-08-07 07:01 A | 146 | SAW Welder; Helper |
| 148 | WELDING ONTO CHANNEL | 15h | 2017-08-10 16:00 A | 2017-08-11 15:01 A | 56, 147 | SAW Welder; Helper |
| 151 | **NOZZLE FABRICATION** | 2.69d | 2017-08-05 11:00 A | 2017-08-08 20:03 A |  |  |
| 156 | FLANGE FIT UP | 2.5h | 2017-08-05 19:01 A | 2017-08-05 21:31 A | 39, 155 | Fitter [200%]; Helper |
| 159 | INSIDE WELDING | 3h | 2017-08-07 10:31 A | 2017-08-07 13:31 A | 158 | SAW Welder [200%]; Helper |
| 167 | **NOZZLE FABRICATION(LS)** | 23.8d | 2017-08-05 13:00 A | 2017-09-07 10:52 A |  |  |
| 186 | MACHINING IF REQD | 8h | 2017-08-29 15:45 A | 2017-08-30 07:45 A | 185 | Lathe Operator |
| 187 | FLANGE FIT UP | 12h | 2017-08-30 07:45 A | 2017-08-30 19:46 A | 39, 186 | Fitter |
| 189 | FLUSH GRIND | 8h | 2017-08-31 13:46 A | 2017-08-31 21:47 A | 188 | Grinder |
| 190 | INSIDE WELDING | 10h | 2017-08-31 21:47 A | 2017-09-01 15:48 A | 189 | SAW Welder; Helper |
| 191 | FLUSH GRIND | 8h | 2017-09-01 15:48 A | 2017-09-02 07:48 A | 190 | Grinder |
| 192 | DP CHECK | 10h | 2017-09-02 07:48 A | 2017-09-02 17:49 A | 191 | Fitter |
| 197 | EDEGE PREPARATION | 10h | 2017-09-06 16:52 A | 2017-09-07 10:52 A | 196 | Grinder; Helper |
| 200 | STAMPING | 3h | 2017-08-04 19:00 A | 2017-08-04 22:00 A | 199 | Fitter |
| 211 | **SUPPORT PLATE PREPARATION** | 9d | 2017-08-04 19:00 A | 2017-08-17 18:09 A |  |  |
| 226 | AXIS LINE MARKING | 10h | 2017-08-14 06:06 A | 2017-08-14 16:07 A | 225 | Fitter |
| 229 | DRILLING INSPECTION | 25h | 2017-09-22 14:37 A | 2017-09-26 07:38 A | 228 | Driller |
| 230 | OD MACHINING | 240h | 2017-09-26 07:38 A | 2017-10-16 07:53 A | 229 | Lathe Operator |
| 233 | HOLE CHAMFERING | 240h | 2017-10-17 15:55 A | 2017-11-06 16:10 A | 232 | Fitter [200%]; Helper |
| 235 | SUPPORT PLATES ASSY | 12h | 2017-11-07 08:10 A | 2017-11-07 20:11 A | 234 | Fitter; Helper |
| 239 | **SEALING STRIP** | 2.31d | 2017-08-08 15:03 A | 2017-08-10 18:35 A |  |  |
| 240 | SEALING STRIP MARKING | 5h | 2017-08-08 15:03 A | 2017-08-08 20:03 A | 51, 223 | Fitter [200%] |
| 241 | SEALING STRIP CUTTING | 6.5h | 2017-08-08 20:03 A | 2017-08-09 10:33 A | 240 | Gas Cutter; Helper |
| 242 | STRIP GRINDING | 10h | 2017-08-09 10:33 A | 2017-08-09 20:34 A | 241 | Grinder |
| 243 | STRIP BEND REMEOVAL | 7h | 2017-08-09 20:34 A | 2017-08-10 11:34 A | 242 | Fitter [200%] |
| 244 | STRIP MATCHING | 7h | 2017-08-10 11:34 A | 2017-08-10 18:35 A | 243 | Fitter |
| 245 | **SLIDING STRIP** | 2d | 2017-08-08 20:03 A | 2017-08-11 08:05 A |  |  |
| 246 | SEALING STRIP MARKING | 5h | 2017-08-08 20:03 A | 2017-08-09 09:03 A | 51, 240 | Fitter [200%] |
| 247 | SEAL/SLIDING STRIP CUTTING | 7h | 2017-08-09 09:03 A | 2017-08-09 16:04 A | 246 | Gas Cutter; Helper |
| 248 | STRIP GRINDING | 10h | 2017-08-09 16:04 A | 2017-08-10 10:04 A | 247 | Grinder |
| 249 | STRIP BEND REMEOVAL | 7h | 2017-08-10 10:04 A | 2017-08-10 17:05 A | 248 | Fitter [200%] |
| 250 | STRIP MATCHING | 7h | 2017-08-10 17:05 A | 2017-08-11 08:05 A | 249 | Fitter |
| 263 | SHELL LS2+LS3 DISH READY | 3h | 2017-08-14 09:49 A | 2017-08-14 12:49 A | 75, 94 | Helper |
| 273 | CS1-RT | 1.81d | 2017-08-22 09:55 A | 2017-08-23 17:25 A | 272 |  |
| 275 | SHELL CS1+LS4 | 3h | 2017-08-23 17:25 A | 2017-08-23 20:25 A | 113, 262 | Helper |
| 285 | CS2-RT | 1.81d | 2017-09-02 08:30 A | 2017-09-04 16:00 A | 284 |  |
| 287 | SHELL CS2+DISH READY | 3h | 2017-08-16 12:02 A | 2017-08-16 15:03 A | 132 | Helper |
| 297 | CS3-RT | 1.81d | 2017-08-23 12:08 A | 2017-08-28 10:38 A | 296 |  |
| 305 | RF PAD FIT UP | 3h | 2017-08-09 18:04 A | 2017-08-09 21:04 A | 304 | Fitter [200%] |
| 307 | FLUSH GRIND | 2h | 2017-08-10 08:04 A | 2017-08-10 10:04 A | 306 | Grinder [200%] |
| 308 | NOZZLE INSIDE WELD | 3h | 2017-08-10 10:04 A | 2017-08-10 13:04 A | 307 | SAW Welder; Helper |
| 311 | **NOZZLE WELDING** | 4.86d | 2017-08-08 20:03 A | 2017-08-16 16:23 A |  |  |
| 313 | ORIENTATION MARKING | 10h | 2017-08-09 09:03 A | 2017-08-09 19:04 A | 312 | Fitter |
| 318 | NOZZLE INSIDE WELD | 8h | 2017-08-14 09:06 A | 2017-08-14 17:07 A | 317 | SAW Welder; Helper |
| 321 | **DAVIT ARM ITEM MARKING** | 7.19d | 2017-08-04 16:00 A | 2017-08-14 19:07 A |  |  |
| 324 | DAVIT ARM CUTTING | 10h | 2017-08-05 15:01 A | 2017-08-07 09:01 A | 323 | Gas Cutter [200%] |
| 325 | DAVIT ARM FIT UP | 45h | 2017-08-07 09:01 A | 2017-08-10 06:04 A | 324 | Fitter [200%]; Helper |
| 326 | DAVIT ARM WELDING | 40h | 2017-08-10 06:04 A | 2017-08-14 14:07 A | 325 | SAW Welder [200%]; Helper |
| 340 | GRINDING | 4h | 2017-08-07 06:31 A | 2017-08-07 10:31 A | 339 | Grinder |
| 342 | CLEANING | 2h | 2017-08-07 14:32 A | 2017-08-07 16:32 A | 341 | Helper |
| 344 | PLATE MARKING | 3h | 2017-08-05 19:31 A | 2017-08-07 06:31 A | 46, 338 | Fitter; Helper |
| 346 | GRINDING | 6h | 2017-08-07 12:31 A | 2017-08-07 18:32 A | 345 | Grinder |
| 347 | DRILLING | 3h | 2017-08-07 18:32 A | 2017-08-07 21:32 A | 346 | Driller |
| 349 | CLEANING | 4h | 2017-08-08 10:32 A | 2017-08-08 14:33 A | 348 | Helper |
| 351 | PLATE MARKING | 3h | 2017-08-07 06:31 A | 2017-08-07 09:31 A | 49, 344 | Fitter; Helper |
| 352 | CUTTING | 5h | 2017-08-07 09:31 A | 2017-08-07 14:32 A | 351 | Gas Cutter; Helper |
| 353 | GRINDING | 5h | 2017-08-07 14:32 A | 2017-08-07 19:32 A | 352 | Grinder |
| 355 | CLEANING | 4h | 2017-08-08 09:32 A | 2017-08-08 13:32 A | 354 | Helper |
| 361 | U-TUBE INSERT | 15h | 2017-11-24 13:54 A | 2017-11-27 12:55 A | 40, 360 | Fitter [200%]; Helper |
| 369 | DP CHECK | 0.91d | 2017-12-04 14:02 A | 2017-12-04 21:17 A | 368 | Fitter |
| 370 | **SHELL FLG WELDING** | 4.89d | 2017-12-04 21:17 A | 2017-12-11 16:37 A |  |  |
| 372 | SHELL FLG WELD OVERLAY | 15h | 2017-12-05 17:18 A | 2017-12-06 16:19 A | 35, 371 | SAW Welder; Helper |
| 373 | SHELL FLG AND SHELL FIT UP | 6h | 2017-12-06 16:19 A | 2017-12-07 06:19 A | 372 | Fitter [200%]; Helper |
| 375 | FLUSH GRIND | 10h | 2017-12-08 15:21 A | 2017-12-11 09:21 A | 374 | Grinder |
| 378 | CH F1 WELDOVERLAY | 15h | 2017-08-04 16:00 A | 2017-08-05 15:01 A | 37 | SAW Welder; Helper |
| 379 | CH F1+CH FIT UP | 6h | 2017-08-10 16:00 A | 2017-08-10 22:00 A | 56, 378 | Fitter [200%]; Helper |
| 380 | CS WELDING | 25h | 2017-08-11 06:00 A | 2017-08-14 15:02 A | 379 | SAW Welder; Helper |
| 381 | FLUSH GRIND | 10h | 2017-08-14 15:02 A | 2017-08-16 09:02 A | 380 | Grinder |
| 382 | INSPECTION | 0.91d | 2017-08-16 09:02 A | 2017-08-16 16:18 A | 381 | Fitter |
| 383 | CH F2+CH FIT UP | 6h | 2017-08-16 16:18 A | 2017-08-17 06:18 A | 37, 56, 382 | Fitter [200%]; Helper |
| 384 | CS WELDING | 25h | 2017-08-17 06:18 A | 2017-08-18 15:20 A | 383 | SAW Welder; Helper |
| 385 | FLUSH GRIND | 10h | 2017-08-18 15:20 A | 2017-08-19 09:20 A | 384 | Grinder [200%] |
| 386 | INSPECTION | 0.91d | 2017-08-19 09:20 A | 2017-08-19 16:36 A | 385 | Fitter [200%]; Helper |
| 387 | CH COVER AND CH FIT UP | 6h | 2017-12-11 16:37 A | 2017-12-12 06:37 A | 370, 382 | Fitter [200%]; Helper [200%] |
| 388 | CH+SHELL FIT UP | 10h | 2017-12-12 06:37 A | 2017-12-12 16:38 A | 370, 387 | Fitter [200%]; Helper |
| 389 | INSPECTION | 1.81d | 2017-12-12 16:38 A | 2017-12-13 15:09 A | 388 | Fitter |
| 405 | PAINTING - PRIMER | 12h | 2018-01-01 14:30 A | 2018-01-02 10:30 A | 404 | Painter |
| 406 | PAINTING - TOP COAT | 12h | 2018-01-26 08:00 A | 2018-01-29 18:01 A | 405 | Painter |

Removed: 4 Plates and Rods-SA240 Gr.321; 5 Plates and Rods-SA240 Gr.304; 6 Plates and Rods-IS2062 Gr.B; 7 Tube-SA213 TP321; 8 Tube-SA213 TP304; 9 Blank Forging-SA965 F321; 10 Blank Forging-SA965 F304; 11 Non Standard Forging-SA965 F321; 12 Non Standard Forging-SA965 F304; 13 Non Standard Forging-SA266 Gr.2; 14 Standard Forging-SA182 F321; 15 Standard Forging-SA182 F304; 16 Pipe-SA312 TP304; 17 Gaskets-; 18 Fasteners-; 19 Consumables-SS321; 20 Consumables-SS304; 21 PO RECEIPT; 22 Plates and Rods-SA240 Gr.321; 23 Plates and Rods-SA240 Gr.304; 24 Plates and Rods-IS2062 Gr.B; 25 Tube-SA213 TP321; 26 Tube-SA213 TP304; 27 Blank Forging-SA965 F321; 28 Blank Forging-SA965 F304; 29 Non Standard Forging-SA965 F321; 30 Non Standard Forging-SA965 F304; 31 Non Standard Forging-SA266 Gr.2; 32 Standard Forging-SA182 F321; 33 Standard Forging-SA182 F304; 34 Pipe-SA312 TP304; 35 Gaskets-; 36 Fasteners-; 37 Consumables-SS321; 38 Consumables-SS304; 39 Fab: 4173-602-E-126; 43 CHANNEL BONNET; 45 NOZZLE NECK; 47 TUBE; 49 IMPINGEMENT PLATE; 59 CHANNEL(LHS+RHS) LS- FABRICATION; 78 SHELL LS1-FABRICATION; 80 LS1-STAMPING; 84 LS1-PREBENDING; 86 LS1-EDGE PREPARATION; 88 LS1-ACIDCLEANING; 93 LS1-FLUSHGRIND; 97 SHELL LS2- FABRICATION; 105 LS2-EDGE PREPARTION; 135 CHANNEL BONNET FORMING; 147 NOZZLE FABRICATION(PIPE); 155 EDGE PREPARATION; 156 NOZZLE FABRICATION(PIPE); 159 EDGE PREPARATION; 177 FINAL INSPECTION; 206 SHELL LS2+LS3 READY; 217 SHELL CS1+LS3; 228 CH(RHS)+CH DISH(RHS) READY; 238 CS4-FITUP & WELDING; 239 CH(LHS)+CH DISH(LHS) READY; 240 SHELL EP CORRECTION; 241 CS4-FITUP; 242 CS4-FITUP INSPECTION; 243 CS4-WELDING; 244 CS4-FLUSHGRIND; 245 CS4-DPCHECK; 246 CS4-INSIDE WELDING; 247 CS4-DRESSUP; 248 CS4-DPCHECK; 249 CS4-RT; 251 CH FLG AND CH FIT UP-RHS; 254 CH FLG AND CH FIT UP-LHS; 261 POSITION MARKING; 266 NOZ FLG FITUP; 268 RF PAD FITUP; 273 NOZZLE WITH STIFFENER WELDING; 275 POSITION MARKING; 278 ELBOW FITUP; 279 ELBOW WELDING; 280 NOZ FLG FITUP; 281 NOZ FLG WELDING; 284 STIFFENER FITUP; 285 STIFFENER WELDING; 293 COMPONENTS WELDING; 309 PAD FORMING; 323 TUBE INSERT; 332 FINAL INSPECTION; 352 PBG; 353 PBG SUBMISSION; 354 FINAL DOCUMENTATION

Changed:

| ID | Task | Start | Finish | Duration | Predecessors | Other |
| --- | --- | --- | --- | --- | --- | --- |
| 2 | PO RECEIPT | 2017-05-09 08:00 A → 2017-05-19 08:00 A (+10d) | 2017-05-10 09:30 A → 2017-05-19 17:00 A (+9d) | 0.55d → 1d |  | baseline start 2017-05-09 08:00 → 2017-05-19 08:00; baseline finish 2017-05-10 09:30 → 2017-05-19 17:00 |
| 4 | DRAWING SUBMISSION FOR APPROVAL | 2017-07-19 08:00 A → 2017-05-22 08:00 A (-58d) | 2017-12-29 17:23 A → 2017-07-11 17:00 A (-171d) | 32.55d → 42d | 2 → 3 | baseline start 2017-07-19 08:00 → 2017-05-22 08:00; baseline finish 2017-12-29 17:23 → 2017-07-11 17:00 |
| 5 | **PR ISSUE** | 2017-06-15 08:00 A → 2017-05-23 08:00 A (-23d) | 2017-10-26 09:23 A → 2017-07-12 17:00 A (-106d) | 55.79d → 39.94d |  | baseline start 2017-06-15 08:00 → 2017-05-23 08:00; baseline finish 2017-10-26 09:23 → 2017-07-12 17:00 |
| 15 | FASTENERS | 2017-09-27 08:30 A → 2017-07-04 08:00 A (-85d) | 2017-09-28 07:00 A → 2017-07-11 17:00 A (-79d) | 1d → 6d | 34SS → 4FS+1d | baseline start 2017-09-27 08:30 → 2017-07-04 08:00; baseline finish 2017-09-28 07:00 → 2017-07-11 17:00 |
| 33 | **MATERIAL RECEIPT** | 2017-09-27 08:30 A → 2017-08-03 08:00 A (-55d) | 2018-03-20 20:30 A → 2017-08-07 10:03 A (-225d) | 148.69d → 3.19d |  | baseline start 2017-09-27 08:30 → 2017-08-03 08:00; baseline finish 2018-03-20 20:30 → 2017-08-07 10:03 |
| 34 | PLATE FOR SHELL | 2017-09-27 08:30 A → 2017-08-03 08:30 A (-55d) | 2017-09-28 07:00 A → 2017-08-04 16:00 A (-55d) | 1d → 1.81d | none → 31SS | constraint start no earlier than 2017-09-27 06:00 → none; baseline start 2017-09-27 08:30 → 2017-08-03 08:00; baseline finish 2017-09-28 07:00 → 2017-08-04 06:31 |
| 36 | PLATE FOR CHANNEL | 2017-09-27 08:30 A → 2017-08-03 08:30 A (-55d) | 2017-09-28 07:00 A → 2017-08-04 16:00 A (-55d) | 1d → 1.81d | 34SS → 31SS | baseline start 2017-09-27 08:30 → 2017-08-03 08:00; baseline finish 2017-09-28 07:00 → 2017-08-04 06:31 |
| 37 | CHANNEL FLANGE | 2017-09-27 08:30 A → 2017-08-03 08:30 A (-55d) | 2017-09-28 07:00 A → 2017-08-04 16:00 A (-55d) | 1d → 1.81d | 34SS → 31SS | baseline start 2017-09-27 08:30 → 2017-08-03 08:00; baseline finish 2017-09-28 07:00 → 2017-08-04 06:31 |
| 39 | NOZZLE FLG | 2017-09-27 08:30 A → 2017-08-03 08:30 A (-55d) | 2017-09-28 07:00 A → 2017-08-04 16:00 A (-55d) | 1d → 1.81d | 34SS → 31SS | baseline start 2017-09-27 08:30 → 2017-08-03 08:00; baseline finish 2017-09-28 07:00 → 2017-08-04 06:31 |
| 41 | TUBE SHEET | 2017-09-27 08:30 A → 2017-08-03 08:30 A (-55d) | 2017-09-28 07:00 A → 2017-08-04 16:00 A (-55d) | 1d → 1.81d | 34SS → 31SS | baseline start 2017-09-27 08:30 → 2017-08-03 08:00; baseline finish 2017-09-28 07:00 → 2017-08-04 06:31 |
| 43 | NAME PLATE | 2017-09-27 08:30 A → 2017-08-03 08:30 A (-55d) | 2017-09-28 07:00 A → 2017-08-04 16:00 A (-55d) | 1d → 1.81d | 34SS → 31SS | baseline start 2017-09-27 08:30 → 2017-08-03 08:00; baseline finish 2017-09-28 07:00 → 2017-08-04 06:31 |
| 45 | BAFFLE PLATE | 2017-09-27 08:30 A → 2017-08-03 08:30 A (-55d) | 2017-09-28 07:00 A → 2017-08-04 16:00 A (-55d) | 1d → 1.81d | 34SS → 31SS | baseline start 2017-09-27 08:30 → 2017-08-03 08:00; baseline finish 2017-09-28 07:00 → 2017-08-04 06:31 |
| 46 | LIFTING LUG | 2017-09-27 08:30 A → 2017-08-03 08:30 A (-55d) | 2017-09-28 07:00 A → 2017-08-04 16:00 A (-55d) | 1d → 1.81d | 34SS → 31SS | baseline start 2017-09-27 08:30 → 2017-08-03 08:00; baseline finish 2017-09-28 07:00 → 2017-08-04 06:31 |
| 48 | SADDLE MATERIAL | 2017-09-27 08:30 A → 2017-08-03 08:30 A (-55d) | 2017-09-28 07:00 A → 2017-08-04 16:00 A (-55d) | 1d → 1.81d | 34SS → 31SS | baseline start 2017-09-27 08:30 → 2017-08-03 08:00; baseline finish 2017-09-28 07:00 → 2017-08-04 06:31 |
| 49 | INSULATION CLEAT | 2017-09-27 08:30 A → 2017-08-03 08:30 A (-55d) | 2017-09-28 07:00 A → 2017-08-04 16:00 A (-55d) | 1d → 1.81d | 34SS → 31SS | baseline start 2017-09-27 08:30 → 2017-08-03 08:00; baseline finish 2017-09-28 07:00 → 2017-08-04 06:31 |
| 50 | SPACER TUBE | 2017-09-27 08:30 A → 2017-08-03 08:30 A (-55d) | 2017-09-28 07:00 A → 2017-08-04 16:00 A (-55d) | 1d → 1.81d | 34SS → 31SS | baseline start 2017-09-27 08:30 → 2017-08-03 08:00; baseline finish 2017-09-28 07:00 → 2017-08-04 06:31 |
| 52 | TIE ROD | 2017-09-27 08:30 A → 2017-08-03 08:30 A (-55d) | 2017-09-28 07:00 A → 2017-08-04 16:00 A (-55d) | 1d → 1.81d | 34SS → 31SS | baseline start 2017-09-27 08:30 → 2017-08-03 08:00; baseline finish 2017-09-28 07:00 → 2017-08-04 06:31 |
| 54 | GASKETS | 2017-09-27 08:30 A → 2017-08-03 08:30 A (-55d) | 2017-09-28 07:00 A → 2017-08-04 16:00 A (-55d) | 1d → 1.81d | 34SS → 31SS | baseline start 2017-09-27 08:30 → 2017-08-03 08:00; baseline finish 2017-09-28 07:00 → 2017-08-04 06:31 |
| 57 | LS1-PLATE MARKING | 2017-09-28 19:30 A → 2017-08-04 16:00 A (-55d) | 2017-09-29 07:30 A → 2017-08-04 18:00 A (-56d) | 4h → 2h | 34, 168 → 36 | resources Helper; Plate (Cost) [0.1%]; Fitter → Fitter; Helper; baseline start 2017-09-28 19:30 → 2017-08-04 06:31; baseline finish 2017-09-29 07:30 → 2017-08-04 08:31 |
| 59 | LS1-PL CUTTING | 2017-09-29 10:30 A → 2017-08-04 19:00 A (-56d) | 2017-09-29 15:31 A → 2017-08-04 21:00 A (-56d) | 5h → 2h | LS1-STAMPING → 58 | resources Helper; Gas Cutter → Gas Cutter; Helper; baseline start 2017-09-29 10:30 → 2017-08-04 09:31; baseline finish 2017-09-29 15:31 → 2017-08-04 11:31 |
| 60 | LS1-GRINDING | 2017-09-29 15:31 A → 2017-08-04 21:00 A (-56d) | 2017-09-29 20:31 A → 2017-08-05 10:00 A (-55d) |  |  | baseline start 2017-09-29 15:31 → 2017-08-04 11:31; baseline finish 2017-09-29 20:31 → 2017-08-04 16:32 |
| 61 | LS1-EDGE PREPARATION | 2017-09-29 20:31 A → 2017-08-05 10:00 A (-55d) | 2017-09-30 08:01 A → 2017-08-05 12:00 A (-56d) | 3.5h → 2h |  | baseline start 2017-09-29 20:31 → 2017-08-04 16:32; baseline finish 2017-09-30 08:01 → 2017-08-04 18:32 |
| 63 | LS1-PREBEND CUTOFF | 2017-09-30 13:01 A → 2017-08-05 14:31 A (-56d) | 2017-09-30 16:32 A → 2017-08-05 16:31 A (-56d) | 3.5h → 2h | LS1-PREBENDING → 62 | baseline start 2017-09-30 13:01 → 2017-08-04 21:02; baseline finish 2017-09-30 16:32 → 2017-08-05 07:02 |
| 65 | LS1-ROLLING | 2017-09-30 20:02 A → 2017-08-05 19:31 A (-56d) | 2017-10-03 08:16 A → 2017-08-07 06:31 A (-57d) | 4.25h → 3h | LS1-EDGE PREPARATION → 64 | resources Helper; Fitter → Fitter; Helper; baseline start 2017-09-30 20:02 → 2017-08-05 10:02; baseline finish 2017-10-03 08:16 → 2017-08-05 13:02 |
| 67 | LS1-FITUP | 2017-10-03 14:03 A → 2017-08-07 06:31 A (-57d) | 2017-10-03 20:03 A → 2017-08-07 10:31 A (-57d) | 6h → 4h | LS1-ACIDCLEANING → 66 | resources Helper; SAW Welder; Fitter → Fitter; Helper; SAW Welder; baseline start 2017-10-03 14:03 → 2017-08-05 13:02; baseline finish 2017-10-03 20:03 → 2017-08-05 17:03 |
| 68 | LS1-SPIDERUP | 2017-10-03 20:03 A → 2017-08-07 10:31 A (-57d) | 2017-10-04 09:03 A → 2017-08-07 13:31 A (-58d) | 5h → 3h |  | baseline start 2017-10-03 20:03 → 2017-08-05 17:03; baseline finish 2017-10-04 09:03 → 2017-08-05 20:03 |
| 69 | LS1-FITUP INSPECTION | 2017-10-04 09:03 A → 2017-08-07 13:31 A (-58d) | 2017-10-05 07:34 A → 2017-08-07 20:47 A (-59d) | 1d → 0.91d |  | baseline start 2017-10-04 09:03 → 2017-08-05 20:03; baseline finish 2017-10-05 07:34 → 2017-08-07 11:18 |
| 70 | LS1-WELDING | 2017-10-05 07:34 A → 2017-08-07 20:47 A (-59d) | 2017-10-06 08:35 A → 2017-08-08 11:47 A (-59d) | 17h → 7h |  | resources SAW Welder; Helper → Helper; SAW Welder; baseline start 2017-10-05 07:34 → 2017-08-07 11:18; baseline finish 2017-10-06 08:35 → 2017-08-07 18:19 |
| 72 | LS1-REROLLING | 2017-10-06 18:36 A → 2017-08-08 14:48 A (-59d) | 2017-10-07 08:36 A → 2017-08-08 17:48 A (-60d) | 6h → 3h | LS1-FLUSHGRIND → 71 | resources Helper; Fitter → Fitter; Helper; baseline start 2017-10-06 18:36 → 2017-08-07 21:19; baseline finish 2017-10-07 08:36 → 2017-08-08 08:19 |
| 73 | LS1-DPCHECK | 2017-10-07 08:36 A → 2017-08-08 17:48 A (-60d) | 2017-10-07 12:36 A → 2017-08-08 19:48 A (-60d) | 4h → 2h |  | baseline start 2017-10-07 08:36 → 2017-08-08 08:19; baseline finish 2017-10-07 12:36 → 2017-08-08 10:19 |
| 74 | LS1-RADIOGRAPHY | 2017-10-07 13:30 A → 2017-08-09 08:30 A (-59d) | 2017-10-09 12:00 A → 2017-08-10 16:00 A (-60d) | 1d → 1.81d |  | baseline start 2017-10-07 13:30 → 2017-08-08 10:19; baseline finish 2017-10-09 12:00 → 2017-08-09 08:50 |
| 76 | LS2-PLATE MARKING | 2017-09-29 07:30 A → 2017-08-04 18:00 A (-56d) | 2017-09-29 11:30 A → 2017-08-04 20:00 A (-56d) | 4h → 2h |  | resources Helper; Plate (Cost) [0.1%]; Fitter → Fitter; Helper; baseline start 2017-09-29 07:30 → 2017-08-04 08:31; baseline finish 2017-09-29 11:30 → 2017-08-04 10:31 |
| 77 | LS2-STAMPING | 2017-09-29 11:30 A → 2017-08-04 20:00 A (-56d) | 2017-09-29 14:31 A → 2017-08-04 21:00 A (-56d) | 3h → 1h |  | baseline start 2017-09-29 11:30 → 2017-08-04 10:31; baseline finish 2017-09-29 14:31 → 2017-08-04 11:31 |
| 78 | LS2-PL CUTTING | 2017-09-29 14:31 A → 2017-08-04 21:00 A (-56d) | 2017-09-29 17:31 A → 2017-08-05 07:00 A (-55d) | 3h → 2h |  | resources Helper; Gas Cutter → Gas Cutter; Helper; baseline start 2017-09-29 14:31 → 2017-08-04 11:31; baseline finish 2017-09-29 17:31 → 2017-08-04 13:31 |
| 79 | LS2-GRINDING | 2017-09-29 19:31 A → 2017-08-05 07:00 A (-55d) | 2017-09-30 08:31 A → 2017-08-05 12:00 A (-56d) |  |  | baseline start 2017-09-29 19:31 → 2017-08-04 13:31; baseline finish 2017-09-30 08:31 → 2017-08-04 18:32 |
| 80 | LS2-EDGE PREPARATION | 2017-09-30 08:31 A → 2017-08-05 12:00 A (-56d) | 2017-09-30 12:01 A → 2017-08-05 15:01 A (-56d) | 3.5h → 3h |  | baseline start 2017-09-30 08:31 → 2017-08-04 18:32; baseline finish 2017-09-30 12:01 → 2017-08-04 21:32 |
| 81 | LS2-PREBENDING | 2017-09-30 12:01 A → 2017-08-05 15:01 A (-56d) | 2017-09-30 14:32 A → 2017-08-05 18:01 A (-56d) | 2.5h → 3h |  | resources Helper; Fitter → Fitter; Helper; baseline start 2017-09-30 12:01 → 2017-08-04 21:32; baseline finish 2017-09-30 14:32 → 2017-08-05 08:32 |
| 82 | LS2-PREBEND CUTOFF | 2017-09-30 17:02 A → 2017-08-05 18:01 A (-56d) | 2017-09-30 20:32 A → 2017-08-05 20:01 A (-56d) | 3.5h → 2h |  | baseline start 2017-09-30 17:02 → 2017-08-05 08:32; baseline finish 2017-09-30 20:32 → 2017-08-05 10:32 |
| 84 | LS2-ROLLING | 2017-10-03 08:02 A → 2017-08-07 07:01 A (-57d) | 2017-10-03 14:03 A → 2017-08-07 10:01 A (-57d) | 6h → 3h | LS2-EDGE PREPARTION → 83 | resources Helper; Fitter → Fitter; Helper; baseline start 2017-10-03 08:02 → 2017-08-05 13:32; baseline finish 2017-10-03 14:03 → 2017-08-05 16:33 |
| 85 | LS2-ACIDCLEANING | 2017-10-03 14:03 A → 2017-08-07 10:01 A (-57d) | 2017-10-03 18:03 A → 2017-08-07 10:01 A (-57d) | 4h → 0h |  | baseline start 2017-10-03 14:03 → 2017-08-05 16:33; baseline finish 2017-10-03 18:03 → 2017-08-05 16:33 |
| 86 | LS2-FITUP | 2017-10-03 18:03 A → 2017-08-07 10:01 A (-57d) | 2017-10-03 21:23 A → 2017-08-07 14:02 A (-57d) | 3.33h → 4h |  | resources Helper; SAW Welder; Fitter → Fitter; Helper; SAW Welder; baseline start 2017-10-03 18:03 → 2017-08-05 16:33; baseline finish 2017-10-03 21:23 → 2017-08-05 20:33 |
| 87 | LS2-SPIDERUP | 2017-10-04 08:03 A → 2017-08-07 14:02 A (-58d) | 2017-10-04 13:03 A → 2017-08-07 17:02 A (-58d) | 5h → 3h |  | baseline start 2017-10-04 08:03 → 2017-08-05 20:33; baseline finish 2017-10-04 13:03 → 2017-08-07 07:33 |
| 88 | LS2-FITUP INSPECTION | 2017-10-04 13:03 A → 2017-08-07 17:02 A (-58d) | 2017-10-05 11:34 A → 2017-08-08 08:17 A (-58d) | 1d → 0.91d |  | baseline start 2017-10-04 13:03 → 2017-08-07 07:33; baseline finish 2017-10-05 11:34 → 2017-08-07 14:49 |
| 89 | LS2-WELDING | 2017-10-05 11:34 A → 2017-08-08 08:17 A (-58d) | 2017-10-05 21:20 A → 2017-08-08 18:18 A (-58d) | 9.75h → 10h |  | resources SAW Welder; Helper → Helper; SAW Welder; baseline start 2017-10-05 11:34 → 2017-08-07 14:49; baseline finish 2017-10-05 21:20 → 2017-08-08 08:49 |
| 90 | LS2-FLUSHGRIND | 2017-10-06 12:35 A → 2017-08-08 18:18 A (-59d) | 2017-10-07 06:36 A → 2017-08-09 07:18 A (-59d) | 10h → 5h |  | baseline start 2017-10-06 12:35 → 2017-08-08 08:49; baseline finish 2017-10-07 06:36 → 2017-08-08 13:49 |
| 91 | LS2-REROLLING | 2017-10-07 06:36 A → 2017-08-09 07:18 A (-59d) | 2017-10-07 10:36 A → 2017-08-09 10:18 A (-59d) | 4h → 3h |  | resources Helper; Fitter → Fitter; Helper; baseline start 2017-10-07 06:36 → 2017-08-08 13:49; baseline finish 2017-10-07 10:36 → 2017-08-08 16:50 |
| 92 | LS2-DPCHECK | 2017-10-07 12:36 A → 2017-08-09 10:18 A (-59d) | 2017-10-07 16:37 A → 2017-08-09 12:18 A (-59d) | 4h → 2h |  | baseline start 2017-10-07 12:36 → 2017-08-08 16:50; baseline finish 2017-10-07 16:37 → 2017-08-08 18:50 |
| 93 | LS2-RADIOGRAPHY | 2017-10-07 16:37 A → 2017-08-09 12:18 A (-59d) | 2017-10-09 15:07 A → 2017-08-11 10:48 A (-59d) | 1d → 1.81d |  | baseline start 2017-10-07 16:37 → 2017-08-08 18:50; baseline finish 2017-10-09 15:07 → 2017-08-09 17:21 |
| 94 | **SHELL LS3- FABRICATION** | 2017-09-29 11:30 A → 2017-08-04 20:00 A (-56d) | 2017-10-10 07:00 A → 2017-08-14 09:49 A (-57d) | 8.52d → 6.16d |  | baseline start 2017-09-29 11:30 → 2017-08-04 10:31; baseline finish 2017-10-10 07:00 → 2017-08-10 16:22 |
| 95 | LS3-PLATE MARKING | 2017-09-29 11:30 A → 2017-08-04 20:00 A (-56d) | 2017-09-29 15:31 A → 2017-08-04 22:00 A (-56d) | 3.5h → 2h |  | resources Helper; Plate (Cost) [0.1%]; Fitter → Fitter; Helper; baseline start 2017-09-29 11:30 → 2017-08-04 10:31; baseline finish 2017-09-29 15:31 → 2017-08-04 12:31 |
| 96 | LS3-STAMPING | 2017-09-29 15:31 A → 2017-08-05 06:00 A (-55d) | 2017-09-29 18:31 A → 2017-08-05 07:00 A (-55d) | 3h → 1h |  | baseline start 2017-09-29 15:31 → 2017-08-04 12:31; baseline finish 2017-09-29 18:31 → 2017-08-04 13:31 |
| 97 | LS3-PL CUTTING | 2017-09-29 18:31 A → 2017-08-05 07:00 A (-55d) | 2017-09-29 21:31 A → 2017-08-05 09:00 A (-55d) | 3h → 2h |  | resources Helper; Gas Cutter → Gas Cutter; Helper; baseline start 2017-09-29 18:31 → 2017-08-04 13:31; baseline finish 2017-09-29 21:31 → 2017-08-04 15:32 |
| 98 | LS3-GRINDING | 2017-09-30 07:31 A → 2017-08-05 09:00 A (-56d) | 2017-09-30 12:31 A → 2017-08-05 15:01 A (-56d) | 5h → 6h |  | baseline start 2017-09-30 07:31 → 2017-08-04 15:32; baseline finish 2017-09-30 12:31 → 2017-08-04 21:32 |
| 99 | LS3-EDGE PREPARATION | 2017-09-30 12:31 A → 2017-08-05 15:01 A (-56d) | 2017-09-30 16:02 A → 2017-08-05 19:01 A (-56d) | 3.5h → 4h |  | baseline start 2017-09-30 12:31 → 2017-08-04 21:32; baseline finish 2017-09-30 16:02 → 2017-08-05 09:32 |
| 100 | LS3-PREBENDING | 2017-09-30 16:02 A → 2017-08-05 19:01 A (-56d) | 2017-09-30 18:32 A → 2017-08-07 06:01 A (-54d) | 2.5h → 3h |  | resources Helper; Fitter → Fitter; Helper; baseline start 2017-09-30 16:02 → 2017-08-05 09:32; baseline finish 2017-09-30 18:32 → 2017-08-05 12:32 |
| 101 | LS3-PREBEND CUTOFF | 2017-09-30 21:02 A → 2017-08-07 06:01 A (-54d) | 2017-10-03 08:32 A → 2017-08-07 08:01 A (-57d) | 3.5h → 2h |  | baseline start 2017-09-30 21:02 → 2017-08-05 12:32; baseline finish 2017-10-03 08:32 → 2017-08-05 14:33 |
| 102 | LS3-EDGE PREPARTION | 2017-10-03 08:32 A → 2017-08-07 08:01 A (-57d) | 2017-10-03 12:02 A → 2017-08-07 12:01 A (-57d) | 3.5h → 4h |  | baseline start 2017-10-03 08:32 → 2017-08-05 14:33; baseline finish 2017-10-03 12:02 → 2017-08-05 18:33 |
| 103 | LS3-ROLLING | 2017-10-03 12:02 A → 2017-08-07 12:01 A (-57d) | 2017-10-03 18:03 A → 2017-08-07 15:02 A (-57d) | 6h → 3h |  | resources Helper; Fitter → Fitter; Helper; baseline start 2017-10-03 12:02 → 2017-08-05 18:33; baseline finish 2017-10-03 18:03 → 2017-08-05 21:33 |
| 104 | LS3-ACIDCLEANING | 2017-10-03 18:03 A → 2017-08-07 15:02 A (-57d) | 2017-10-04 06:03 A → 2017-08-07 15:02 A (-58d) | 4h → 0h |  | baseline start 2017-10-03 18:03 → 2017-08-05 21:33; baseline finish 2017-10-04 06:03 → 2017-08-05 21:33 |
| 105 | LS3-FITUP | 2017-10-04 06:03 A → 2017-08-07 15:02 A (-58d) | 2017-10-04 09:23 A → 2017-08-07 19:02 A (-58d) | 3.33h → 4h |  | resources Helper; SAW Welder; Fitter → Fitter; Helper; SAW Welder; baseline start 2017-10-04 06:03 → 2017-08-05 21:33; baseline finish 2017-10-04 09:23 → 2017-08-07 09:33 |
| 106 | LS3-SPIDERUP | 2017-10-04 12:03 A → 2017-08-07 19:02 A (-58d) | 2017-10-04 17:04 A → 2017-08-08 06:02 A (-57d) | 5h → 3h |  | baseline start 2017-10-04 12:03 → 2017-08-07 09:33; baseline finish 2017-10-04 17:04 → 2017-08-07 12:33 |
| 107 | LS3-FITUP INSPECTION | 2017-10-04 17:04 A → 2017-08-08 06:02 A (-57d) | 2017-10-05 15:35 A → 2017-08-08 13:17 A (-58d) | 1d → 0.91d |  | baseline start 2017-10-04 17:04 → 2017-08-07 12:33; baseline finish 2017-10-05 15:35 → 2017-08-07 19:49 |
| 108 | LS3-WELDING | 2017-10-05 15:35 A → 2017-08-08 13:17 A (-58d) | 2017-10-06 09:20 A → 2017-08-09 16:19 A (-58d) | 9.75h → 19h |  | resources SAW Welder; Helper → Helper; SAW Welder; baseline start 2017-10-05 15:35 → 2017-08-07 19:49; baseline finish 2017-10-06 09:20 → 2017-08-09 06:50 |
| 109 | LS3-FLUSHGRIND | 2017-10-06 16:36 A → 2017-08-09 16:19 A (-58d) | 2017-10-07 10:36 A → 2017-08-10 06:19 A (-58d) | 10h → 6h |  | baseline start 2017-10-06 16:36 → 2017-08-09 06:50; baseline finish 2017-10-07 10:36 → 2017-08-09 12:50 |
| 110 | LS3-REROLLING | 2017-10-07 10:36 A → 2017-08-10 06:19 A (-58d) | 2017-10-07 14:37 A → 2017-08-10 09:19 A (-58d) | 4h → 3h |  | resources Helper; Fitter → Fitter; Helper; baseline start 2017-10-07 10:36 → 2017-08-09 12:50; baseline finish 2017-10-07 14:37 → 2017-08-09 15:51 |
| 111 | LS3-DPCHECK | 2017-10-07 16:37 A → 2017-08-10 09:19 A (-58d) | 2017-10-07 20:37 A → 2017-08-10 11:19 A (-58d) | 4h → 2h |  | baseline start 2017-10-07 16:37 → 2017-08-09 15:51; baseline finish 2017-10-07 20:37 → 2017-08-09 17:51 |
| 112 | LS3-RADIOGRAPHY | 2017-10-09 08:30 A → 2017-08-10 11:19 A (-60d) | 2017-10-10 07:00 A → 2017-08-14 09:49 A (-57d) | 1d → 1.81d |  | baseline start 2017-10-09 08:30 → 2017-08-09 17:51; baseline finish 2017-10-10 07:00 → 2017-08-10 16:22 |
| 133 | DISH PLATE MARKING | 2017-12-27 06:00 A → 2017-08-05 08:00 A (-144d) | 2017-12-27 10:00 A → 2017-08-05 11:00 A (-144d) | 2h → 3h | none → 34, 114 | constraint start no earlier than 2017-12-27 06:00 → none; resources Helper; Plate (Cost) [0.1%]; Fitter → Fitter; Helper; baseline start 2017-12-27 06:00 → 2017-08-04 14:32; baseline finish 2017-12-27 10:00 → 2017-08-04 17:32 |
| 134 | DISH PLATE CUTTING | 2017-12-27 10:00 A → 2017-08-05 11:00 A (-144d) | 2017-12-27 15:00 A → 2017-08-05 15:01 A (-144d) | 5h → 4h |  | resources Helper; Gas Cutter → Gas Cutter; baseline start 2017-12-27 10:00 → 2017-08-04 17:32; baseline finish 2017-12-27 15:00 → 2017-08-04 21:32 |
| 135 | DISH PLATE GRINDING | 2017-12-27 15:00 A → 2017-08-05 15:01 A (-144d) | 2017-12-27 22:00 A → 2017-08-05 20:01 A (-144d) | 7h → 5h |  | baseline start 2017-12-27 15:00 → 2017-08-04 21:32; baseline finish 2017-12-27 22:00 → 2017-08-05 10:32 |

| ID | Task | Start | Finish | Duration | Predecessors | Other |
| --- | --- | --- | --- | --- | --- | --- |
| 136 | DISH FORMING | 2017-12-28 08:30 A → 2017-08-07 08:30 A (-143d) | 2018-01-03 15:30 A → 2017-08-10 14:30 A (-146d) | 6d → 3.62d |  | baseline start 2017-12-28 08:30 → 2017-08-05 10:32; baseline finish 2018-01-03 15:30 → 2017-08-08 07:34 |
| 137 | DISH INSPECTION | 2018-01-09 16:30 A → 2017-08-10 14:30 A (-152d) | 2018-01-11 13:30 A → 2017-08-11 13:00 A (-153d) | 2d → 1.81d |  | baseline start 2018-01-09 16:30 → 2017-08-08 07:34; baseline finish 2018-01-11 13:30 → 2017-08-09 06:05 |
| 138 | DISH SURFACE GRINDING | 2018-01-11 13:30 A → 2017-08-11 13:00 A (-153d) | 2018-01-16 13:30 A → 2017-08-14 09:01 A (-155d) | 32h → 12h |  | baseline start 2018-01-11 13:30 → 2017-08-09 06:05; baseline finish 2018-01-16 13:30 → 2017-08-09 18:06 |
| 139 | SF MARKING | 2018-01-16 13:30 A → 2017-08-14 09:01 A (-155d) | 2018-01-16 17:30 A → 2017-08-14 13:01 A (-155d) |  |  | baseline start 2018-01-16 13:30 → 2017-08-09 18:06; baseline finish 2018-01-16 17:30 → 2017-08-10 06:06 |
| 140 | SF CUTTING | 2018-01-16 17:30 A → 2017-08-14 13:01 A (-155d) | 2018-01-17 06:30 A → 2017-08-14 17:02 A (-156d) | 5h → 4h |  | resources Helper; Gas Cutter → Gas Cutter; baseline start 2018-01-16 17:30 → 2017-08-10 06:06; baseline finish 2018-01-17 06:30 → 2017-08-10 10:06 |
| 141 | GRINDING | 2018-01-17 06:30 A → 2017-08-14 17:02 A (-156d) | 2018-01-17 13:30 A → 2017-08-16 07:02 A (-154d) | 7h → 6h |  | baseline start 2018-01-17 06:30 → 2017-08-10 10:06; baseline finish 2018-01-17 13:30 → 2017-08-10 16:07 |
| 142 | DISH EP | 2018-01-17 13:30 A → 2017-08-16 07:02 A (-154d) | 2018-01-17 19:30 A → 2017-08-16 12:02 A (-154d) | 6h → 5h |  | baseline start 2018-01-17 13:30 → 2017-08-10 16:07; baseline finish 2018-01-17 19:30 → 2017-08-10 21:07 |
| 145 | CUTTING | 2018-02-05 06:00 A → 2017-08-04 19:00 A (-185d) | 2018-02-07 06:40 A → 2017-08-05 07:00 A (-186d) | 4.33h → 4h | 152 → 144 | resources Helper; Gas Cutter → Gas Cutter; baseline start 2018-02-05 06:00 → 2017-08-04 09:31; baseline finish 2018-02-07 06:40 → 2017-08-04 13:31 |
| 146 | GRINDING | 2017-09-29 12:00 A → 2017-08-05 07:00 A (-55d) | 2017-09-29 19:01 A → 2017-08-05 13:00 A (-55d) | 7h → 6h | 201 → 145 | baseline start 2017-09-29 12:00 → 2017-08-04 13:31; baseline finish 2017-09-29 19:01 → 2017-08-04 19:32 |
| 149 | FLUSH GRIND | 2018-02-23 09:01 A → 2017-08-11 15:01 A (-196d) | 2018-02-23 19:01 A → 2017-08-14 09:01 A (-193d) |  | 157 → 148 | baseline start 2018-02-23 09:01 → 2017-08-10 07:51; baseline finish 2018-02-23 19:01 → 2017-08-10 17:52 |
| 150 | CLEANING | 2017-12-05 16:52 A → 2017-08-14 09:01 A (-113d) | 2017-12-06 08:52 A → 2017-08-14 14:02 A (-114d) | 8h → 5h | 237 → 149 | baseline start 2017-12-05 16:52 → 2017-08-10 17:52; baseline finish 2017-12-06 08:52 → 2017-08-11 06:52 |
| 152 | PIPE MARKING | 2018-02-06 06:00 A → 2017-08-05 11:00 A (-185d) | 2018-02-07 06:40 A → 2017-08-05 13:00 A (-186d) | 4.3h → 2h | NOZZLE NECK → 38, 133 | resources Helper; Pipe (Cost) [0.1%]; Fitter → Fitter [200%]; Helper; baseline start 2018-02-06 06:00 → 2017-08-04 17:32; baseline finish 2018-02-07 06:40 → 2017-08-04 19:32 |
| 153 | STAMPING | 2017-09-28 20:00 A → 2017-08-05 13:00 A (-54d) | 2017-09-29 07:00 A → 2017-08-05 15:01 A (-55d) | 3h → 2h | 199 → 152 | baseline start 2017-09-28 20:00 → 2017-08-04 19:32; baseline finish 2017-09-29 07:00 → 2017-08-04 21:32 |
| 154 | CUTTING | 2018-02-07 07:40 A → 2017-08-05 15:01 A (-186d) | 2018-02-07 09:40 A → 2017-08-05 17:01 A (-186d) |  | 323 → 153 | resources Helper; Gas Cutter → Gas Cutter [200%]; Helper; baseline start 2018-02-07 07:40 → 2017-08-04 21:32; baseline finish 2018-02-07 09:40 → 2017-08-05 07:32 |
| 155 | EDGE PREPARATION | 2018-02-06 06:00 A → 2017-08-05 17:01 A (-185d) | 2018-02-06 12:00 A → 2017-08-05 19:01 A (-185d) | 6h → 2h | 145 → 154 | baseline start 2018-02-06 06:00 → 2017-08-05 07:32; baseline finish 2018-02-06 12:00 → 2017-08-05 09:32 |
| 157 | WELDING | 2018-02-22 08:01 A → 2017-08-05 21:31 A (-201d) | 2018-02-23 09:01 A → 2017-08-07 08:31 A (-200d) | 17h → 3h | CH FLG AND CH FIT UP-RHS → 156 | resources Helper; SAW Welder → SAW Welder [200%]; Helper; baseline start 2018-02-22 08:01 → 2017-08-05 12:02; baseline finish 2018-02-23 09:01 → 2017-08-05 15:03 |
| 158 | FLUSH GRIND | 2018-02-27 12:01 A → 2017-08-07 08:31 A (-204d) | 2018-02-28 06:01 A → 2017-08-07 10:31 A (-205d) | 10h → 2h | 188 → 157 | resources Grinder → Grinder [200%]; baseline start 2018-02-27 12:01 → 2017-08-05 15:03; baseline finish 2018-02-28 06:01 → 2017-08-05 17:03 |
| 160 | FLUSH GRIND | 2018-03-12 14:30 A → 2017-08-07 13:31 A (-217d) | 2018-03-13 08:30 A → 2017-08-07 15:32 A (-218d) | 10h → 2h | 306 → 159 | resources Grinder → Grinder [200%]; baseline start 2018-03-12 14:30 → 2017-08-05 20:03; baseline finish 2018-03-13 08:30 → 2017-08-07 06:03 |
| 161 | DP CHECK | 2018-03-27 12:40 A → 2017-08-07 15:32 A (-232d) | 2018-03-27 15:40 A → 2017-08-07 17:32 A (-232d) | 3h → 2h | 368 → 160 | baseline start 2018-03-27 12:40 → 2017-08-07 06:03; baseline finish 2018-03-27 15:40 → 2017-08-07 08:03 |
| 162 | MACHINING | 2018-02-06 12:00 A → 2017-08-07 17:32 A (-183d) | 2018-02-08 11:30 A → 2017-08-07 21:32 A (-185d) | 2.17d → 4h | 155 → 161 | resources Lathe → Lathe Operator; baseline start 2018-02-06 12:00 → 2017-08-07 08:03; baseline finish 2018-02-08 11:30 → 2017-08-07 12:03 |
| 163 | PROFILE MARKING | 2018-02-08 11:30 A → 2017-08-07 21:32 A (-185d) | 2018-02-08 15:30 A → 2017-08-08 09:02 A (-184d) | 4h → 3.5h |  | resources Helper; Fitter → Fitter [200%]; baseline start 2018-02-08 11:30 → 2017-08-07 12:03; baseline finish 2018-02-08 15:30 → 2017-08-07 15:34 |
| 164 | PROFILE CUTTING | 2018-02-08 15:30 A → 2017-08-08 09:02 A (-184d) | 2018-02-08 20:30 A → 2017-08-08 13:02 A (-184d) | 5h → 4h |  | resources Helper; Gas Cutter → Fitter [200%]; baseline start 2018-02-08 15:30 → 2017-08-07 15:34; baseline finish 2018-02-08 20:30 → 2017-08-07 19:34 |
| 165 | PROFILE GRINDING | 2018-02-08 20:30 A → 2017-08-08 13:02 A (-184d) | 2018-02-09 10:30 A → 2017-08-08 17:03 A (-185d) | 6h → 4h |  | resources Grinder → Grinder [200%]; baseline start 2018-02-08 20:30 → 2017-08-07 19:34; baseline finish 2018-02-09 10:30 → 2017-08-08 07:34 |
| 166 | EDEGE PREPARATION | 2018-02-08 18:40 A → 2017-08-08 17:03 A (-184d) | 2018-02-08 20:40 A → 2017-08-08 20:03 A (-184d) | 2h → 3h | 196 → 165 | resources Grinder → Grinder [200%]; baseline start 2018-02-08 18:40 → 2017-08-08 07:34; baseline finish 2018-02-08 20:40 → 2017-08-08 10:34 |
| 168 | LS-PLATE MARKING | 2017-09-28 16:00 A → 2017-08-05 13:00 A (-54d) | 2017-09-28 19:30 A → 2017-08-05 20:01 A (-54d) | 1.75h → 7h | 36 → 34, 152 | resources Helper; Plate (Cost) [0.1%]; Fitter → Fitter; Helper; baseline start 2017-09-28 16:00 → 2017-08-04 19:32; baseline finish 2017-09-28 19:30 → 2017-08-05 10:32 |
| 169 | LS- STAMPING | 2017-09-28 19:30 A → 2017-08-05 20:01 A (-54d) | 2017-09-29 06:30 A → 2017-08-07 11:01 A (-53d) | 3h → 7h |  | baseline start 2017-09-28 19:30 → 2017-08-05 10:32; baseline finish 2017-09-29 06:30 → 2017-08-05 17:33 |
| 170 | LS-PL CUTTING | 2017-09-29 06:30 A → 2017-08-07 11:01 A (-53d) | 2017-09-29 08:30 A → 2017-08-07 21:02 A (-53d) | 2h → 10h |  | resources Helper; Gas Cutter → Gas Cutter; Helper; baseline start 2017-09-29 06:30 → 2017-08-05 17:33; baseline finish 2017-09-29 08:30 → 2017-08-07 11:33 |
| 171 | LS-GRINDING | 2017-09-29 10:30 A → 2017-08-07 21:02 A (-53d) | 2017-09-29 15:30 A → 2017-08-08 20:03 A (-52d) | 5h → 15h |  | baseline start 2017-09-29 10:30 → 2017-08-07 11:33; baseline finish 2017-09-29 15:30 → 2017-08-08 10:34 |
| 172 | LS-EDGE PREPARATION | 2017-09-29 15:30 A → 2017-08-08 20:03 A (-52d) | 2017-09-29 17:30 A → 2017-08-09 16:04 A (-51d) | 2h → 12h |  | baseline start 2017-09-29 15:30 → 2017-08-08 10:34; baseline finish 2017-09-29 17:30 → 2017-08-09 06:35 |
| 173 | LS-PRE BENDING | 2017-09-29 17:30 A → 2017-08-09 16:04 A (-51d) | 2017-09-29 21:30 A → 2017-08-11 09:05 A (-49d) | 4h → 25h |  | resources Helper; Fitter → Fitter; Helper; baseline start 2017-09-29 17:30 → 2017-08-09 06:35; baseline finish 2017-09-29 21:30 → 2017-08-10 15:37 |
| 174 | LS-PREBEND CUTOFF | 2017-09-30 09:30 A → 2017-08-11 09:05 A (-50d) | 2017-09-30 15:30 A → 2017-08-11 17:06 A (-50d) | 6h → 8h |  | baseline start 2017-09-30 09:30 → 2017-08-10 15:37; baseline finish 2017-09-30 15:30 → 2017-08-11 07:37 |
| 175 | LS-EDGE PREPARTION | 2017-09-30 15:30 A → 2017-08-11 17:06 A (-50d) | 2017-09-30 17:30 A → 2017-08-14 13:06 A (-47d) | 2h → 12h |  | baseline start 2017-09-30 15:30 → 2017-08-11 07:37; baseline finish 2017-09-30 17:30 → 2017-08-11 19:38 |
| 176 | LS-ROLLING | 2017-09-30 17:30 A → 2017-08-14 13:06 A (-47d) | 2017-10-03 07:30 A → 2017-08-17 06:08 A (-47d) | 6h → 25h |  | resources Helper; Fitter → Fitter; Helper; baseline start 2017-09-30 17:30 → 2017-08-11 19:38; baseline finish 2017-10-03 07:30 → 2017-08-16 12:39 |
| 177 | LS-ACID CLEANING | 2017-10-03 13:30 A → 2017-08-17 06:08 A (-47d) | 2017-10-03 21:30 A → 2017-08-17 21:09 A (-47d) | 8h → 15h |  | resources Helper [200%] → Helper; baseline start 2017-10-03 13:30 → 2017-08-16 12:39; baseline finish 2017-10-03 21:30 → 2017-08-17 11:40 |
| 178 | LS-FITUP | 2017-10-03 21:30 A → 2017-08-17 21:09 A (-47d) | 2017-10-04 09:14 A → 2017-08-19 14:11 A (-46d) | 3.75h → 25h |  | resources Helper; SAW Welder; Fitter → Fitter; Helper; SAW Welder; baseline start 2017-10-03 21:30 → 2017-08-17 11:40; baseline finish 2017-10-04 09:14 → 2017-08-18 20:42 |
| 179 | LS-SPIDERUP | 2017-10-04 17:30 A → 2017-08-19 14:11 A (-46d) | 2017-10-05 11:30 A → 2017-08-21 06:11 A (-45d) | 10h → 8h |  | baseline start 2017-10-04 17:30 → 2017-08-18 20:42; baseline finish 2017-10-05 11:30 → 2017-08-19 12:42 |
| 180 | LS-FITUP INSPECTION | 2017-10-05 11:30 A → 2017-08-21 06:11 A (-45d) | 2017-10-07 08:30 A → 2017-08-21 14:12 A (-47d) | 2d → 8h |  | baseline start 2017-10-05 11:30 → 2017-08-19 12:42; baseline finish 2017-10-07 08:30 → 2017-08-19 20:43 |
| 181 | LS-WELDING | 2017-10-07 08:30 A → 2017-08-21 14:12 A (-47d) | 2017-10-07 15:00 A → 2017-08-22 06:12 A (-46d) | 6.5h → 8h |  | resources SAW Welder; Helper → Helper; SAW Welder; baseline start 2017-10-07 08:30 → 2017-08-19 20:43; baseline finish 2017-10-07 15:00 → 2017-08-21 12:43 |
| 182 | LS-FLUSH GRIND | 2017-10-07 21:30 A → 2017-08-22 06:12 A (-46d) | 2017-10-09 11:30 A → 2017-08-22 14:13 A (-48d) | 6h → 8h |  | baseline start 2017-10-07 21:30 → 2017-08-21 12:43; baseline finish 2017-10-09 11:30 → 2017-08-21 20:44 |
| 183 | LS-REROLLING | 2017-10-09 11:30 A → 2017-08-22 14:13 A (-48d) | 2017-10-10 07:30 A → 2017-08-24 07:14 A (-47d) | 12h → 25h |  | resources Helper; Fitter → Fitter; Helper; baseline start 2017-10-09 11:30 → 2017-08-21 20:44; baseline finish 2017-10-10 07:30 → 2017-08-23 13:45 |
| 184 | LS-DPCHECK | 2017-10-10 07:30 A → 2017-08-24 07:14 A (-47d) | 2017-10-10 11:30 A → 2017-08-24 17:15 A (-47d) | 4h → 10h |  | baseline start 2017-10-10 07:30 → 2017-08-23 13:45; baseline finish 2017-10-10 11:30 → 2017-08-24 07:46 |
| 185 | LS-RADIOGRAPHY | 2017-10-10 11:30 A → 2017-08-24 17:15 A (-47d) | 2017-10-11 10:00 A → 2017-08-29 15:45 A (-43d) | 1d → 1.81d |  | baseline start 2017-10-10 11:30 → 2017-08-24 07:46; baseline finish 2017-10-11 10:00 → 2017-08-28 06:17 |
| 188 | WELDING | 2018-02-26 11:01 A → 2017-08-30 19:46 A (-180d) | 2018-02-27 12:01 A → 2017-08-31 13:46 A (-180d) | 17h → 10h | CH FLG AND CH FIT UP-LHS → 187 | resources Helper; SAW Welder → SAW Welder; Helper; baseline start 2018-02-26 11:01 → 2017-08-29 10:18; baseline finish 2018-02-27 12:01 → 2017-08-29 20:19 |
| 193 | MACHINING | 2018-02-07 11:40 A → 2017-09-02 17:49 A (-158d) | 2018-02-08 12:40 A → 2017-09-04 06:49 A (-157d) | 1d → 5h | EDGE PREPARATION → 192 | resources Lathe → Lathe Operator; baseline start 2018-02-07 11:40 → 2017-09-01 08:21; baseline finish 2018-02-08 12:40 → 2017-09-01 13:21 |
| 194 | PROFILE MARKING | 2018-02-08 12:40 A → 2017-09-04 06:49 A (-157d) | 2018-02-08 13:40 A → 2017-09-04 18:50 A (-157d) | 1h → 12h |  | resources Helper; Fitter → Fitter; Helper; baseline start 2018-02-08 12:40 → 2017-09-01 13:21; baseline finish 2018-02-08 13:40 → 2017-09-02 09:22 |
| 195 | PROFILE CUTTING | 2018-02-08 13:40 A → 2017-09-04 18:50 A (-157d) | 2018-02-08 15:40 A → 2017-09-05 17:51 A (-156d) | 2h → 15h |  | resources Helper; Gas Cutter → Gas Cutter; Helper; baseline start 2018-02-08 13:40 → 2017-09-02 09:22; baseline finish 2018-02-08 15:40 → 2017-09-04 08:23 |
| 196 | PROFILE GRINDING | 2018-02-08 15:40 A → 2017-09-05 17:51 A (-156d) | 2018-02-08 18:40 A → 2017-09-06 16:52 A (-155d) | 3h → 15h |  | resources Grinder → Grinder; Helper; baseline start 2018-02-08 15:40 → 2017-09-04 08:23; baseline finish 2018-02-08 18:40 → 2017-09-05 07:24 |
| 198 | **TUBESHEET FABRICATION** | 2017-09-28 16:00 A → 2017-08-04 16:00 A (-55d) | 2017-11-04 13:27 A → 2017-08-17 09:38 A (-79d) | 30.72d → 8.33d |  | baseline start 2017-09-28 16:00 → 2017-08-04 06:31; baseline finish 2017-11-04 13:27 → 2017-08-16 16:10 |
| 199 | PLATE MARKING | 2017-09-28 16:00 A → 2017-08-04 16:00 A (-55d) | 2017-09-28 20:00 A → 2017-08-04 19:00 A (-55d) | 2h → 3h |  | resources Helper; Tube Sheet (Cost) [0.1%]; Fitter → Fitter; Helper; baseline start 2017-09-28 16:00 → 2017-08-04 06:31; baseline finish 2017-09-28 20:00 → 2017-08-04 09:31 |
| 201 | PLASMA ARC CUTTING | 2017-09-29 07:00 A → 2017-08-05 06:00 A (-55d) | 2017-09-29 12:00 A → 2017-08-05 15:01 A (-55d) | 5h → 9h | 153 → 200 | resources Helper; Gas Cutter → Gas Cutter; Helper; baseline start 2017-09-29 07:00 → 2017-08-04 12:31; baseline finish 2017-09-29 12:00 → 2017-08-04 21:32 |
| 202 | GRINDING | 2017-10-03 07:02 A → 2017-08-05 15:01 A (-59d) | 2017-10-05 10:04 A → 2017-08-07 09:01 A (-59d) | 35h → 10h | 213 → 201 | resources Helper; Grinder → Grinder; baseline start 2017-10-03 07:02 → 2017-08-04 21:32; baseline finish 2017-10-05 10:04 → 2017-08-05 15:33 |
| 203 | INSPECTION | 2017-09-29 19:01 A → 2017-08-07 09:01 A (-53d) | 2017-10-03 16:03 A → 2017-08-07 16:17 A (-57d) | 2d → 0.91d | 146 → 202 | baseline start 2017-09-29 19:01 → 2017-08-05 15:33; baseline finish 2017-10-03 16:03 → 2017-08-07 06:48 |
| 204 | MACHINING | 2017-10-03 16:03 A → 2017-08-07 16:17 A (-57d) | 2017-10-05 13:04 A → 2017-08-08 07:17 A (-58d) | 2d → 7h |  | resources Lathe → Lathe Operator; baseline start 2017-10-03 16:03 → 2017-08-07 06:48; baseline finish 2017-10-05 13:04 → 2017-08-07 13:48 |
| 205 | HOLES MARKING | 2017-10-05 13:04 A → 2017-08-08 07:17 A (-58d) | 2017-10-13 11:11 A → 2017-08-09 11:18 A (-65d) | 110h → 20h |  | baseline start 2017-10-05 13:04 → 2017-08-07 13:48; baseline finish 2017-10-13 11:11 → 2017-08-08 17:50 |
| 206 | DRILLING | 2017-10-13 11:11 A → 2017-08-09 11:18 A (-65d) | 2017-11-02 07:25 A → 2017-08-11 15:21 A (-83d) | 220h → 36h |  | baseline start 2017-10-13 11:11 → 2017-08-08 17:50; baseline finish 2017-11-02 07:25 → 2017-08-10 21:52 |
| 207 | EXPANSION GROOVING | 2017-11-02 07:25 A → 2017-08-11 15:21 A (-83d) | 2017-11-02 07:25 A → 2017-08-16 08:22 A (-78d) | 0h → 25h |  | resources Helper; Fitter [200%] → Fitter [200%]; Helper; baseline start 2017-11-02 07:25 → 2017-08-10 21:52; baseline finish 2017-11-02 07:25 → 2017-08-14 14:54 |
| 208 | TIE ROD HOLE MARKING | 2017-11-02 07:25 A → 2017-08-16 08:22 A (-78d) | 2017-11-02 10:25 A → 2017-08-16 13:22 A (-78d) | 3h → 5h |  | resources Helper; Rod (Cost) [0.1%]; Fitter → Fitter; Helper; baseline start 2017-11-02 07:25 → 2017-08-14 14:54; baseline finish 2017-11-02 10:25 → 2017-08-14 19:54 |
| 209 | TIE ROD HOLE DRILLING | 2017-11-02 10:25 A → 2017-08-16 13:22 A (-78d) | 2017-11-02 16:26 A → 2017-08-16 18:23 A (-78d) | 6h → 5h |  | baseline start 2017-11-02 10:25 → 2017-08-14 19:54; baseline finish 2017-11-02 16:26 → 2017-08-16 08:54 |
| 210 | FINAL INSPECTION | 2018-01-17 19:30 A → 2017-08-16 18:23 A (-154d) | 2018-02-12 21:30 A → 2017-08-17 09:38 A (-179d) | 21.1d → 0.91d | 142 → 209 | constraint finish no later than 2018-02-12 21:30 → none; resources Fitter [200%] → Fitter; baseline start 2018-01-17 19:30 → 2017-08-16 08:54; baseline finish 2018-02-12 21:30 → 2017-08-16 16:10 |
| 212 | PLATE MARKING | 2017-09-28 16:00 A → 2017-08-04 19:00 A (-55d) | 2017-09-29 18:01 A → 2017-08-05 07:00 A (-55d) | 18h → 4h | 45 → 44, 199 | resources Helper; Plate (Cost) [0.1%]; Fitter → Fitter; Helper; baseline start 2017-09-28 16:00 → 2017-08-04 09:31; baseline finish 2017-09-29 18:01 → 2017-08-04 13:31 |
| 213 | CUTTING | 2017-09-29 18:01 A → 2017-08-05 07:00 A (-55d) | 2017-10-03 07:02 A → 2017-08-05 10:00 A (-59d) | 21h → 3h |  | resources Helper; Gas Cutter → Gas Cutter; Helper; baseline start 2017-09-29 18:01 → 2017-08-04 13:31; baseline finish 2017-10-03 07:02 → 2017-08-04 16:32 |
| 214 | GRINDING | 2018-03-12 06:00 A → 2017-08-05 10:00 A (-219d) | 2018-03-12 21:00 A → 2017-08-05 13:00 A (-219d) | 15h → 3h | none → 213 | constraint start no earlier than 2018-03-12 06:00 → none; resources Grinder → Grinder; Helper; baseline start 2018-03-12 06:00 → 2017-08-04 16:32; baseline finish 2018-03-12 21:00 → 2017-08-04 19:32 |
| 215 | AXIS LINE MARKING | 2017-10-05 10:04 A → 2017-08-05 13:00 A (-61d) | 2017-10-06 09:05 A → 2017-08-05 15:01 A (-62d) | 15h → 2h | 202 → 214 | baseline start 2017-10-05 10:04 → 2017-08-04 19:32; baseline finish 2017-10-06 09:05 → 2017-08-04 21:32 |
| 216 | DRILLING | 2017-10-07 09:06 A → 2017-08-05 15:01 A (-63d) | 2017-10-25 11:19 A → 2017-08-10 11:04 A (-76d) | 210h → 60h | 227 → 215 | resources Driller [200%] → Driller; baseline start 2017-10-07 09:06 → 2017-08-04 21:32; baseline finish 2017-10-25 11:19 → 2017-08-09 17:36 |
| 217 | DRILLING INSPECTION | 2017-10-25 11:19 A → 2017-08-10 11:04 A (-76d) | 2017-10-27 08:21 A → 2017-08-10 21:05 A (-78d) | 2d → 10h |  | baseline start 2017-10-25 11:19 → 2017-08-09 17:36; baseline finish 2017-10-27 08:21 → 2017-08-10 11:36 |
| 218 | OD MACHINING | 2017-10-27 08:21 A → 2017-08-10 21:05 A (-78d) | 2017-11-13 16:34 A → 2017-08-14 11:06 A (-91d) | 200h → 22h |  | resources Lathe [200%] → Lathe Operator; baseline start 2017-10-27 08:21 → 2017-08-10 11:36; baseline finish 2017-11-13 16:34 → 2017-08-11 17:38 |
| 219 | GRINDING | 2018-03-30 13:45 A → 2017-08-14 11:06 A (-228d) | 2018-03-30 17:45 A → 2017-08-16 10:07 A (-226d) | 4h → 15h | 224 → 218 | baseline start 2018-03-30 13:45 → 2017-08-11 17:38; baseline finish 2018-03-30 17:45 → 2017-08-14 16:39 |
| 220 | HOLE CHAMFERING | 2017-11-16 14:37 A → 2017-08-16 10:07 A (-92d) | 2017-12-02 06:49 A → 2017-08-17 14:09 A (-107d) | 200h → 20h | 232 → 219 | resources Driller [200%] → Fitter [200%]; Helper; baseline start 2017-11-16 14:37 → 2017-08-14 16:39; baseline finish 2017-12-02 06:49 → 2017-08-16 20:40 |
| 221 | CLEANING | 2017-10-03 10:00 A → 2017-08-17 14:09 A (-47d) | 2017-10-03 15:00 A → 2017-08-17 18:09 A (-47d) | 5h → 4h | 255 → 220 | resources Fitter → Helper; baseline start 2017-10-03 10:00 → 2017-08-16 20:40; baseline finish 2017-10-03 15:00 → 2017-08-17 08:40 |
| 222 | **BAFFLE PLATE PREPARATION** | 2017-09-28 16:00 A → 2017-08-05 07:00 A (-54d) | 2017-12-06 08:52 A → 2017-11-22 15:23 A (-14d) | 57.99d → 81.74d |  | baseline start 2017-09-28 16:00 → 2017-08-04 13:31; baseline finish 2017-12-06 08:52 → 2017-11-21 21:54 |

| ID | Task | Start | Finish | Duration | Predecessors | Other |
| --- | --- | --- | --- | --- | --- | --- |
| 223 | PLATE MARKING | 2018-01-23 13:00 A → 2017-08-05 07:00 A (-171d) | 2018-01-23 16:00 A → 2017-08-08 15:03 A (-168d) | 2.5h → 40h | 46, 338 → 212 | resources Helper; Plate (Cost) [0.1%]; Fitter → Fitter; Helper; baseline start 2018-01-23 13:00 → 2017-08-04 13:31; baseline finish 2018-01-23 16:00 → 2017-08-07 21:34 |
| 224 | CUTTING | 2018-03-30 12:15 A → 2017-08-08 15:03 A (-234d) | 2018-03-30 13:45 A → 2017-08-10 08:04 A (-232d) | 1.5h → 25h | 338 → 223 | resources Helper; Gas Cutter → Gas Cutter; Helper; baseline start 2018-03-30 12:15 → 2017-08-07 21:34; baseline finish 2018-03-30 13:45 → 2017-08-09 14:36 |
| 225 | GRINDING | 2018-01-23 20:00 A → 2017-08-10 08:04 A (-166d) | 2018-01-24 12:00 A → 2017-08-14 06:06 A (-163d) | 8h → 30h | 339 → 224 | resources Grinder → Grinder; Helper; baseline start 2018-01-23 20:00 → 2017-08-09 14:36; baseline finish 2018-01-24 12:00 → 2017-08-11 12:37 |
| 227 | STACKKING | 2017-10-06 09:05 A → 2017-08-14 16:07 A (-53d) | 2017-10-07 09:06 A → 2017-08-16 08:07 A (-52d) | 16h → 8h | 215 → 226 | baseline start 2017-10-06 09:05 → 2017-08-14 06:38; baseline finish 2017-10-07 09:06 → 2017-08-14 14:39 |
| 228 | DRILLING | 2018-01-30 11:00 A → 2017-08-16 08:07 A (-167d) | 2018-01-30 21:00 A → 2017-09-22 14:37 A (-130d) | 10h → 470h | 331 → 227 | baseline start 2018-01-30 11:00 → 2017-08-14 14:39; baseline finish 2018-01-30 21:00 → 2017-09-21 21:08 |
| 231 | DE-STACKING | 2017-11-13 16:34 A → 2017-10-16 07:53 A (-28d) | 2017-11-14 16:35 A → 2017-10-16 15:54 A (-29d) | 16h → 8h | 218 → 230 | baseline start 2017-11-13 16:34 → 2017-10-13 14:25; baseline finish 2017-11-14 16:35 → 2017-10-16 06:25 |
| 232 | GRIND THE STACKS | 2017-11-14 16:35 A → 2017-10-16 15:54 A (-29d) | 2017-11-16 14:37 A → 2017-10-17 15:55 A (-30d) | 30h → 16h |  | baseline start 2017-11-14 16:35 → 2017-10-16 06:25; baseline finish 2017-11-16 14:37 → 2017-10-17 06:26 |
| 234 | NUMERING | 2017-12-02 06:49 A → 2017-11-06 16:10 A (-26d) | 2017-12-02 19:50 A → 2017-11-07 08:10 A (-25d) | 13h → 8h | 220 → 233 | resources Helper; Fitter → Fitter; Helper; baseline start 2017-12-02 06:49 → 2017-11-06 06:41; baseline finish 2017-12-02 19:50 → 2017-11-06 14:42 |
| 236 | HOLE MATCHING | 2017-12-02 19:50 A → 2017-11-07 20:11 A (-25d) | 2017-12-04 18:21 A → 2017-11-20 10:20 A (-14d) | 1d → 150h | 234 → 235 | resources Fitter [200%] → Fitter; baseline start 2017-12-02 19:50 → 2017-11-07 10:42; baseline finish 2017-12-04 18:21 → 2017-11-18 16:52 |
| 237 | HOLES DRILLING IF REQD | 2017-12-04 18:21 A → 2017-11-20 10:20 A (-14d) | 2017-12-05 16:52 A → 2017-11-21 19:22 A (-14d) | 1d → 25h |  | baseline start 2017-12-04 18:21 → 2017-11-18 16:52; baseline finish 2017-12-05 16:52 → 2017-11-21 09:53 |
| 238 | CLEANING | 2017-10-07 07:00 A → 2017-11-21 19:22 A (+45d) | 2017-10-07 19:00 A → 2017-11-22 15:23 A (+46d) |  | 260 → 237 | resources Fitter → Helper; baseline start 2017-10-07 07:00 → 2017-11-21 09:53; baseline finish 2017-10-07 19:00 → 2017-11-21 21:54 |
| 251 | **TIE ROD PREPARATION** | 2017-09-28 07:00 A → 2017-08-09 09:03 A (-50d) | 2017-10-03 15:00 A → 2017-08-11 07:35 A (-53d) | 3.86d → 1.93d |  | baseline start 2017-09-28 07:00 → 2017-08-08 15:35; baseline finish 2017-10-03 15:00 → 2017-08-10 14:07 |
| 252 | TIE ROD MARKING | 2017-09-28 07:00 A → 2017-08-09 09:03 A (-50d) | 2017-09-28 10:00 A → 2017-08-09 12:33 A (-50d) | 2.25h → 3.5h | 52 → 52, 246 | resources Helper; Rod (Cost) [0.1%]; Fitter → Fitter; Helper; baseline start 2017-09-28 07:00 → 2017-08-08 15:35; baseline finish 2017-09-28 10:00 → 2017-08-08 19:05 |
| 253 | TIE ROD CUTTING | 2017-09-28 10:00 A → 2017-08-09 12:33 A (-50d) | 2017-09-28 12:00 A → 2017-08-09 17:34 A (-50d) | 2h → 5h |  | resources Helper; Gas Cutter → Gas Cutter; Helper; baseline start 2017-09-28 10:00 → 2017-08-08 19:05; baseline finish 2017-09-28 12:00 → 2017-08-09 08:05 |
| 254 | LENGTH JOINT WELDING IF REQD | 2017-09-28 14:00 A → 2017-08-09 17:34 A (-50d) | 2017-09-28 21:30 A → 2017-08-10 07:34 A (-49d) | 7.5h → 6h |  | resources Helper; SAW Welder → SAW Welder; Helper; baseline start 2017-09-28 14:00 → 2017-08-09 08:05; baseline finish 2017-09-28 21:30 → 2017-08-09 14:06 |
| 255 | THREAD MC | 2017-09-29 13:00 A → 2017-08-10 07:34 A (-50d) | 2017-10-03 10:00 A → 2017-08-10 17:35 A (-54d) | 2d → 10h |  | resources Lathe → Lathe Operator; baseline start 2017-09-29 13:00 → 2017-08-09 14:06; baseline finish 2017-10-03 10:00 → 2017-08-10 08:06 |
| 256 | CLEANING | 2018-03-30 19:45 A → 2017-08-10 17:35 A (-232d) | 2018-03-30 21:45 A → 2017-08-11 07:35 A (-231d) | 2h → 6h | 348 → 255 | resources Helper → Fitter; baseline start 2018-03-30 19:45 → 2017-08-10 08:06; baseline finish 2018-03-30 21:45 → 2017-08-10 14:07 |
| 257 | **SPACER TUBE PREPARATION** | 2017-09-28 10:00 A → 2017-08-09 12:33 A (-50d) | 2017-10-07 19:00 A → 2017-08-19 14:41 A (-49d) | 8.34d → 7.15d |  | baseline start 2017-09-28 10:00 → 2017-08-08 19:05; baseline finish 2017-10-07 19:00 → 2017-08-18 21:12 |
| 258 | TUBE MARKING | 2017-09-28 10:00 A → 2017-08-09 12:33 A (-50d) | 2017-09-29 19:00 A → 2017-08-10 11:34 A (-50d) | 8.75h → 15h |  | resources Helper [200%]; Tube (Cost) [0.1%]; Fitter [200%] → Fitter; Helper; baseline start 2017-09-28 10:00 → 2017-08-08 19:05; baseline finish 2017-09-29 19:00 → 2017-08-09 18:06 |
| 259 | TUBE CUTTING | 2017-09-29 19:00 A → 2017-08-10 11:34 A (-50d) | 2017-10-03 13:00 A → 2017-08-11 17:36 A (-53d) | 26h → 22h |  | resources Helper [200%]; Gas Cutter [200%] → Gas Cutter; Helper; baseline start 2017-09-29 19:00 → 2017-08-09 18:06; baseline finish 2017-10-03 13:00 → 2017-08-11 08:07 |
| 260 | TUBE M/C | 2017-10-03 13:00 A → 2017-08-11 17:36 A (-53d) | 2017-10-07 07:00 A → 2017-08-17 16:39 A (-51d) | 4d → 47h |  | resources Lathe → Lathe Operator; baseline start 2017-10-03 13:00 → 2017-08-11 08:07; baseline finish 2017-10-07 07:00 → 2017-08-17 07:10 |
| 261 | CLEANING | 2018-01-29 15:00 A → 2017-08-17 16:39 A (-165d) | 2018-01-29 19:00 A → 2017-08-19 14:41 A (-163d) | 4h → 30h | 354 → 260 | resources Helper → Fitter; baseline start 2018-01-29 15:00 → 2017-08-17 07:10; baseline finish 2018-01-29 19:00 → 2017-08-18 21:12 |
| 262 | **CS1-FITUP & WELDING** | 2018-01-29 06:00 A → 2017-08-14 09:49 A (-168d) | 2018-02-03 17:30 A → 2017-08-23 17:25 A (-164d) | 6.31d → 7.83d |  | baseline start 2018-01-29 06:00 → 2017-08-10 16:22; baseline finish 2018-02-03 17:30 → 2017-08-21 14:59 |
| 264 | SHELL EP CORRECTION | 2018-01-29 06:00 A → 2017-08-14 12:49 A (-168d) | 2018-01-29 07:56 A → 2017-08-14 20:50 A (-168d) | 1.94h → 8h | SHELL LS2+LS3 READY → 263 | resources Helper; Grinder [200%] → Grinder [200%]; Helper; baseline start 2018-01-29 06:00 → 2017-08-10 19:22; baseline finish 2018-01-29 07:56 → 2017-08-11 11:22 |
| 265 | CS1-FITUP | 2018-01-30 06:00 A → 2017-08-14 20:50 A (-169d) | 2018-01-30 09:20 A → 2017-08-16 08:50 A (-167d) | 3.33h → 4h |  | resources Helper; Fitter [200%] → Fitter [200%]; Helper; baseline start 2018-01-30 06:00 → 2017-08-11 11:22; baseline finish 2018-01-30 09:20 → 2017-08-11 15:23 |
| 266 | CS1-FITUP INSPECTION | 2018-01-30 13:00 A → 2017-08-16 08:50 A (-167d) | 2018-01-31 08:21 A → 2017-08-16 11:50 A (-168d) | 0.78d → 3h |  | resources Helper; Fitter → Fitter; Helper; baseline start 2018-01-30 13:00 → 2017-08-11 15:23; baseline finish 2018-01-31 08:21 → 2017-08-11 18:23 |
| 267 | CS1-WELDING | 2018-02-01 06:00 A → 2017-08-16 11:50 A (-169d) | 2018-02-01 12:40 A → 2017-08-17 21:52 A (-168d) | 6.67h → 26h |  | resources Helper; SAW Welder [200%] → SAW Welder [200%]; Helper; baseline start 2018-02-01 06:00 → 2017-08-11 18:23; baseline finish 2018-02-01 12:40 → 2017-08-16 12:24 |
| 268 | CS1-FLUSHGRIND | 2018-02-01 21:01 A → 2017-08-17 21:52 A (-168d) | 2018-02-02 15:01 A → 2017-08-18 15:53 A (-168d) |  |  | baseline start 2018-02-01 21:01 → 2017-08-16 12:24; baseline finish 2018-02-02 15:01 → 2017-08-17 06:25 |
| 269 | CS1-DPCHECK | 2018-02-02 10:00 A → 2017-08-18 15:53 A (-168d) | 2018-02-02 14:00 A → 2017-08-18 18:53 A (-168d) | 4h → 3h |  | baseline start 2018-02-02 10:00 → 2017-08-17 06:25; baseline finish 2018-02-02 14:00 → 2017-08-17 09:25 |
| 270 | CS1-INSIDE WELDING | 2018-02-02 14:00 A → 2017-08-18 18:53 A (-168d) | 2018-02-02 17:00 A → 2017-08-21 12:54 A (-165d) | 3.01h → 26h |  | resources Helper; SAW Welder [200%] → SAW Welder [200%]; Helper; baseline start 2018-02-02 14:00 → 2017-08-17 09:25; baseline finish 2018-02-02 17:00 → 2017-08-18 19:27 |
| 271 | CS1-DRESSUP | 2018-02-03 13:00 A → 2017-08-21 12:54 A (-166d) | 2018-02-03 17:30 A → 2017-08-22 06:55 A (-165d) | 4.5h → 10h |  | resources Helper; Grinder [200%] → Grinder [200%]; Helper; baseline start 2018-02-03 13:00 → 2017-08-18 19:27; baseline finish 2018-02-03 17:30 → 2017-08-19 13:27 |
| 272 | CS1-DPCHECK | 2018-02-03 06:00 A → 2017-08-22 06:55 A (-165d) | 2018-02-03 10:00 A → 2017-08-22 09:55 A (-165d) | 4h → 3h |  | baseline start 2018-02-03 06:00 → 2017-08-19 13:27; baseline finish 2018-02-03 10:00 → 2017-08-19 16:28 |
| 274 | **CS2-FITUP & WELDING** | 2018-02-05 06:00 A → 2017-08-23 17:25 A (-166d) | 2018-02-13 17:01 A → 2017-09-04 16:00 A (-162d) | 7.38d → 7.82d |  | baseline start 2018-02-05 06:00 → 2017-08-21 14:59; baseline finish 2018-02-13 17:01 → 2017-08-31 13:35 |
| 276 | SHELL EP CORRECTION | 2018-02-05 14:01 A → 2017-08-23 20:25 A (-166d) | 2018-02-05 17:01 A → 2017-08-24 12:25 A (-165d) | 3h → 8h | SHELL CS1+LS3 → 275 | resources Helper; Grinder [200%] → Grinder [200%]; Helper; baseline start 2018-02-05 14:01 → 2017-08-21 17:59; baseline finish 2018-02-05 17:01 → 2017-08-22 09:59 |
| 277 | CS2-FITUP | 2018-02-05 17:01 A → 2017-08-24 12:25 A (-165d) | 2018-02-05 20:37 A → 2017-08-24 16:26 A (-165d) | 3.61h → 4h |  | resources Helper; Fitter [200%] → Fitter [200%]; Helper; baseline start 2018-02-05 17:01 → 2017-08-22 09:59; baseline finish 2018-02-05 20:37 → 2017-08-22 13:59 |
| 278 | CS2-FITUP INSPECTION | 2018-02-05 06:00 A → 2017-08-24 16:26 A (-165d) | 2018-02-05 20:37 A → 2017-08-24 19:26 A (-165d) | 0.83d → 3h |  | resources Helper; Fitter → Fitter; Helper; baseline start 2018-02-05 06:00 → 2017-08-22 13:59; baseline finish 2018-02-05 20:37 → 2017-08-22 17:00 |
| 279 | CS2-WELDING | 2018-02-07 09:00 A → 2017-08-24 19:26 A (-167d) | 2018-02-07 19:08 A → 2017-08-29 13:27 A (-162d) | 10.13h → 26h |  | resources Helper; SAW Welder [200%] → SAW Welder [200%]; Helper; baseline start 2018-02-07 09:00 → 2017-08-22 17:00; baseline finish 2018-02-07 19:08 → 2017-08-24 11:01 |
| 280 | CS2-FLUSHGRIND | 2018-02-09 11:00 A → 2017-08-29 13:27 A (-164d) | 2018-02-09 21:01 A → 2017-08-30 07:28 A (-163d) |  |  | baseline start 2018-02-09 11:00 → 2017-08-24 11:01; baseline finish 2018-02-09 21:01 → 2017-08-24 21:02 |
| 281 | CS2-DPCHECK | 2018-02-09 21:01 A → 2017-08-30 07:28 A (-163d) | 2018-02-12 09:01 A → 2017-08-30 10:28 A (-166d) | 4h → 3h |  | baseline start 2018-02-09 21:01 → 2017-08-24 21:02; baseline finish 2018-02-12 09:01 → 2017-08-28 08:02 |
| 282 | CS2-INSIDE WELDING | 2018-02-10 08:00 A → 2017-08-30 10:28 A (-164d) | 2018-02-12 11:20 A → 2017-08-31 20:30 A (-165d) | 13.34h → 26h |  | resources Helper; SAW Welder [200%] → SAW Welder [200%]; Helper; baseline start 2018-02-10 08:00 → 2017-08-28 08:02; baseline finish 2018-02-12 11:20 → 2017-08-29 18:04 |
| 283 | CS2-DRESSUP | 2018-02-10 08:00 A → 2017-08-31 20:30 A (-163d) | 2018-02-12 11:20 A → 2017-09-01 14:31 A (-164d) | 10.6h → 10h |  | resources Helper; Grinder [200%] → Grinder [200%]; Helper; baseline start 2018-02-10 08:00 → 2017-08-29 18:04; baseline finish 2018-02-12 11:20 → 2017-08-30 12:04 |
| 284 | CS2-DPCHECK | 2018-02-13 13:00 A → 2017-09-01 14:31 A (-165d) | 2018-02-13 17:01 A → 2017-09-01 17:31 A (-165d) | 4h → 3h |  | baseline start 2018-02-13 13:00 → 2017-08-30 12:04; baseline finish 2018-02-13 17:01 → 2017-08-30 15:05 |
| 286 | **CS3-FITUP & WELDING** | 2018-02-14 06:00 A → 2017-08-16 12:02 A (-182d) | 2018-02-19 21:01 A → 2017-08-28 10:38 A (-175d) | 5.45d → 7.83d |  | baseline start 2018-02-14 06:00 → 2017-08-10 21:07; baseline finish 2018-02-19 21:01 → 2017-08-21 19:44 |
| 288 | SHELL EP CORRECTION | 2018-02-14 06:00 A → 2017-08-16 15:03 A (-182d) | 2018-02-14 08:08 A → 2017-08-17 07:03 A (-181d) | 2.15h → 8h | CH(RHS)+CH DISH(RHS) READY → 287 | resources Helper; Grinder [200%] → Grinder [200%]; Helper; baseline start 2018-02-14 06:00 → 2017-08-11 08:07; baseline finish 2018-02-14 08:08 → 2017-08-11 16:08 |
| 289 | CS3-FITUP | 2018-02-14 06:00 A → 2017-08-17 07:03 A (-181d) | 2018-02-14 11:00 A → 2017-08-17 11:03 A (-181d) | 5h → 4h |  | resources Helper; Fitter [200%] → Fitter [200%]; Helper; baseline start 2018-02-14 06:00 → 2017-08-11 16:08; baseline finish 2018-02-14 11:00 → 2017-08-11 20:08 |
| 290 | CS3-FITUP INSPECTION | 2018-02-16 09:30 A → 2017-08-17 11:03 A (-183d) | 2018-02-16 16:59 A → 2017-08-17 14:04 A (-183d) | 0.52d → 3h |  | resources Helper; Fitter → Fitter; Helper; baseline start 2018-02-16 09:30 → 2017-08-11 20:08; baseline finish 2018-02-16 16:59 → 2017-08-14 07:08 |
| 291 | CS3-WELDING | 2018-02-17 13:00 A → 2017-08-17 14:04 A (-184d) | 2018-02-19 12:01 A → 2017-08-19 08:05 A (-184d) | 15h → 26h |  | resources Helper; SAW Welder [200%] → SAW Welder [200%]; Helper; baseline start 2018-02-17 13:00 → 2017-08-14 07:08; baseline finish 2018-02-19 12:01 → 2017-08-16 17:10 |
| 292 | CS3-FLUSHGRIND | 2018-02-17 06:00 A → 2017-08-19 08:05 A (-182d) | 2018-02-17 16:01 A → 2017-08-19 18:06 A (-182d) |  |  | baseline start 2018-02-17 06:00 → 2017-08-16 17:10; baseline finish 2018-02-17 16:01 → 2017-08-17 11:10 |
| 293 | CS3-DPCHECK | 2018-02-17 06:00 A → 2017-08-19 18:06 A (-182d) | 2018-02-17 10:00 A → 2017-08-19 21:06 A (-182d) | 4h → 3h |  | baseline start 2018-02-17 06:00 → 2017-08-17 11:10; baseline finish 2018-02-17 10:00 → 2017-08-17 14:11 |
| 294 | CS3-INSIDE WELDING | 2018-02-19 06:00 A → 2017-08-19 21:06 A (-184d) | 2018-02-19 21:01 A → 2017-08-22 15:08 A (-181d) | 15h → 26h |  | resources Helper; SAW Welder [200%] → SAW Welder [200%]; Helper; baseline start 2018-02-19 06:00 → 2017-08-17 14:11; baseline finish 2018-02-19 21:01 → 2017-08-19 08:12 |
| 295 | CS3-DRESSUP | 2018-02-19 06:00 A → 2017-08-22 15:08 A (-181d) | 2018-02-19 16:01 A → 2017-08-23 09:08 A (-180d) |  |  | resources Helper; Grinder [200%] → Grinder [200%]; Helper; baseline start 2018-02-19 06:00 → 2017-08-19 08:12; baseline finish 2018-02-19 16:01 → 2017-08-19 18:13 |
| 296 | CS3-DPCHECK | 2018-02-19 06:00 A → 2017-08-23 09:08 A (-180d) | 2018-02-19 10:00 A → 2017-08-23 12:08 A (-180d) | 4h → 3h |  | baseline start 2018-02-19 06:00 → 2017-08-19 18:13; baseline finish 2018-02-19 10:00 → 2017-08-19 21:13 |
| 298 | **NOZZLE WITH RF PAD WELDING** | 2018-03-01 06:00 A → 2017-08-08 20:03 A (-205d) | 2018-03-14 15:00 A → 2017-08-11 06:20 A (-215d) | 11.66d → 2d |  | baseline start 2018-03-01 06:00 → 2017-08-08 10:34; baseline finish 2018-03-14 15:00 → 2017-08-10 12:51 |
| 299 | NOZZLE READY | 2018-03-01 06:00 A → 2017-08-08 20:03 A (-205d) | 2018-03-02 21:30 A → 2017-08-09 06:03 A (-205d) | 31.5h → 2h | NOZZLE FABRICATION(PIPE), NOZZLE FABRICATION(PIPE) → 151 | constraint finish no earlier than 2018-03-03 21:30 → none; baseline start 2018-03-01 06:00 → 2017-08-08 10:34; baseline finish 2018-03-02 21:30 → 2017-08-08 12:34 |
| 300 | ORIENTATION MARKING | 2018-03-02 06:00 A → 2017-08-09 06:03 A (-205d) | 2018-03-02 06:00 A → 2017-08-09 08:03 A (-205d) | 0h → 2h |  | resources Helper; Fitter → Fitter [200%]; baseline start 2018-03-02 06:00 → 2017-08-08 12:34; baseline finish 2018-03-02 06:00 → 2017-08-08 14:35 |
| 301 | NOZZLE OPENING | 2018-03-05 06:00 A → 2017-08-09 08:03 A (-208d) | 2018-03-05 06:00 A → 2017-08-09 10:33 A (-208d) | 0h → 2.5h | POSITION MARKING → 300 | resources Helper; Gas Cutter → Gas Cutter [200%]; baseline start 2018-03-05 06:00 → 2017-08-08 14:35; baseline finish 2018-03-05 06:00 → 2017-08-08 17:05 |
| 302 | NOZZLE EP | 2018-03-06 06:00 A → 2017-08-09 10:33 A (-209d) | 2018-03-06 06:00 A → 2017-08-09 12:33 A (-209d) | 0h → 2h |  | resources Grinder → Grinder [200%]; baseline start 2018-03-06 06:00 → 2017-08-08 17:05; baseline finish 2018-03-06 06:00 → 2017-08-08 19:05 |
| 303 | NOZZLE FIT UP | 2018-03-06 06:00 A → 2017-08-09 12:33 A (-209d) | 2018-03-06 18:00 A → 2017-08-09 15:34 A (-209d) | 8h → 3h |  | resources SAW Welder; Helper [200%]; Pipe (Cost) [0.1%]; Fitter → Fitter [200%]; baseline start 2018-03-06 06:00 → 2017-08-08 19:05; baseline finish 2018-03-06 18:00 → 2017-08-09 06:05 |
| 304 | NOZZLE WELDING | 2018-03-06 18:00 A → 2017-08-09 15:34 A (-209d) | 2018-03-07 07:18 A → 2017-08-09 18:04 A (-210d) | 5.31h → 2.5h |  | resources Helper [200%]; SAW Welder → SAW Welder [200%]; baseline start 2018-03-06 18:00 → 2017-08-09 06:05; baseline finish 2018-03-07 07:18 → 2017-08-09 08:35 |
| 306 | RF PAD WELDING | 2018-03-09 18:30 A → 2017-08-09 21:04 A (-212d) | 2018-03-12 11:30 A → 2017-08-10 08:04 A (-214d) | 9h → 3h | RF PAD FITUP → 305 | resources Helper [200%]; SAW Welder → SAW Welder [200%]; baseline start 2018-03-09 18:30 → 2017-08-09 11:35; baseline finish 2018-03-12 11:30 → 2017-08-09 14:36 |
| 309 | DP/AIR TEST | 2018-03-13 08:30 A → 2017-08-10 13:04 A (-215d) | 2018-03-13 16:30 A → 2017-08-10 15:05 A (-215d) | 8h → 2h | 160 → 308 | baseline start 2018-03-13 08:30 → 2017-08-09 19:36; baseline finish 2018-03-13 16:30 → 2017-08-09 21:36 |
| 310 | INSPECTION | 2018-02-23 19:01 A → 2017-08-10 15:05 A (-197d) | 2018-02-27 16:01 A → 2017-08-11 06:20 A (-200d) | 2d → 0.91d | 149 → 309 | baseline start 2018-02-23 19:01 → 2017-08-09 21:36; baseline finish 2018-02-27 16:01 → 2017-08-10 12:51 |
| 312 | NOZZLE READY | 2018-03-03 21:30 A → 2017-08-08 20:03 A (-207d) | 2018-03-05 10:30 A → 2017-08-09 09:03 A (-208d) |  | 299 → 151 | baseline start 2018-03-03 21:30 → 2017-08-08 10:34; baseline finish 2018-03-05 10:30 → 2017-08-08 15:35 |
| 314 | NOZZLE OPENING | 2018-03-05 15:30 A → 2017-08-09 19:04 A (-208d) | 2018-03-06 07:30 A → 2017-08-10 15:05 A (-208d) | 8h → 12h | POSITION MARKING → 313 | resources Helper; Gas Cutter → Gas Cutter; baseline start 2018-03-05 15:30 → 2017-08-09 09:35; baseline finish 2018-03-06 07:30 → 2017-08-09 21:36 |
| 315 | NOZZLE EP | 2018-03-06 07:30 A → 2017-08-10 15:05 A (-208d) | 2018-03-06 14:30 A → 2017-08-11 07:05 A (-207d) | 7h → 8h |  | baseline start 2018-03-06 07:30 → 2017-08-09 21:36; baseline finish 2018-03-06 14:30 → 2017-08-10 13:36 |
| 316 | NOZZLE FIT UP | 2018-03-12 07:30 A → 2017-08-11 07:05 A (-213d) | 2018-03-12 15:15 A → 2017-08-11 17:06 A (-213d) | 7.75h → 10h | NOZ FLG WELDING → 315 | resources SAW Welder; Helper [200%]; Fitter → Fitter; baseline start 2018-03-12 07:30 → 2017-08-10 13:36; baseline finish 2018-03-12 15:15 → 2017-08-11 07:37 |
| 317 | NOZZLE WELDING | 2018-03-13 13:30 A → 2017-08-11 17:06 A (-214d) | 2018-03-14 09:48 A → 2017-08-14 09:06 A (-212d) | 12.31h → 8h |  | resources Helper [200%]; SAW Welder → SAW Welder; Helper; baseline start 2018-03-13 13:30 → 2017-08-11 07:37; baseline finish 2018-03-14 09:48 → 2017-08-11 15:38 |
| 319 | DP/AIR TEST | 2018-03-16 20:30 A → 2017-08-14 17:07 A (-214d) | 2018-03-16 21:30 A → 2017-08-16 09:07 A (-212d) | 1h → 8h | STIFFENER WELDING → 318 | constraint finish no earlier than 2018-03-16 21:30 → none; baseline start 2018-03-16 20:30 → 2017-08-14 07:38; baseline finish 2018-03-16 21:30 → 2017-08-14 15:39 |
| 320 | INSPECTION | 2018-03-13 16:30 A → 2017-08-16 09:07 A (-209d) | 2018-03-14 15:00 A → 2017-08-16 16:23 A (-210d) | 1d → 0.91d | 309 → 319 | constraint finish no earlier than 2018-03-09 21:30 → none; resources Fitter [200%] → Fitter; baseline start 2018-03-13 16:30 → 2017-08-14 15:39; baseline finish 2018-03-14 15:00 → 2017-08-16 06:54 |
| 322 | PLATE MARKING | 2018-01-23 16:00 A → 2017-08-04 16:00 A (-172d) | 2018-01-24 10:00 A → 2017-08-05 08:00 A (-172d) | 6h → 8h | 49, 223 → 47 | resources Helper; Plate (Cost) [0.1%]; Fitter → Fitter [200%]; Helper; baseline start 2018-01-23 16:00 → 2017-08-04 06:31; baseline finish 2018-01-24 10:00 → 2017-08-04 14:32 |

| ID | Task | Start | Finish | Duration | Predecessors | Other |
| --- | --- | --- | --- | --- | --- | --- |
| 323 | PIPE MARKING | 2018-02-07 06:40 A → 2017-08-05 08:00 A (-186d) | 2018-02-07 07:40 A → 2017-08-05 15:01 A (-186d) | 1h → 7h | NOZZLE NECK, 152 → 322 | resources Helper; Pipe (Cost) [0.1%]; Fitter → Fitter [200%]; Helper; baseline start 2018-02-07 06:40 → 2017-08-04 14:32; baseline finish 2018-02-07 07:40 → 2017-08-04 21:32 |
| 327 | CLEANING | 2018-01-29 09:00 A → 2017-08-14 14:07 A (-168d) | 2018-01-29 14:00 A → 2017-08-14 19:07 A (-168d) |  | 374 → 326 | resources Helper → Helper [200%]; baseline start 2018-01-29 09:00 → 2017-08-11 20:38; baseline finish 2018-01-29 14:00 → 2017-08-14 09:38 |
| 328 | **SADDLE SUPPORT WELDING** | 2018-01-22 06:00 A → 2017-08-05 08:00 A (-170d) | 2018-03-12 21:00 A → 2017-08-18 07:09 A (-206d) | 41.86d → 9d |  | baseline start 2018-01-22 06:00 → 2017-08-04 14:32; baseline finish 2018-03-12 21:00 → 2017-08-17 13:40 |
| 329 | SADDLE SUPPORT PLATE MARKING | 2018-01-22 06:00 A → 2017-08-05 08:00 A (-170d) | 2018-01-23 10:00 A → 2017-08-05 18:01 A (-171d) | 10.25h → 10h | none → 48, 322 | constraint start no earlier than 2018-01-22 06:00 → none; resources Helper; Plate (Cost) [0.1%]; Fitter → Fitter; Helper; baseline start 2018-01-22 06:00 → 2017-08-04 14:32; baseline finish 2018-01-23 10:00 → 2017-08-05 08:32 |
| 330 | SADDLE SUPPORT PLATE CUTTING | 2018-01-23 10:00 A → 2017-08-05 18:01 A (-171d) | 2018-01-24 19:00 A → 2017-08-07 17:02 A (-170d) | 25h → 15h |  | resources Helper; Gas Cutter → Gas Cutter; baseline start 2018-01-23 10:00 → 2017-08-05 08:32; baseline finish 2018-01-24 19:00 → 2017-08-07 07:33 |
| 331 | SADDLE SUPPORT PLATE GRINDING | 2018-01-24 19:00 A → 2017-08-07 17:02 A (-170d) | 2018-01-30 11:00 A → 2017-08-08 18:03 A (-175d) | 40h → 17h |  | baseline start 2018-01-24 19:00 → 2017-08-07 07:33; baseline finish 2018-01-30 11:00 → 2017-08-08 08:34 |
| 332 | DRILLING | 2018-01-24 12:00 A → 2017-08-08 18:03 A (-169d) | 2018-01-24 17:00 A → 2017-08-09 08:03 A (-168d) | 5h → 6h | 225 → 331 | baseline start 2018-01-24 12:00 → 2017-08-08 08:34; baseline finish 2018-01-24 17:00 → 2017-08-08 14:35 |
| 333 | SADDLE SUPPORT PLATE FIT UP | 2018-02-05 21:00 A → 2017-08-09 08:03 A (-180d) | 2018-02-07 19:00 A → 2017-08-11 06:05 A (-180d) |  | COMPONENTS WELDING → 332 | resources Helper; Fitter → Fitter; Helper; baseline start 2018-02-05 21:00 → 2017-08-08 14:35; baseline finish 2018-02-07 19:00 → 2017-08-10 12:36 |
| 334 | SADDLE SUPPORT WELDING | 2018-03-06 06:00 A → 2017-08-11 06:05 A (-207d) | 2018-03-06 17:00 A → 2017-08-16 14:08 A (-202d) | 11.01h → 40h | none → 333 | constraint start no earlier than 2018-03-06 06:00 → none; resources Helper [200%]; SAW Welder → SAW Welder; Helper; baseline start 2018-03-06 06:00 → 2017-08-10 12:36; baseline finish 2018-03-06 17:00 → 2017-08-14 20:39 |
| 335 | BEND REMOVAL | 2018-03-07 10:00 A → 2017-08-16 14:08 A (-203d) | 2018-03-07 20:37 A → 2017-08-17 08:08 A (-202d) | 10.62h → 10h |  | resources Helper; Fitter → Fitter; Helper; baseline start 2018-03-07 10:00 → 2017-08-14 20:39; baseline finish 2018-03-07 20:37 → 2017-08-16 14:40 |
| 336 | GRINDING | 2018-01-24 20:00 A → 2017-08-17 08:08 A (-160d) | 2018-01-25 19:00 A → 2017-08-18 07:09 A (-160d) |  | 345 → 335 | baseline start 2018-01-24 20:00 → 2017-08-16 14:40; baseline finish 2018-01-25 19:00 → 2017-08-17 13:40 |
| 337 | **NAME PLATE WELDING** | 2018-03-30 09:15 A → 2017-08-05 18:01 A (-237d) | 2018-03-30 21:45 A → 2017-08-07 16:32 A (-235d) | 0.86d → 0.88d |  | baseline start 2018-03-30 09:15 → 2017-08-05 08:32; baseline finish 2018-03-30 21:45 → 2017-08-07 07:03 |
| 338 | NAME PLATE MARKING | 2018-03-30 09:15 A → 2017-08-05 18:01 A (-237d) | 2018-03-30 12:15 A → 2017-08-05 19:31 A (-237d) | 2h → 1.5h | 390 → 43, 329 | resources Helper; Plate (Cost) [0.1%]; Fitter → Fitter; Helper; baseline start 2018-03-30 09:15 → 2017-08-05 08:32; baseline finish 2018-03-30 12:15 → 2017-08-05 10:02 |
| 339 | CUTTING | 2018-01-23 16:00 A → 2017-08-05 19:31 A (-171d) | 2018-01-23 18:00 A → 2017-08-07 06:31 A (-169d) | 2h → 3h | 223 → 338 | resources Helper; Gas Cutter → Gas Cutter; Helper; baseline start 2018-01-23 16:00 → 2017-08-05 10:02; baseline finish 2018-01-23 18:00 → 2017-08-05 13:02 |
| 341 | WELDING | 2018-03-08 08:00 A → 2017-08-07 10:31 A (-213d) | 2018-03-08 17:00 A → 2017-08-07 14:32 A (-213d) | 9h → 4h | NOZ FLG FITUP → 340 | resources Helper [200%]; SAW Welder → SAW Welder; Helper; baseline start 2018-03-08 08:00 → 2017-08-05 17:03; baseline finish 2018-03-08 17:00 → 2017-08-05 21:03 |
| 343 | **LIFTING LUG WELDING** | 2018-01-23 13:00 A → 2017-08-05 19:31 A (-171d) | 2018-01-29 19:00 A → 2017-08-08 14:33 A (-174d) | 3.72d → 1.63d |  | baseline start 2018-01-23 13:00 → 2017-08-05 10:02; baseline finish 2018-01-29 19:00 → 2017-08-07 21:04 |
| 345 | CUTTING | 2018-01-24 10:00 A → 2017-08-07 06:31 A (-170d) | 2018-01-24 15:30 A → 2017-08-07 12:31 A (-170d) | 5.5h → 6h | 322 → 344 | resources Helper; Gas Cutter → Gas Cutter; Helper; baseline start 2018-01-24 10:00 → 2017-08-05 13:02; baseline finish 2018-01-24 15:30 → 2017-08-05 19:03 |
| 348 | WELDING | 2018-03-30 17:45 A → 2017-08-07 21:32 A (-235d) | 2018-03-30 19:45 A → 2017-08-08 10:32 A (-234d) | 2h → 5h | 219 → 347 | resources Helper [200%]; SAW Welder → SAW Welder; Helper; baseline start 2018-03-30 17:45 → 2017-08-07 12:03; baseline finish 2018-03-30 19:45 → 2017-08-07 17:04 |
| 350 | **INSULATION CLEAT WELDING** | 2018-01-23 16:00 A → 2017-08-07 06:31 A (-169d) | 2018-01-29 14:00 A → 2017-08-08 13:32 A (-174d) | 3.17d → 1.5d |  | baseline start 2018-01-23 16:00 → 2017-08-05 13:02; baseline finish 2018-01-29 14:00 → 2017-08-07 20:04 |
| 354 | WELDING | 2018-01-25 13:00 A → 2017-08-07 19:32 A (-171d) | 2018-01-29 06:11 A → 2017-08-08 09:32 A (-174d) | 9.19h → 6h | PAD FORMING → 353 | resources Helper [200%]; SAW Welder → SAW Welder; Helper; baseline start 2018-01-25 13:00 → 2017-08-07 10:03; baseline finish 2018-01-29 06:11 → 2017-08-07 16:04 |
| 356 | **TUBE BUNDLE ASSEMBLY** | 2018-03-06 06:00 A → 2017-08-17 09:38 A (-201d) | 2018-03-27 19:40 A → 2017-12-04 21:17 A (-113d) | 18.6d → 82.86d |  | baseline start 2018-03-06 06:00 → 2017-08-16 16:10; baseline finish 2018-03-27 19:40 → 2017-12-04 11:48 |
| 357 | TUBE SHEET INSPECTION | 2018-03-06 06:00 A → 2017-08-17 09:38 A (-201d) | 2018-03-06 13:15 A → 2017-08-17 13:38 A (-201d) | 0.5d → 4h | none → 198 | constraint start no earlier than 2018-03-06 06:00 → none; resources Tube Sheet (Cost) [0.1%]; Fitter → Fitter; baseline start 2018-03-06 06:00 → 2017-08-16 16:10; baseline finish 2018-03-06 13:15 → 2017-08-16 20:10 |
| 358 | ASSY FRAME SET UP | 2018-03-18 06:00 A → 2017-08-17 13:38 A (-213d) | 2018-03-18 06:00 A → 2017-08-17 19:39 A (-213d) | 0h → 6h |  | resources Helper; Fitter [200%] → Fitter [200%]; Helper; baseline start 2018-03-18 06:00 → 2017-08-16 20:10; baseline finish 2018-03-18 06:00 → 2017-08-17 10:10 |
| 359 | TUBE BUNDLE ASSY | 2018-03-19 06:00 A → 2017-11-22 15:23 A (-117d) | 2018-03-19 06:00 A → 2017-11-23 13:53 A (-116d) | 0h → 1.81d | 222, 251, 257, TUBE → 222, 358 | resources Helper [300%]; Fitter [200%] → Fitter [200%]; Helper [300%]; baseline start 2018-03-19 06:00 → 2017-11-21 21:54; baseline finish 2018-03-19 06:00 → 2017-11-22 20:25 |
| 360 | TUBE TIE ROD STACK WELD | 2018-03-19 06:00 A → 2017-11-23 13:53 A (-116d) | 2018-03-19 06:00 A → 2017-11-24 13:54 A (-115d) | 0h → 16h |  | resources Helper [200%]; SAW Welder → SAW Welder [200%]; Helper; baseline start 2018-03-19 06:00 → 2017-11-22 20:25; baseline finish 2018-03-19 06:00 → 2017-11-23 20:26 |
| 362 | TUBE SHEET WELDING | 2018-03-21 06:00 A → 2017-11-27 12:55 A (-114d) | 2018-03-22 12:09 A → 2017-11-28 12:56 A (-114d) | 22.15h → 16h | TUBE INSERT → 361 | resources Helper [200%]; SAW Welder → SAW Welder; Helper; baseline start 2018-03-21 06:00 → 2017-11-24 19:27; baseline finish 2018-03-22 12:09 → 2017-11-27 19:28 |
| 363 | TUBE ROOT WELDING | 2018-03-22 06:00 A → 2017-11-28 12:56 A (-114d) | 2018-03-22 20:30 A → 2017-11-29 10:57 A (-113d) | 14.5h → 14h |  | resources Helper [200%]; SAW Welder → SAW Welder [200%]; Helper; baseline start 2018-03-22 06:00 → 2017-11-27 19:28; baseline finish 2018-03-22 20:30 → 2017-11-28 17:29 |
| 364 | TUBE ROOT WELDING DP | 2018-03-23 19:00 A → 2017-11-29 10:57 A (-114d) | 2018-03-23 22:00 A → 2017-11-29 20:58 A (-114d) | 3h → 10h |  | resources Fitter → SAW Welder; Helper; baseline start 2018-03-23 19:00 → 2017-11-28 17:29; baseline finish 2018-03-23 22:00 → 2017-11-29 11:29 |
| 365 | AIR TEST | 2018-03-26 06:00 A → 2017-11-29 20:58 A (-117d) | 2018-03-26 22:00 A → 2017-11-30 10:58 A (-116d) | 16h → 6h |  | baseline start 2018-03-26 06:00 → 2017-11-29 11:29; baseline finish 2018-03-26 22:00 → 2017-11-29 17:30 |
| 366 | TUBE WELDING-FINAL | 2018-03-26 06:00 A → 2017-11-30 10:58 A (-116d) | 2018-03-26 22:00 A → 2017-12-01 06:59 A (-115d) | 16h → 12h |  | resources Helper [200%]; SAW Welder [200%] → SAW Welder [200%]; Helper [200%]; baseline start 2018-03-26 06:00 → 2017-11-29 17:30; baseline finish 2018-03-26 22:00 → 2017-11-30 13:30 |
| 367 | TUBE TRIMMING | 2018-03-27 06:00 A → 2017-12-01 06:59 A (-116d) | 2018-03-27 08:40 A → 2017-12-02 15:01 A (-115d) | 2.67h → 24h |  | resources Helper; Grinder [200%] → Grinder [200%]; Helper; baseline start 2018-03-27 06:00 → 2017-11-30 13:30; baseline finish 2018-03-27 08:40 → 2017-12-01 21:32 |
| 368 | TUBE EXPANSION | 2018-03-27 08:40 A → 2017-12-02 15:01 A (-115d) | 2018-03-27 12:40 A → 2017-12-04 14:02 A (-113d) | 4h → 15h |  | resources Helper; Fitter [200%] → Fitter [200%]; Helper; baseline start 2018-03-27 08:40 → 2017-12-01 21:32; baseline finish 2018-03-27 12:40 → 2017-12-02 20:33 |
| 371 | TUBE BUNDLE INSERT | 2018-03-28 06:00 A → 2017-12-04 21:17 A (-114d) | 2018-03-28 22:00 A → 2017-12-05 17:18 A (-113d) | 16h → 12h | 394 → 356 | resources Helper [300%]; Fitter [200%] → Fitter [200%]; Helper [200%]; baseline start 2018-03-28 06:00 → 2017-12-04 11:48; baseline finish 2018-03-28 22:00 → 2017-12-05 07:49 |
| 374 | WELDING | 2018-01-25 19:00 A → 2017-12-07 06:19 A (-49d) | 2018-01-29 06:48 A → 2017-12-08 15:21 A (-52d) | 3.81h → 25h | 336 → 373 | resources Helper [200%]; SAW Welder → SAW Welder; Helper; baseline start 2018-01-25 19:00 → 2017-12-06 12:50; baseline finish 2018-01-29 06:48 → 2017-12-07 21:52 |
| 376 | INSPECTION | 2018-03-16 21:30 A → 2017-12-11 09:21 A (-95d) | 2018-03-17 08:30 A → 2017-12-11 16:37 A (-96d) | 0.21d → 0.91d | 319 → 375 | constraint finish no earlier than 2018-03-16 21:30 → none; resources Fitter [200%] → Fitter; baseline start 2018-03-16 21:30 → 2017-12-08 15:53; baseline finish 2018-03-17 08:30 → 2017-12-11 07:08 |
| 377 | **CHANNEL FLG WELDING** | 2018-02-21 16:01 A → 2017-08-04 16:00 A (-201d) | 2018-02-28 06:01 A → 2017-12-13 15:09 A (-77d) | 4.83d → 97.89d |  | baseline start 2018-02-21 16:01 → 2017-08-04 06:31; baseline finish 2018-02-28 06:01 → 2017-12-12 21:40 |
| 390 | **HYDRO TEST** | 2018-03-27 19:40 A → 2017-12-13 15:09 A (-104d) | 2018-03-30 09:15 A → 2017-12-27 08:30 A (-93d) | 2.59d → 10.29d |  | baseline start 2018-03-27 19:40 → 2017-12-12 21:40; baseline finish 2018-03-30 09:15 → 2017-12-22 16:04 |
| 391 | NDE CLEARANCE | 2018-03-27 19:40 A → 2017-12-13 15:09 A (-104d) | 2018-03-27 22:00 A → 2017-12-14 13:39 A (-103d) | 0.16d → 1.81d | 356 → 356, 377 | baseline start 2018-03-27 19:40 → 2017-12-12 21:40; baseline finish 2018-03-27 22:00 → 2017-12-13 20:11 |
| 392 | PWHT | 2018-03-28 06:00 A → 2017-12-14 13:39 A (-104d) | 2018-03-28 20:30 A → 2017-12-19 09:39 A (-99d) | 1d → 3.62d |  | baseline start 2018-03-28 06:00 → 2017-12-13 20:11; baseline finish 2018-03-28 20:30 → 2017-12-15 17:13 |
| 393 | CLEANING AFTER PWHT | 2018-03-28 20:30 A → 2017-12-19 09:39 A (-99d) | 2018-03-28 22:00 A → 2017-12-19 21:40 A (-99d) | 1.5h → 12h |  | resources Helper; Fitter → Fitter; Helper; baseline start 2018-03-28 20:30 → 2017-12-15 17:13; baseline finish 2018-03-28 22:00 → 2017-12-16 13:13 |
| 394 | NDE AFTER PWHT | 2018-03-28 06:00 A → 2017-12-19 21:40 A (-99d) | 2018-03-28 22:00 A → 2017-12-20 20:41 A (-98d) | 16h → 15h |  | baseline start 2018-03-28 06:00 → 2017-12-16 13:13; baseline finish 2018-03-28 22:00 → 2017-12-18 12:14 |
| 395 | SHELL SIDE PNUEMATIC TEST | 2018-03-28 06:00 A → 2017-12-20 20:41 A (-98d) | 2018-03-28 22:00 A → 2017-12-21 14:42 A (-97d) | 16h → 10h | 371 → 394 | resources Helper [200%]; Fitter [300%] → Fitter [300%]; Helper [200%]; baseline start 2018-03-28 06:00 → 2017-12-18 12:14; baseline finish 2018-03-28 22:00 → 2017-12-19 06:15 |
| 396 | TUBE BUNDLE OUTSIDE TEST | 2018-03-28 06:00 A → 2017-12-21 14:42 A (-97d) | 2018-03-28 22:00 A → 2017-12-22 10:42 A (-96d) | 16h → 12h |  | resources Helper [200%]; Fitter [300%] → Fitter [300%]; Helper [200%]; baseline start 2018-03-28 06:00 → 2017-12-19 06:15; baseline finish 2018-03-28 22:00 → 2017-12-19 18:16 |
| 397 | TPI WITNESS | 2018-03-29 06:00 A → 2017-12-22 10:42 A (-97d) | 2018-03-29 10:00 A → 2017-12-22 17:58 A (-97d) | 0.28d → 0.91d |  | baseline start 2018-03-29 06:00 → 2017-12-19 18:16; baseline finish 2018-03-29 10:00 → 2017-12-20 09:31 |
| 398 | SHELL SIDE HYDRO TEST | 2018-03-29 10:00 A → 2017-12-22 17:58 A (-97d) | 2018-03-29 12:00 A → 2017-12-25 13:58 A (-94d) | 2h → 12h |  | resources Helper [200%]; Fitter [300%] → Fitter [300%]; Helper [200%]; baseline start 2018-03-29 10:00 → 2017-12-20 09:31; baseline finish 2018-03-29 12:00 → 2017-12-20 21:32 |
| 399 | TPI WITNESS | 2018-03-29 12:00 A → 2017-12-25 13:58 A (-94d) | 2018-03-29 19:15 A → 2017-12-25 21:14 A (-94d) | 0.5d → 0.91d |  | baseline start 2018-03-29 12:00 → 2017-12-20 21:32; baseline finish 2018-03-29 19:15 → 2017-12-21 12:47 |
| 400 | CH ASSY AND HYDRO TEST | 2018-03-29 19:15 A → 2017-12-25 21:14 A (-94d) | 2018-03-29 21:15 A → 2017-12-26 17:15 A (-93d) | 2h → 12h |  | resources Helper [200%]; Fitter [300%] → Fitter [300%]; Helper [200%]; baseline start 2018-03-29 19:15 → 2017-12-21 12:47; baseline finish 2018-03-29 21:15 → 2017-12-22 08:48 |
| 401 | TPI WITNESS | 2018-03-29 21:15 A → 2017-12-26 17:15 A (-93d) | 2018-03-30 09:15 A → 2017-12-27 08:30 A (-93d) | 0.28d → 0.91d |  | baseline start 2018-03-29 21:15 → 2017-12-22 08:48; baseline finish 2018-03-30 09:15 → 2017-12-22 16:04 |
| 402 | **BLAST CLEANING & PAINTING** | 2018-03-28 06:00 A → 2017-12-27 08:30 A (-91d) | 2018-03-30 11:30 A → 2018-02-05 17:00 A (-53d) | 2.59d → 30.94d |  | baseline start 2018-03-28 06:00 → 2017-12-22 16:04; baseline finish 2018-03-30 11:30 → 2017-12-30 17:10 |
| 403 | PREPARATION FOR BLAST CLEANING | 2018-03-28 06:00 A → 2017-12-27 08:30 A (-91d) | 2018-03-28 22:00 A → 2017-12-28 07:31 A (-90d) | 16h → 15h | 356 → 390 | resources Helper [200%]; Fitter [200%] → Fitter [200%]; Helper [200%]; baseline start 2018-03-28 06:00 → 2017-12-22 16:04; baseline finish 2018-03-28 22:00 → 2017-12-25 15:05 |
| 404 | BLAST CLEAN | 2018-03-29 06:00 A → 2017-12-28 08:30 A (-91d) | 2018-03-29 20:30 A → 2018-01-01 14:30 A (-87d) | 1d → 3.62d |  | baseline start 2018-03-29 06:00 → 2017-12-25 15:05; baseline finish 2018-03-29 20:30 → 2017-12-27 12:06 |
| 407 | TPI WITNESS | 2018-03-29 20:30 A → 2018-01-29 08:00 A (-59d) | 2018-03-30 08:30 A → 2018-01-29 16:01 A (-60d) | 4h → 1d | 404 → 406 | constraint none → finish no earlier than 2018-01-29 17:00; baseline start 2018-03-29 20:30 → 2017-12-28 20:08; baseline finish 2018-03-30 08:30 → 2017-12-29 11:23 |
| 408 | DESPATCH CLEARANCE | 2018-03-30 08:30 A → 2018-01-29 17:00 A (-60d) | 2018-03-30 11:30 A → 2018-01-30 09:00 A (-59d) | 3h → 1d |  | baseline start 2018-03-30 08:30 → 2017-12-29 11:23; baseline finish 2018-03-30 11:30 → 2017-12-29 18:39 |
| 409 | DESPATCH | 2018-03-30 06:00 A → 2018-02-05 08:59 A (-53d) | 2018-03-30 08:40 A → 2018-02-05 17:00 A (-53d) | 2.67h → 1d | none → 408 | constraint start no earlier than 2018-03-30 06:00 → finish no earlier than 2018-02-05 17:00; resources Helper [200%]; Fitter [200%] → Fitter [200%]; Helper [200%]; baseline start 2018-03-30 06:00 → 2017-12-29 18:39; baseline finish 2018-03-30 08:40 → 2017-12-30 17:10 |
