# 4220-F1008

How a schedule from MS Project changed from version to version. A marks actual dates.

## Version 1 (saved 2018-05-24, file 4220-F1008.mpp)

Note of the change: third commit

| ID | WBS | Task | Duration | Start | Finish | Predecessors | Complete | Total float | Constraint |
| --- | --- | --- | --- | --- | --- | --- | --- | --- | --- |
| 1 |  | Project Start date | 1d | 2017-10-03 08:30 A | 2017-10-03 17:30 A |  | 100% |  |  |
| 2 |  | Drawing submission | 1d | 2017-11-28 08:30 A | 2017-11-28 17:30 A | 1FS+55ed | 100% |  |  |
| 3 |  | Drawing Approval | 1d | 2018-02-09 08:30 A | 2018-02-09 17:30 A | 2FS+72ed | 100% |  |  |
| 4 | 4 | **4220-F1008** | 356.28d | 2018-02-02 08:00 A | 2018-09-19 10:16 |  | 36% | 0d |  |
| 5 | 4.1 | **Raw Material Ordering** | 71d | 2018-02-02 08:00 A | 2018-05-03 17:30 A |  | 100% |  |  |
| 6 |  | Material Ordering Start | 1d | 2018-02-16 08:30 A | 2018-02-16 17:30 A | 3 | 100% |  | start no earlier than 2018-02-16 08:00 |
| 7 |  | Shell Plate | 9.94d | 2018-04-02 08:00 A | 2018-04-12 17:00 A | 6FS+50ed | 100% |  |  |
| 8 |  | Shell Girth Flange | 3d | 2018-03-29 08:30 A | 2018-03-31 17:30 A | 6FS+50ed | 100% |  |  |
| 9 |  | Channel Plate | 9.94d | 2018-04-02 08:00 A | 2018-04-12 17:00 A | 6FS+50ed | 100% |  |  |
| 10 |  | Channel Girth Flange | 3d | 2018-03-29 08:30 A | 2018-03-31 17:30 A | 6FS+50ed | 100% |  |  |
| 11 |  | Barrel Sheel Plate | 9.94d | 2018-04-02 08:00 A | 2018-04-12 17:00 A | 6FS+50ed | 100% |  |  |
| 12 |  | Barrel Girth Flange | 3d | 2018-03-29 08:30 A | 2018-03-31 17:30 A | 6FS+50ed | 100% |  |  |
| 13 |  | Barrel Dish | 9.94d | 2018-04-02 08:00 A | 2018-04-12 17:00 A | 6FS+50ed | 100% |  |  |
| 14 |  | Tube Sheet-1 | 3d | 2018-03-29 08:30 A | 2018-03-31 17:30 A | 6FS+50ed | 100% |  |  |
| 15 |  | Tube Sheet -2 | 3d | 2018-03-29 08:30 A | 2018-03-31 17:30 A | 6FS+50ed | 100% |  |  |
| 16 |  | Floating Head Flg | 3d | 2018-03-29 08:30 A | 2018-03-31 17:30 A | 6FS+50ed | 100% |  |  |
| 17 |  | Floating Head Dish | 9.94d | 2018-04-02 08:00 A | 2018-04-12 17:00 A | 6FS+50ed | 100% |  |  |
| 18 |  | Backing Ring | 3d | 2018-03-29 08:30 A | 2018-03-31 17:30 A | 6FS+50ed | 100% |  |  |
| 19 |  | Baffle Plate | 9.94d | 2018-04-02 08:00 A | 2018-04-12 17:00 A | 6FS+50ed | 100% |  |  |
| 20 |  | Sealing Strip Plate | 9.94d | 2018-04-09 08:30 A | 2018-04-20 17:00 A | 6FS+50ed | 100% |  |  |
| 21 |  | Sliding Strip Plate | 9.94d | 2018-04-02 08:00 A | 2018-04-12 17:00 A | 6FS+50ed | 100% |  |  |
| 22 |  | Seal Rod | 52.03d | 2018-02-02 08:00 A | 2018-04-09 08:45 A | 6FS+50ed | 100% |  |  |
| 23 |  | Noz Srn | 3d | 2018-03-29 08:30 A | 2018-03-31 17:30 A | 6FS+50ed | 100% |  |  |
| 24 |  | Tube | 3d | 2018-03-29 08:30 A | 2018-03-31 17:30 A | 6FS+50ed | 100% |  |  |
| 25 |  | Spacer Tube | 3d | 2018-03-29 08:30 A | 2018-03-31 17:30 A | 6FS+50ed | 100% |  |  |
| 26 |  | Tie Rod | 52.03d | 2018-02-02 08:00 A | 2018-04-09 08:45 A | 6FS+50ed | 100% |  |  |
| 27 |  | Test Ring & Test Flg | 2.94d | 2018-03-29 08:00 A | 2018-03-31 17:00 A | 6FS+50ed | 100% |  |  |
| 28 |  | Ms Rod For Handle Etc | 3d | 2018-04-30 08:30 A | 2018-05-03 17:30 A | 6FS+70ed | 100% |  |  |
| 29 |  | Ms Plate For Saddle | 3d | 2018-04-30 08:30 A | 2018-05-03 17:30 A | 6FS+70ed | 100% |  |  |
| 30 | 4.2 | **Raw Material receipt** | 45.1d | 2018-06-02 17:00 | 2018-07-31 08:46 |  |  | 31.06d |  |
| 31 |  | Shell Plate-Sa 516 Gr60 | 1d | 2018-06-02 17:00 | 2018-06-04 17:01 | 7FS+39d |  | 65.66d |  |
| 32 |  | Shell Girth Flange-Sa266 Gr4 | 1d | 2018-07-12 08:30 | 2018-07-13 08:31 | 8FS+80d |  | 43.43d |  |
| 33 |  | Channel Plate-Sa 516 Gr60 | 1d | 2018-06-02 17:00 | 2018-06-04 17:01 | 7FS+39d |  | 69.06d |  |
| 34 |  | Channel Girth Flange-Sa 266 Gr4 | 1d | 2018-07-12 08:30 | 2018-07-13 08:31 | 10FS+80d |  | 51.22d |  |
| 35 |  | Barrel Sheel Plate-Sa 516 Gr 60 | 1d | 2018-06-02 17:00 | 2018-06-04 17:01 | 7FS+39d |  | 71.06d |  |
| 36 |  | Barrel Girth Flange-Sa 266 Gr4 | 1d | 2018-07-12 08:30 | 2018-07-13 08:31 | 12FS+80d |  | 51.22d |  |
| 37 |  | Barrel Dish-Sa 516 Gr 60 | 1d | 2018-06-02 17:00 | 2018-06-04 17:01 | 7FS+39d |  | 68.28d |  |
| 38 |  | Tube Sheet-1-Sa 266 Gr4 | 1d | 2018-07-12 08:30 | 2018-07-13 08:31 | 14FS+80d |  | 0d |  |
| 39 |  | Tube Sheet -2-Sa 266 Gr4 | 1d | 2018-07-12 08:30 | 2018-07-13 08:31 | 15FS+80d |  | 51.22d |  |
| 40 |  | Floating Head Flg-Sa 266 Gr4 | 1d | 2018-07-12 08:30 | 2018-07-13 08:31 | 16FS+80d |  | 51.22d |  |
| 41 |  | Floating Head Dish-Sa 516 Gr60 | 1d | 2018-07-24 17:00 | 2018-07-25 17:01 | 17FS+80d |  | 29.06d |  |
| 42 |  | Backing Ring-Sa 266 Gr4 | 1d | 2018-07-12 08:30 | 2018-07-13 08:31 | 18FS+80d |  | 51.22d |  |
| 43 |  | Baffle Plate-Sa 516 Gr60 | 1d | 2018-06-02 17:00 | 2018-06-04 17:01 | 7FS+39d |  | 76.06d |  |
| 44 |  | Sealing Strip Plate-Sa 516 Gr60 | 1d | 2018-06-02 17:00 | 2018-06-04 17:01 | 7FS+39d |  | 79.53d |  |
| 45 |  | Sliding Strip Plate-Sa 516 Gr60 | 1d | 2018-06-02 17:00 | 2018-06-04 17:01 | 7FS+39d |  | 79.53d |  |
| 46 |  | Lifting lug RF pad & Pad plate | 1d | 2018-07-30 08:45 | 2018-07-31 08:46 | 22FS+87d |  | 35.97d |  |
| 47 |  | STD flanges, Pipes, davit arm pipe & plate | 1d | 2018-07-12 08:30 | 2018-07-13 08:31 | 23FS+80d |  | 48.34d |  |
| 48 |  | Tube -Sa 179 | 1d | 2018-06-05 08:30 | 2018-06-06 08:31 | 24FS+50d |  | 81.22d |  |
| 49 |  | Spacer Tube-Sa 179 | 1d | 2018-06-05 08:30 | 2018-06-06 08:31 | 25FS+50d |  | 80d |  |
| 50 |  | Tie Rod-Sa 36 | 1d | 2018-07-07 08:45 | 2018-07-09 08:46 | 26FS+70d |  | 52.97d |  |
| 51 |  | Test Ring & Test Flg-Sa 266 Gr4 | 1d | 2018-07-11 17:00 | 2018-07-12 17:01 | 27FS+80d |  | 51.28d |  |
| 52 |  | Ms Rod For Handle Etc | 1d | 2018-07-06 08:30 | 2018-07-07 08:31 | 28FS+50d |  | 55.22d |  |
| 53 |  | Ms Plate For Saddle | 1d | 2018-07-06 08:30 | 2018-07-07 08:31 | 29FS+50d |  | 53d |  |
| 54 | 4.3 | **133-EE1008F** | 82.28d | 2018-06-04 17:01 | 2018-09-19 10:16 |  |  | 0d |  |
| 55 | 4.3.1 | **Dish Forming - 12T* 764 OD** | 28d | 2018-06-04 17:01 | 2018-06-21 17:01 |  |  | 137.16d |  |
| 56 |  | Bar Dish Blank Issuence | 4d | 2018-06-04 17:01 | 2018-06-06 17:01 | 37 |  | 137.16d |  |
| 57 |  | Bar-Dish Blank Marking - 12 * 764 Od | 1h | 2018-06-06 17:01 | 2018-06-06 18:01 | 56 |  | 137.16d |  |
| 58 |  | Bar-Dish Blank Marking Inspection | 1d | 2018-06-06 18:01 | 2018-06-07 10:01 | 57 |  | 137.16d |  |
| 59 |  | Bar-Dish Blank Cutting | 1h | 2018-06-07 10:01 | 2018-06-07 11:01 | 58 |  | 137.16d |  |
| 60 |  | Bar-Dish Forming | 10d | 2018-06-07 11:01 | 2018-06-14 11:01 | 59 |  | 137.16d |  |
| 61 |  | Profile Insp | 1d | 2018-06-14 11:01 | 2018-06-14 19:01 | 60 |  | 137.16d |  |
| 62 |  | Heat Treatment Preparation | 1d | 2018-06-14 19:01 | 2018-06-15 11:01 | 61 |  | 137.16d |  |
| 63 |  | Stress Releiving- Sub Cont | 4d | 2018-06-15 11:01 | 2018-06-18 11:01 | 62 |  | 137.16d |  |
| 64 |  | Removal Of Spiders | 1d | 2018-06-18 11:01 | 2018-06-18 19:01 | 63 |  | 137.16d |  |
| 65 |  | Surface Preparation | 2d | 2018-06-18 19:01 | 2018-06-19 19:01 | 64 |  | 137.16d |  |
| 66 |  | Inspection | 1d | 2018-06-19 19:01 | 2018-06-20 11:01 | 65 |  | 137.16d |  |
| 67 |  | Tpi Inspection | 4h | 2018-06-20 11:01 | 2018-06-20 15:01 | 66 |  | 137.16d |  |
| 68 |  | Sf Marking | 2h | 2018-06-20 15:01 | 2018-06-20 17:01 | 67 |  | 137.16d |  |
| 69 |  | Sf Cutting | 8.5h | 2018-06-20 17:01 | 2018-06-21 09:31 | 68 |  | 137.16d |  |
| 70 |  | Sf Gridning & Ep | 7.5h | 2018-06-21 09:31 | 2018-06-21 17:01 | 69 |  | 137.16d |  |

| ID | WBS | Task | Duration | Start | Finish | Predecessors | Total float |
| --- | --- | --- | --- | --- | --- | --- | --- |
| 71 | 4.3.2 | **Tube Sheet** | 23.62d | 2018-07-13 08:31 | 2018-07-27 21:31 |  | 0d |
| 72 | 4.3.2.1 | **Tube Sheet Machining 1 Off 2** | 9d | 2018-07-13 08:31 | 2018-07-19 16:31 |  | 5.75d |
| 73 |  | Inward Inspection | 2d | 2018-07-13 08:31 | 2018-07-17 08:31 | 38 | 5.75d |
| 74 |  | Tube Sheet M/C - 1/2 | 5d | 2018-07-17 08:31 | 2018-07-19 16:31 | 73 | 5.75d |
| 75 | 4.3.2.2 | **Tube Sheet Drilling 1 Off 2** | 8.88d | 2018-07-19 16:31 | 2018-07-25 07:31 |  | 5.75d |
| 76 |  | Tube Sheet Drilling -1/2 | 0.5d | 2018-07-19 16:31 | 2018-07-19 20:31 | 74 | 5.75d |
| 77 |  | Exp Groove+Welding Groove -1/2 | 1d | 2018-07-19 20:31 | 2018-07-20 12:31 | 76 | 5.75d |
| 78 |  | Tie Rod, Pulling, Lifting Hole - 1/2 | 1d | 2018-07-20 12:31 | 2018-07-20 20:31 | 77 | 5.75d |
| 79 |  | Pass Partition Groove M/C -1/2 | 4d | 2018-07-20 20:31 | 2018-07-23 20:31 | 78 | 5.75d |
| 80 |  | Cleaning ,Go/No Go Check -1/2 | 11h | 2018-07-23 20:31 | 2018-07-24 15:31 | 79 | 5.75d |
| 81 |  | Final Inspection -1/2 | 1d | 2018-07-24 15:31 | 2018-07-25 07:31 | 80 | 5.75d |
| 82 | 4.3.2.3 | **Tube Sheet Machining 2 Off 2** | 9d | 2018-07-13 08:31 | 2018-07-19 16:31 |  | 0d |
| 83 |  | Inward Inspection | 2d | 2018-07-13 08:31 | 2018-07-17 08:31 | 38 | 0d |
| 84 |  | Tube Sheet M/C - 2/2 | 5d | 2018-07-17 08:31 | 2018-07-19 16:31 | 83 | 0d |
| 85 | 4.3.2.4 | **Tube Sheet Drilling 2 Off 2** | 14.62d | 2018-07-19 16:31 | 2018-07-27 21:31 |  | 0d |
| 86 |  | Tube Sheet Drilling -2/2 | 0.5d | 2018-07-19 16:31 | 2018-07-19 20:31 | 84 | 0d |
| 87 |  | Exp Groove+Welding Groove -2/2 | 1d | 2018-07-19 20:31 | 2018-07-20 12:31 | 86 | 0d |
| 88 |  | Tie Rod, Pulling, Lifting Hole - 2/2 | 1d | 2018-07-20 12:31 | 2018-07-20 20:31 | 87 | 0d |
| 89 |  | Pass Partition Groove M/C -2/2 | 4d | 2018-07-20 20:31 | 2018-07-23 20:31 | 88 | 0d |
| 90 |  | Cleaning ,Go/No Go Check -2/2 | 11h | 2018-07-23 20:31 | 2018-07-24 15:31 | 89 | 0d |
| 91 |  | Final Inspection -2/2 | 54h | 2018-07-24 15:31 | 2018-07-27 21:31 | 90 | 0d |
| 92 | 4.3.3 | **Top Saddle Fabrrication** | 4.75d | 2018-07-07 08:31 | 2018-07-10 14:31 |  | 107.47d |
| 93 |  | Plate Issuence | 4d | 2018-07-07 08:31 | 2018-07-10 08:31 | 53 | 107.47d |
| 94 |  | Base Marking | 2h | 2018-07-10 08:31 | 2018-07-10 10:31 | 93 | 107.47d |
| 95 |  | Web Pl Marking | 2h | 2018-07-10 10:31 | 2018-07-10 12:31 | 94 | 107.47d |
| 96 |  | Ribs Marking | 2h | 2018-07-10 12:31 | 2018-07-10 14:31 | 95 | 107.47d |
| 97 | 4.3.4 | **Top Sadlle Plate Cutting** | 2.38d | 2018-07-07 08:31 | 2018-07-09 11:31 |  | 105.22d |
| 98 |  | Base Cutting | 2.5h | 2018-07-07 08:31 | 2018-07-07 11:01 | 53 | 105.28d |
| 99 |  | Web Pl Cutting | 3h | 2018-07-07 08:31 | 2018-07-07 11:31 | 53 | 105.22d |
| 100 |  | Ribs Cutting | 2h | 2018-07-07 08:31 | 2018-07-07 10:31 | 53 | 109.97d |
| 101 |  | Grinnding Of Above | 0.5d | 2018-07-07 11:31 | 2018-07-07 15:31 | 98, 99, 100 | 109.84d |
| 102 |  | Drilling | 4h | 2018-07-07 15:31 | 2018-07-07 19:31 | 101 | 109.84d |
| 103 |  | Milling | 8h | 2018-07-07 19:31 | 2018-07-09 11:31 | 102 | 109.84d |
| 104 | 4.3.5 | **Saddle Fit Up & Welding** | 6.62d | 2018-07-07 11:31 | 2018-07-11 16:31 |  | 105.22d |
| 105 |  | Base + Web Fit Up | 12h | 2018-07-07 11:31 | 2018-07-09 07:31 | 98, 99 | 105.22d |
| 106 |  | Base + Web Welding | 9h | 2018-07-09 07:31 | 2018-07-09 16:31 | 105 | 105.22d |
| 107 |  | Ribs+Web Fit Up | 16h | 2018-07-09 16:31 | 2018-07-10 16:31 | 106 | 105.22d |
| 108 |  | Ribs+Web Welding | 16h | 2018-07-10 16:31 | 2018-07-11 16:31 | 107 | 105.22d |
| 109 | 4.3.6 | **Davit Pipe Fabrication** | 5.88d | 2018-07-13 08:31 | 2018-07-18 07:31 |  | 96.34d |
| 110 |  | Pipe Transfere | 4d | 2018-07-13 08:31 | 2018-07-17 08:31 | 47 | 96.34d |
| 111 |  | Pipe Marking - 4 Nos | 3h | 2018-07-17 08:31 | 2018-07-17 11:31 | 110 | 96.34d |
| 112 |  | Support Pl Marking | 2h | 2018-07-13 08:31 | 2018-07-13 10:31 | 47 | 101.72d |
| 113 |  | Gusset Pl Marking | 2h | 2018-07-13 08:31 | 2018-07-13 10:31 | 47 | 101.97d |
| 114 |  | Base Hub Marking | 1h | 2018-07-13 08:31 | 2018-07-13 09:31 | 47 | 102.09d |
| 115 |  | Pipe Cutting - 6 Nos | 3h | 2018-07-17 11:31 | 2018-07-17 14:31 | 111 | 96.34d |
| 116 |  | Support Pl Cutting | 2h | 2018-07-13 10:31 | 2018-07-13 12:31 | 112 | 101.72d |
| 117 |  | Pipe Grinding - 6 Nos | 3h | 2018-07-17 14:31 | 2018-07-17 17:31 | 115 | 96.34d |
| 118 |  | Support Pl Grinding-10 Nos | 1h | 2018-07-17 17:31 | 2018-07-17 18:31 | 117 | 96.34d |
| 119 |  | Pivot Pl Grinding | 1h | 2018-07-17 18:31 | 2018-07-17 19:31 | 118 | 96.34d |
| 120 |  | Pipe Fit Up-2 Nos | 1h | 2018-07-17 19:31 | 2018-07-17 20:31 | 119 | 96.34d |
| 121 |  | Pipe Welding -2 Nos | 1h | 2018-07-17 20:31 | 2018-07-17 21:31 | 120 | 96.34d |
| 122 |  | Pivot Pl Welding | 1h | 2018-07-17 21:31 | 2018-07-18 06:31 | 121 | 96.34d |
| 123 |  | Support Pl Welding -2 Nos | 1h | 2018-07-18 06:31 | 2018-07-18 07:31 | 122 | 96.34d |
| 124 | 4.3.7 | **Lifting Lug Pad** | 4.88d | 2018-07-31 08:46 | 2018-08-02 15:46 |  | 71.31d |
| 125 |  | Plate Issuence | 4d | 2018-07-31 08:46 | 2018-08-02 08:46 | 46 | 71.31d |
| 126 |  | Lifting Lug Pad Marking | 3h | 2018-08-02 08:46 | 2018-08-02 11:46 | 125 | 71.31d |
| 127 |  | Lifting Lug Pad Cutting | 2h | 2018-08-02 11:46 | 2018-08-02 13:46 | 126 | 71.31d |
| 128 |  | Lifting Lugs Pad Grinding | 2h | 2018-08-02 13:46 | 2018-08-02 15:46 | 127 | 71.31d |
| 129 | 4.3.8 | **Lifting Lug Preparation** | 4.75d | 2018-07-31 08:46 | 2018-08-02 14:46 |  | 71.44d |
| 130 |  | Lifting Lugs Marking | 4d | 2018-07-31 08:46 | 2018-08-02 08:46 | 46 | 71.44d |
| 131 |  | Lifting Lugs Cutting | 2h | 2018-08-02 08:46 | 2018-08-02 10:46 | 130 | 71.44d |
| 132 |  | Lifting Lugs Grinding | 2h | 2018-08-02 10:46 | 2018-08-02 12:46 | 131 | 71.44d |
| 133 |  | Lifting Lug Drilling | 2h | 2018-08-02 12:46 | 2018-08-02 14:46 | 132 | 71.44d |
| 134 | 4.3.9 | **Channel Cover Handle Prepataion** | 2d | 2018-07-07 08:31 | 2018-07-09 08:31 |  | 110.22d |
| 135 |  | Ch Cover Ring Forming | 2d | 2018-07-07 08:31 | 2018-07-09 08:31 | 52 | 110.22d |
| 136 |  | Sliding Sling Forming | 2d | 2018-07-07 08:31 | 2018-07-09 08:31 | 52 | 110.22d |
| 137 | 4.3.10 | **Baffle & Tb Items Fab** | 59.97d | 2018-06-04 17:01 | 2018-07-11 16:46 |  | 105.19d |
| 138 | 4.3.10.1 | **Baffle Preparation** | 1.88d | 2018-06-04 17:01 | 2018-06-05 16:01 |  | 152.53d |
| 139 |  | Baffle Plate Transfer | 8h | 2018-06-04 17:01 | 2018-06-05 09:01 | 43 | 152.53d |
| 140 |  | Baffle Marking | 4h | 2018-06-05 09:01 | 2018-06-05 13:01 | 139 | 152.53d |

| ID | WBS | Task | Duration | Start | Finish | Predecessors | Total float |
| --- | --- | --- | --- | --- | --- | --- | --- |
| 141 |  | Baffle Profile Cutting | 3h | 2018-06-05 13:01 | 2018-06-05 16:01 | 140 | 152.53d |
| 142 | 4.3.10.2 | **Baffle Bend Removal & Stacking** | 1.72d | 2018-06-05 16:01 | 2018-06-06 13:46 |  | 152.53d |
| 143 |  | Baffle Pl Bend Removal | 13.5h | 2018-06-05 16:01 | 2018-06-06 13:31 | 141 | 152.53d |
| 144 |  | Baffle Pl Stacking / 100 mm | 0.25h | 2018-06-06 13:31 | 2018-06-06 13:46 | 143 | 152.53d |
| 145 | 4.3.10.3 | **Baffle Drilling** | 4d | 2018-06-06 13:46 | 2018-06-08 13:46 |  | 152.53d |
| 146 |  | Baffle Drilling | 4d | 2018-06-06 13:46 | 2018-06-08 13:46 | 144 | 152.53d |
| 147 | 4.3.10.4 | **Baffle De Stacking & Chamfering** | 1.75d | 2018-06-08 13:46 | 2018-06-11 11:46 |  | 152.53d |
| 148 |  | Baffle De Stacing | 9h | 2018-06-08 13:46 | 2018-06-11 06:46 | 145 | 156.44d |
| 149 |  | Baffle Chamfering | 14h | 2018-06-08 13:46 | 2018-06-11 11:46 | 146 | 152.53d |
| 150 | 4.3.10.5 | **Baffle Stacking & Thro Hole Check** | 3.28d | 2018-06-11 11:46 | 2018-06-13 06:01 |  | 152.53d |
| 151 |  | Stacking | 4.25h | 2018-06-11 11:46 | 2018-06-11 16:01 | 149 | 152.53d |
| 152 |  | Baffle Hole Alingment | 2h | 2018-06-11 16:01 | 2018-06-11 18:01 | 151 | 152.53d |
| 153 |  | Baffle Hole Re Drill | 14h | 2018-06-11 18:01 | 2018-06-12 16:01 | 152 | 152.53d |
| 154 |  | Baffle Od Machining | 3h | 2018-06-12 16:01 | 2018-06-12 19:01 | 153 | 152.53d |
| 155 |  | Baffle Cleaning | 3h | 2018-06-12 19:01 | 2018-06-13 06:01 | 154 | 152.53d |
| 156 | 4.3.10.6 | **Support Plate Marking** | 2.75d | 2018-06-04 17:01 | 2018-06-06 07:01 |  | 160.16d |
| 157 |  | Support Plate Transfer | 0.5d | 2018-06-04 17:01 | 2018-06-04 21:01 | 43 | 160.16d |
| 158 |  | Support Marking | 2h | 2018-06-04 21:01 | 2018-06-05 07:01 | 157 | 160.16d |
| 159 |  | Support Profile Cutting | 2d | 2018-06-05 07:01 | 2018-06-06 07:01 | 158 | 160.16d |
| 160 | 4.3.10.7 | **Support Plate Bend Removal** | 0.5d | 2018-06-06 07:01 | 2018-06-06 11:01 |  | 160.16d |
| 161 |  | Support Pl Bend Removal | 4h | 2018-06-06 07:01 | 2018-06-06 11:01 | 159 | 160.16d |
| 162 | 4.3.10.8 | **Support Plate Drlinng** | 1.25d | 2018-06-06 11:01 | 2018-06-06 21:01 |  | 160.16d |
| 163 |  | Support Drilling | 10h | 2018-06-06 11:01 | 2018-06-06 21:01 | 161 | 160.16d |
| 164 |  | Support Hole Chamfering | 4h | 2018-06-06 21:01 | 2018-06-07 09:01 | 163 | 160.16d |
| 165 | 4.3.10.10 | **Tie Rod Preparation** | 5d | 2018-07-09 08:46 | 2018-07-11 16:46 |  | 105.19d |
| 166 |  | Tie Rod Matl Transfere | 4d | 2018-07-09 08:46 | 2018-07-11 08:46 | 50 | 105.19d |
| 167 |  | Rod Cutting | 2h | 2018-07-11 08:46 | 2018-07-11 10:46 | 166 | 105.19d |
| 168 |  | Thread Machining. | 3h | 2018-07-11 10:46 | 2018-07-11 13:46 | 167 | 105.19d |
| 169 |  | Joining | 3h | 2018-07-11 13:46 | 2018-07-11 16:46 | 168 | 105.19d |
| 170 | 4.3.10.11 | **Spacer Tube Preparation** | 2.38d | 2018-06-06 08:31 | 2018-06-07 11:31 |  | 159.84d |
| 171 |  | Spacer Tube Transfere | 4h | 2018-06-06 08:31 | 2018-06-06 12:31 | 49 | 159.84d |
| 172 |  | Length Cutting 237Nos | 7h | 2018-06-06 12:31 | 2018-06-06 19:31 | 171 | 159.84d |
| 173 |  | Lenngth Machining | 7h | 2018-06-06 19:31 | 2018-06-07 10:31 | 172 | 159.84d |
| 174 |  | Cleaninng | 1h | 2018-06-07 10:31 | 2018-06-07 11:31 | 173 | 159.84d |
| 175 | 4.3.10.12 | **Sealing Strip Preparation** | 5.75d | 2018-06-04 17:01 | 2018-06-07 15:01 |  | 159.41d |
| 176 |  | Sealing Strip Marking | 1h | 2018-06-04 17:01 | 2018-06-04 18:01 | 44 | 159.41d |
| 177 |  | Sealing Strip Cutting | 3h | 2018-06-04 18:01 | 2018-06-04 21:01 | 176 | 159.41d |
| 178 |  | Sealing Strip Bend Removal | 18h | 2018-06-04 21:01 | 2018-06-06 07:01 | 177 | 159.41d |
| 179 |  | Sealing Strip Grinding | 16h | 2018-06-06 07:01 | 2018-06-07 07:01 | 178 | 159.41d |
| 180 |  | Sealing Strip Joining | 4h | 2018-06-07 07:01 | 2018-06-07 11:01 | 179 | 159.41d |
| 181 |  | Sealing Strip Dress Up | 4h | 2018-06-07 11:01 | 2018-06-07 15:01 | 180 | 159.41d |
| 182 | 4.3.10.13 | **Sliding Strip Preparation** | 5.75d | 2018-06-04 17:01 | 2018-06-07 15:01 |  | 159.41d |
| 183 |  | Sliding Strip Marking | 1h | 2018-06-04 17:01 | 2018-06-04 18:01 | 45 | 159.41d |
| 184 |  | Sliding Strip Cutting | 3h | 2018-06-04 18:01 | 2018-06-04 21:01 | 183 | 159.41d |
| 185 |  | Sliding Strip Bend Removal | 18h | 2018-06-04 21:01 | 2018-06-06 07:01 | 184 | 159.41d |
| 186 |  | Sliding Strip Grinding | 16h | 2018-06-06 07:01 | 2018-06-07 07:01 | 185 | 159.41d |
| 187 |  | Sliding Strip Joining | 4h | 2018-06-07 07:01 | 2018-06-07 11:01 | 186 | 159.41d |
| 188 |  | Sliding Strip Dress Up | 4h | 2018-06-07 11:01 | 2018-06-07 15:01 | 187 | 159.41d |
| 189 | 4.3.11 | **Nozzle Fabrication with Flange** | 4.4d | 2018-07-13 08:31 | 2018-07-17 11:41 |  | 97.82d |
| 190 | 4.3.11.1 | **PIPE MARKING - 6" 4 NOS** | 2.4d | 2018-07-13 08:31 | 2018-07-17 11:41 |  | 48.82d |
| 191 |  | PIPE MARKING - 6" 4 NOS | 3h | 2018-07-13 08:31 | 2018-07-13 11:31 | 47 | 97.82d |
| 192 |  | CUTTING | 3h | 2018-07-13 11:31 | 2018-07-13 14:31 | 191 | 97.82d |
| 193 |  | EDGE PREPARATION | 4h | 2018-07-13 14:31 | 2018-07-13 18:31 | 192 | 97.82d |
| 194 |  | NOZZLE FIT UP FLANGE | 4h | 2018-07-13 18:31 | 2018-07-16 06:31 | 193 | 97.82d |
| 195 |  | WELDING | 3h | 2018-07-16 06:31 | 2018-07-16 09:31 | 194 | 97.82d |
| 196 |  | DP | 40.2min | 2018-07-16 09:31 | 2018-07-16 10:11 | 195 | 97.82d |
| 197 |  | RT | 1d | 2018-07-16 10:11 | 2018-07-16 18:11 | 196 | 97.82d |
| 198 |  | PROFILE MARKING | 1.5h | 2018-07-16 18:11 | 2018-07-16 19:41 | 197 | 97.82d |
| 199 |  | CUTTING | 4h | 2018-07-16 19:41 | 2018-07-17 07:41 | 198 | 97.82d |
| 200 |  | Profile Grinding | 4h | 2018-07-17 07:41 | 2018-07-17 11:41 | 199 | 97.82d |
| 201 | 4.3.11.2 | **PIPE MARKING - 2" 4 NOS** | 2d | 2018-07-13 08:31 | 2018-07-16 21:11 |  | 49.22d |
| 202 |  | PIPE MARKING - 2" 4 NOS | 2h | 2018-07-13 08:31 | 2018-07-13 10:31 | 47 | 98.64d |
| 203 |  | CUTTING | 2h | 2018-07-13 10:31 | 2018-07-13 12:31 | 202 | 98.64d |
| 204 |  | EDGE PREPARATION | 2h | 2018-07-13 12:31 | 2018-07-13 14:31 | 203 | 98.64d |
| 205 |  | NOZZLE FIT UP FLANGE | 4h | 2018-07-13 14:31 | 2018-07-13 18:31 | 204 | 98.64d |
| 206 |  | WELDING | 2.5h | 2018-07-13 18:31 | 2018-07-13 21:01 | 205 | 98.64d |
| 207 |  | DP | 40.2min | 2018-07-13 21:01 | 2018-07-13 21:41 | 206 | 98.64d |
| 208 |  | RT | 1d | 2018-07-13 21:41 | 2018-07-16 13:41 | 207 | 98.64d |
| 209 |  | PROFILE MARKING | 1.5h | 2018-07-16 13:41 | 2018-07-16 15:11 | 208 | 98.64d |
| 210 |  | CUTTING | 4h | 2018-07-16 15:11 | 2018-07-16 19:11 | 209 | 98.64d |

| ID | WBS | Task | Duration | Start | Finish | Predecessors | Total float |
| --- | --- | --- | --- | --- | --- | --- | --- |
| 211 |  | Profile Grinding | 2h | 2018-07-16 19:11 | 2018-07-16 21:11 | 210 | 98.64d |
| 212 | 4.3.11.3 | **PIPE MARKING - 1.5 2 NOS** | 1d | 2018-07-13 08:31 | 2018-07-13 20:50 |  | 50.22d |
| 213 |  | PIPE MARKING - 1.5" 2 NOS | 1h | 2018-07-13 08:31 | 2018-07-13 09:31 | 47 | 100.68d |
| 214 |  | CUTTING | 1h | 2018-07-13 09:31 | 2018-07-13 10:31 | 213 | 100.68d |
| 215 |  | EDGE PREPARATION | 1h | 2018-07-13 10:31 | 2018-07-13 11:31 | 214 | 100.68d |
| 216 |  | NOZZLE FIT UP FLANGE | 2h | 2018-07-13 11:31 | 2018-07-13 13:31 | 215 | 100.68d |
| 217 |  | WELDING | 1.5h | 2018-07-13 13:31 | 2018-07-13 15:01 | 216 | 100.68d |
| 218 |  | DP | 19.8min | 2018-07-13 15:01 | 2018-07-13 15:20 | 217 | 100.68d |
| 219 |  | RT | 1h | 2018-07-13 15:20 | 2018-07-13 16:20 | 218 | 100.68d |
| 220 |  | PROFILE MARKING | 1.5h | 2018-07-13 16:20 | 2018-07-13 17:50 | 219 | 100.68d |
| 221 |  | CUTTING | 2h | 2018-07-13 17:50 | 2018-07-13 19:50 | 220 | 100.68d |
| 222 |  | Profile Grinding | 1h | 2018-07-13 19:50 | 2018-07-13 20:50 | 221 | 100.68d |
| 223 | 4.3.12 | **Nozzle RF Pad fabrication** | 1.05d | 2018-07-31 08:46 | 2018-07-31 17:10 |  | 75.03d |
| 224 |  | PLATE ISSUENCE | 4h | 2018-07-31 08:46 | 2018-07-31 12:46 | 46 | 75.03d |
| 225 |  | PAD MARKING | 0.2h | 2018-07-31 12:46 | 2018-07-31 12:58 | 224 | 75.14d |
| 226 |  | PAD CUTTING | 0.2h | 2018-07-31 12:58 | 2018-07-31 13:10 | 225 | 75.14d |
| 227 |  | PAD GRINDING | 1h | 2018-07-31 13:10 | 2018-07-31 14:10 | 226 | 75.14d |
| 228 |  | Profile Marking | 1h | 2018-07-31 14:10 | 2018-07-31 15:10 | 227 | 75.14d |
| 229 |  | Profile Forming | 1h | 2018-07-31 15:10 | 2018-07-31 16:10 | 228 | 75.14d |
| 230 |  | Vent hole drilling and tapping | 1h | 2018-07-31 16:10 | 2018-07-31 17:10 | 229 | 75.14d |
| 231 | 4.3.13 | **Shell Fabrication** | 78.73d | 2018-06-04 17:01 | 2018-07-24 06:51 |  | 86.43d |
| 232 | 4.3.13.1 | **Shell Marking & Cutting** | 4.28d | 2018-06-04 17:01 | 2018-06-06 19:16 |  | 131.66d |
| 233 |  | Sh Plate Trnasfer | 4d | 2018-06-04 17:01 | 2018-06-06 17:01 | 31 | 131.66d |
| 234 |  | Sh-Marking | 2.25h | 2018-06-06 17:01 | 2018-06-06 19:16 | 233 | 131.66d |
| 235 | 4.3.13.2 | **Shell Plate Cutting** | 0.94d | 2018-06-06 19:16 | 2018-06-07 10:46 |  | 131.66d |
| 236 |  | Sh-Cutting | 7.5h | 2018-06-06 19:16 | 2018-06-07 10:46 | 234 | 131.66d |
| 237 | 4.3.13.3 | **Sh Pl Side Grinding** | 0.5d | 2018-06-07 10:46 | 2018-06-07 14:46 |  | 131.66d |
| 238 |  | Sh Pl Side Bevel Cutting | 4h | 2018-06-07 10:46 | 2018-06-07 14:46 | 236 | 131.66d |
| 239 |  | Sh Pl Side Bevel Cutting | 4h | 2018-06-07 10:46 | 2018-06-07 14:46 | 236 | 132.33d |
| 240 |  | Sh Pl Side Bevel Cutting | 3h | 2018-06-07 10:46 | 2018-06-07 13:46 | 236 | 136.18d |
| 241 | 4.3.13.4 | **Shell Plate Edge Preparation** | 0.44d | 2018-06-07 13:46 | 2018-06-07 17:16 |  | 131.79d |
| 242 |  | Sh-Bevel Grinding | 2.5h | 2018-06-07 14:46 | 2018-06-07 17:16 | 238 | 131.66d |
| 243 |  | Sh-Bevel Grinding | 2h | 2018-06-07 14:46 | 2018-06-07 16:46 | 239 | 132.33d |
| 244 |  | Sh-Bevel Grinding | 1h | 2018-06-07 13:46 | 2018-06-07 14:46 | 240 | 136.18d |
| 245 | 4.3.13.5 | **Shell Pre Bending** | 0.56d | 2018-06-07 14:46 | 2018-06-07 19:16 |  | 131.97d |
| 246 |  | Sh-Pre Bend | 2h | 2018-06-07 17:16 | 2018-06-07 19:16 | 242 | 131.66d |
| 247 |  | Sh-Pre Bend | 2h | 2018-06-07 16:46 | 2018-06-07 18:46 | 243 | 132.33d |
| 248 |  | Sh-Pre Bend | 2h | 2018-06-07 14:46 | 2018-06-07 16:46 | 244 | 136.18d |
| 249 | 4.3.13.6 | **Shell Pl Pre Bend Cut Off** | 0.38d | 2018-06-07 16:46 | 2018-06-07 19:46 |  | 131.97d |
| 250 |  | Sh-Pre Bend Cut Off | 0.5h | 2018-06-07 19:16 | 2018-06-07 19:46 | 246 | 131.66d |
| 251 |  | Sh-Pre Bend Cut Off | 0.5h | 2018-06-07 18:46 | 2018-06-07 19:16 | 247 | 132.33d |
| 252 |  | Sh-Pre Bend Cut Off | 1h | 2018-06-07 16:46 | 2018-06-07 17:46 | 248 | 136.18d |
| 253 | 4.3.13.7 | **Shell Plate Ls Ep** | 0.56d | 2018-06-07 17:46 | 2018-06-08 06:16 |  | 131.91d |
| 254 |  | Sh-Pre Bend Ls Ep | 2.5h | 2018-06-07 19:46 | 2018-06-08 06:16 | 250 | 131.66d |
| 255 |  | Sh-Pre Bend Ls Ep | 2h | 2018-06-07 19:16 | 2018-06-07 21:16 | 251 | 132.33d |
| 256 |  | Sh-Pre Bend Ls Ep | 1h | 2018-06-07 17:46 | 2018-06-07 18:46 | 252 | 136.18d |
| 257 | 4.3.13.8 | **Shell Rolling** | 0.94d | 2018-06-07 18:46 | 2018-06-08 10:16 |  | 132.1d |
| 258 |  | Sh-Rolling 1/3 | 4h | 2018-06-08 06:16 | 2018-06-08 10:16 | 254 | 131.66d |
| 259 |  | Sh-Rolling | 4h | 2018-06-07 21:16 | 2018-06-08 09:16 | 255 | 132.33d |
| 260 |  | Sh-Rolling | 4h | 2018-06-07 18:46 | 2018-06-08 06:46 | 256 | 136.18d |
| 261 | 4.3.13.9 | **Shell Cir Length & Ep Correction** | 0.67d | 2018-06-08 06:46 | 2018-06-08 12:08 |  | 132.1d |
| 262 |  | Sh-Ls Correction | 1.88h | 2018-06-08 10:16 | 2018-06-08 12:08 | 258 | 131.66d |
| 263 |  | Sh-Ls Correction | 1.5h | 2018-06-08 09:16 | 2018-06-08 10:46 | 259 | 132.33d |
| 264 |  | Sh-Ls Correction | 0.75h | 2018-06-08 06:46 | 2018-06-08 07:31 | 260 | 136.18d |
| 265 | 4.3.13.10 | **Shell Ls Seams Fit Up** | 0.89d | 2018-06-08 07:31 | 2018-06-08 14:38 |  | 132.24d |
| 266 |  | Sh-Ls Fit Up | 2.5h | 2018-06-08 12:08 | 2018-06-08 14:38 | 262 | 131.66d |
| 267 |  | Sh-Ls Fit Up | 2h | 2018-06-08 10:46 | 2018-06-08 12:46 | 263 | 132.33d |
| 268 |  | Sh-Ls Fit Up | 1h | 2018-06-08 07:31 | 2018-06-08 08:31 | 264 | 136.18d |
| 269 | 4.3.13.11 | **Sh Ls Welding Arrangement** | 0.92d | 2018-06-08 08:31 | 2018-06-08 15:53 |  | 132.43d |
| 270 |  | Sh-Ls Weld Arrangement | 1.25h | 2018-06-08 14:38 | 2018-06-08 15:53 | 266 | 131.66d |
| 271 |  | Sh-Ls Weld Arrangement | 1h | 2018-06-08 12:46 | 2018-06-08 13:46 | 267 | 132.33d |
| 272 |  | Sh-Ls Weld Arrangement | 0.5h | 2018-06-08 08:31 | 2018-06-08 09:01 | 268 | 136.18d |
| 273 | 4.3.13.12 | **Shell Long Seam Outer Welding** | 1.64d | 2018-06-08 09:01 | 2018-06-11 06:08 |  | 132.52d |
| 274 |  | Sh-Ls Welding- Top Side | 6.25h | 2018-06-08 15:53 | 2018-06-11 06:08 | 270 | 131.66d |
| 275 |  | Sh-Ls Welding- Top Side | 5h | 2018-06-08 13:46 | 2018-06-08 18:46 | 271 | 132.33d |
| 276 |  | Sh-Ls Welding- Top Side | 2.5h | 2018-06-08 09:01 | 2018-06-08 11:31 | 272 | 136.18d |
| 277 | 4.3.13.13 | **Sh Ls Back Chip** | 1.83d | 2018-06-08 11:31 | 2018-06-11 10:08 |  | 132.99d |
| 278 |  | Sh-Ls Welding- Back Chip | 4h | 2018-06-11 06:08 | 2018-06-11 10:08 | 274 | 131.66d |
| 279 |  | Sh-Ls Welding- Back Chip | 3h | 2018-06-08 18:46 | 2018-06-08 21:46 | 275 | 132.33d |
| 280 |  | Sh-Ls Welding- Back Chip | 2h | 2018-06-08 11:31 | 2018-06-08 13:31 | 276 | 136.18d |

| ID | WBS | Task | Duration | Start | Finish | Predecessors | Total float |
| --- | --- | --- | --- | --- | --- | --- | --- |
| 281 | 4.3.13.14 | **Sh Inner Ls Flush Grinding** | 1.89d | 2018-06-08 13:31 | 2018-06-11 12:38 |  | 133.24d |
| 282 |  | Sh Inner Flush Grinding | 2.5h | 2018-06-11 10:08 | 2018-06-11 12:38 | 278 | 131.66d |
| 283 |  | Sh Inner Flush Grinding | 1.5h | 2018-06-08 21:46 | 2018-06-11 07:16 | 279 | 132.33d |
| 284 |  | Sh Inner Flush Grinding | 1h | 2018-06-08 13:31 | 2018-06-08 14:31 | 280 | 136.18d |
| 285 | 4.3.13.15 | **Sh Ls Radiography** | 2.77d | 2018-06-08 14:31 | 2018-06-11 20:38 |  | 133.43d |
| 286 |  | Sh Ls Welding Rt | 1d | 2018-06-11 12:38 | 2018-06-11 20:38 | 282 | 131.66d |
| 287 |  | Sh Ls Welding Rt | 1d | 2018-06-11 07:16 | 2018-06-11 15:16 | 283 | 132.33d |
| 288 |  | Sh Ls Welding Rt | 1d | 2018-06-08 14:31 | 2018-06-11 06:31 | 284 | 136.18d |
| 289 | 4.3.13.16 | **Shell Re Rolling** | 2.27d | 2018-06-11 06:31 | 2018-06-12 08:38 |  | 133.43d |
| 290 |  | Sh Re Rolling | 4h | 2018-06-11 20:38 | 2018-06-12 08:38 | 286 | 131.66d |
| 291 |  | Sh Re Rolling | 4h | 2018-06-11 15:16 | 2018-06-11 19:16 | 287 | 132.33d |
| 292 |  | Sh Re Rolling | 4h | 2018-06-11 06:31 | 2018-06-11 10:31 | 288 | 136.18d |
| 293 | 4.3.13.17 | **Sh Plate Cs Ep Correction** | 2.14d | 2018-06-11 10:31 | 2018-06-12 11:38 |  | 133.43d |
| 294 |  | Sh Cir Ep Correction | 3h | 2018-06-12 08:38 | 2018-06-12 11:38 | 290 | 131.66d |
| 295 |  | Sh Cir Ep Correction | 3h | 2018-06-11 19:16 | 2018-06-12 06:16 | 291 | 132.33d |
| 296 |  | Sh Cir Ep Correction | 3h | 2018-06-11 10:31 | 2018-06-11 13:31 | 292 | 155.59d |
| 297 | 4.3.13.18 | **Sh Cir Seam First Fit Up** | 0.75d | 2018-06-12 11:38 | 2018-06-12 17:38 |  | 131.66d |
| 298 |  | Sh Cs Fit Up - [Ls1+Ls2] | 3h | 2018-06-12 11:38 | 2018-06-12 14:38 | 294, 295 | 131.66d |
| 299 |  | Sh Cs Tack Dp Check - [Ls1+Ls2] | 3h | 2018-06-12 14:38 | 2018-06-12 17:38 | 298 | 131.66d |
| 300 | 4.3.13.19 | **Sh Cir Seam First Welding** | 1.62d | 2018-06-12 17:38 | 2018-06-13 14:38 |  | 131.66d |
| 301 |  | Sh Cs Welding Transfere | 2h | 2018-06-12 17:38 | 2018-06-12 19:38 | 299 | 131.66d |
| 302 |  | Sh Cs Welding Outer [Ls1+Ls2] | 6h | 2018-06-12 19:38 | 2018-06-13 09:38 | 301 | 131.66d |
| 303 |  | Sh Cs Welding Back Chip [Ls1+Ls2] | 3h | 2018-06-13 09:38 | 2018-06-13 12:38 | 302 | 131.66d |
| 304 |  | Sh Cs Flush Grinding [Ls1+Ls2] | 2h | 2018-06-13 12:38 | 2018-06-13 14:38 | 303 | 131.66d |
| 305 | 4.3.13.20 | **Sh Cir Seam Second Fitup** | 0.75d | 2018-06-13 14:38 | 2018-06-13 20:38 |  | 131.66d |
| 306 |  | Sh Cs Fit Up - [Ls2+Ls3] | 3h | 2018-06-13 14:38 | 2018-06-13 17:38 | 304, 292 | 131.66d |
| 307 |  | Sh Cs Tack Dp Check - [Ls2+Ls3] | 3h | 2018-06-13 17:38 | 2018-06-13 20:38 | 306 | 131.66d |
| 308 | 4.3.13.21 | **Sh Cir Seam Second Welding** | 1.62d | 2018-06-13 20:38 | 2018-06-14 17:38 |  | 131.66d |
| 309 |  | Sh Cs Welding Transfere-[Ls2+Ls3] | 2h | 2018-06-13 20:38 | 2018-06-14 06:38 | 307 | 131.66d |
| 310 |  | Sh Cs Welding Outer [Ls2+Ls3] | 6h | 2018-06-14 06:38 | 2018-06-14 12:38 | 309 | 131.66d |
| 311 |  | Sh Cs Welding Back Chip [Ls2+Ls3] | 3h | 2018-06-14 12:38 | 2018-06-14 15:38 | 310 | 131.66d |
| 312 |  | Sh Cs Flush Grinding [Ls2+Ls3] | 2h | 2018-06-14 15:38 | 2018-06-14 17:38 | 311 | 131.66d |
| 313 | 4.3.13.22 | **Sh Final Length Correction** | 1.62d | 2018-06-14 17:38 | 2018-06-15 14:38 |  | 131.66d |
| 314 |  | Sh Length Marking | 5h | 2018-06-14 17:38 | 2018-06-15 06:38 | 312 | 131.66d |
| 315 |  | Length Cutting | 4h | 2018-06-15 06:38 | 2018-06-15 10:38 | 314 | 131.66d |
| 316 |  | Grinding & Ep | 4h | 2018-06-15 10:38 | 2018-06-15 14:38 | 315 | 131.66d |
| 317 | 4.3.13.23 | **Sh Cir Seam Flange 1 Fitup** | 0.75d | 2018-07-13 08:31 | 2018-07-13 14:31 |  | 99.84d |
| 318 |  | Sh Cs Fit Up Flg Cs1 | 3h | 2018-07-13 08:31 | 2018-07-13 11:31 | 32, 316 | 99.84d |
| 319 |  | Sh Cs Tack Dp Check Flg Cs1 | 3h | 2018-07-13 11:31 | 2018-07-13 14:31 | 318 | 99.84d |
| 320 | 4.3.13.24 | **Sh Cir Seam Flange 1 Welding** | 1.62d | 2018-07-13 14:31 | 2018-07-16 11:31 |  | 99.84d |
| 321 |  | Sh Cs Welding Transfere | 2h | 2018-07-13 14:31 | 2018-07-13 16:31 | 319 | 99.84d |
| 322 |  | Sh Cs Welding Outer Flg Cs1 | 6h | 2018-07-13 16:31 | 2018-07-16 06:31 | 321 | 99.84d |
| 323 |  | Sh Cs Welding Back Chip Flg Cs1 | 3h | 2018-07-16 06:31 | 2018-07-16 09:31 | 322 | 99.84d |
| 324 |  | Sh Cs Flush Grinding Flg Cs1 | 2h | 2018-07-16 09:31 | 2018-07-16 11:31 | 323 | 99.84d |
| 325 | 4.3.13.25 | **Sh Cs Fit Up Flg2** | 0.75d | 2018-07-13 08:31 | 2018-07-13 14:31 |  | 86.43d |
| 326 |  | Sh Cs Fit Up Flg 2 | 3h | 2018-07-13 08:31 | 2018-07-13 11:31 | 32, 316 | 86.43d |
| 327 |  | Sh Cs Tack Dp Check Flg2 | 3h | 2018-07-13 11:31 | 2018-07-13 14:31 | 326 | 86.43d |
| 328 | 4.3.13.26 | **Sh Cs Welding Flg2** | 1.62d | 2018-07-13 14:31 | 2018-07-16 11:31 |  | 86.43d |
| 329 |  | Sh Cs Welding Transfere Flg2 | 2h | 2018-07-13 14:31 | 2018-07-13 16:31 | 327 | 86.43d |
| 330 |  | Sh Cs Welding Outer Flg2 | 6h | 2018-07-13 16:31 | 2018-07-16 06:31 | 329 | 86.43d |
| 331 |  | Sh Cs Welding Back Chip Flg2 | 3h | 2018-07-16 06:31 | 2018-07-16 09:31 | 330 | 86.43d |
| 332 |  | Sh Cs Flush Grinding Flg2 | 2h | 2018-07-16 09:31 | 2018-07-16 11:31 | 331 | 86.43d |
| 333 | 4.3.13.27 | **Shell Noz Opnning** | 0.5d | 2018-07-16 11:31 | 2018-07-16 15:31 |  | 93.5d |
| 334 |  | Shell-Noz Openning-Top | 2h | 2018-07-16 11:31 | 2018-07-16 13:31 | 332 | 93.5d |
| 335 |  | Shell-Noz Openning-Bot | 2h | 2018-07-16 13:31 | 2018-07-16 15:31 | 334 | 93.5d |
| 336 | 4.3.13.28 | **Shell Noz Open Ep** | 0.25d | 2018-07-16 15:31 | 2018-07-16 17:31 |  | 93.5d |
| 337 |  | Shell -Noz Ep -N1 | 2h | 2018-07-16 15:31 | 2018-07-16 17:31 | 335 | 93.5d |
| 338 |  | Shell -Noz Ep-N2 | 2h | 2018-07-16 15:31 | 2018-07-16 17:31 | 335 | 95.22d |
| 339 | 4.3.13.29 | **Shell Noz Fit Up** | 0.25d | 2018-07-16 17:31 | 2018-07-16 19:31 |  | 93.5d |
| 340 |  | Shell-Noz Fit Up -N1 | 2h | 2018-07-16 17:31 | 2018-07-16 19:31 | 337 | 93.5d |
| 341 |  | Shell-Noz Fit Up -N2 | 2h | 2018-07-16 17:31 | 2018-07-16 19:31 | 338 | 95.22d |
| 342 | 4.3.13.30 | **Shell Noz Fit Up Insp** | 0.25d | 2018-07-16 19:31 | 2018-07-16 21:31 |  | 93.5d |
| 343 |  | Shell-Noz Inspn -N1 | 2h | 2018-07-16 19:31 | 2018-07-16 21:31 | 340 | 93.5d |
| 344 |  | Shell-Noz Inspn-N2 | 2h | 2018-07-16 19:31 | 2018-07-16 21:31 | 341 | 95.22d |
| 345 | 4.3.13.31 | **Shell Noz Welding** | 5.09d | 2018-07-16 21:31 | 2018-07-19 14:16 |  | 93.5d |
| 346 |  | Shell Noz Welding Arrangement | 4.5h | 2018-07-16 21:31 | 2018-07-17 10:01 | 343, 344 | 98.03d |
| 347 |  | Shell-Noz Welding -N1 | 4h | 2018-07-16 21:31 | 2018-07-17 09:31 | 343 | 93.5d |
| 348 |  | Shell Noz Welding-N2 | 4h | 2018-07-16 21:31 | 2018-07-17 09:31 | 344 | 95.22d |
| 349 |  | Shell Noz Root Dp Check - N1 | 3h | 2018-07-17 09:31 | 2018-07-17 12:31 | 347 | 93.5d |
| 350 |  | Shell Noz Root Dp Check - N2 | 3h | 2018-07-17 09:31 | 2018-07-17 12:31 | 348 | 95.22d |

| ID | WBS | Task | Duration | Start | Finish | Predecessors | Total float |
| --- | --- | --- | --- | --- | --- | --- | --- |
| 351 |  | Shell-Noz Inner Weld -N1 | 4h | 2018-07-17 12:31 | 2018-07-17 16:31 | 349 | 93.5d |
| 352 |  | Shell-Noz Inner Weld-N2 | 4h | 2018-07-17 12:31 | 2018-07-17 16:31 | 350 | 95.22d |
| 353 |  | Rf Pad Fit Up & Nozzle Fit Up - N1 | 5h | 2018-07-17 16:31 | 2018-07-17 21:31 | 351 | 93.5d |
| 354 |  | Rf Pad Fit Up & Nozzle Fit Up - N2 | 8h | 2018-07-17 16:31 | 2018-07-18 08:31 | 352 | 95.22d |
| 355 |  | Rf Pad Fit Up Welding - N1 | 10h | 2018-07-17 21:31 | 2018-07-18 15:31 | 353 | 93.5d |
| 356 |  | Rf Pad Fit Up Welding - N2 | 8h | 2018-07-18 08:31 | 2018-07-18 16:31 | 354 | 95.22d |
| 357 |  | Noz Welding Flush Grind- 6"Nb | 1.5h | 2018-07-18 15:31 | 2018-07-18 17:01 | 355 | 93.5d |
| 358 |  | Shell Noz Welding Arrangement | 2.25h | 2018-07-18 17:01 | 2018-07-18 19:16 | 357 | 93.5d |
| 359 |  | Shell-Noz Welding - MP connections | 4h | 2018-07-18 19:16 | 2018-07-19 07:16 | 358 | 93.5d |
| 360 |  | Shell Noz Welding-N7 & N8 - 2" SCH 160 | 4h | 2018-07-19 07:16 | 2018-07-19 11:16 | 359 | 93.5d |
| 361 |  | Shell Noz Root Dp Check | 3h | 2018-07-19 11:16 | 2018-07-19 14:16 | 360 | 93.5d |
| 362 | 4.3.13.32 | **Sh Saddle Welding** | 13.42d | 2018-07-16 11:31 | 2018-07-24 06:51 |  | 86.43d |
| 363 |  | Sh-Saddle Pad Fit Up | 5h | 2018-07-16 11:31 | 2018-07-16 16:31 | 328 | 86.43d |
| 364 |  | Sh-Saddle Pad Welding | 18.67h | 2018-07-16 16:31 | 2018-07-17 19:11 | 363 | 86.43d |
| 365 |  | Sh-Saddle Matching | 22.67h | 2018-07-17 19:11 | 2018-07-19 09:51 | 364 | 86.43d |
| 366 |  | Sh-Saddle Fit Up | 17.33h | 2018-07-19 09:51 | 2018-07-20 11:11 | 365 | 86.43d |
| 367 |  | Sh-Saddle Welding | 34.67h | 2018-07-20 11:11 | 2018-07-23 13:51 | 366 | 86.43d |
| 368 |  | Sh-Saddle Dress Up | 9h | 2018-07-23 13:51 | 2018-07-24 06:51 | 367 | 86.43d |
| 369 | 4.3.13.33 | **Sh Davit Arm Welding** | 2.38d | 2018-07-16 11:31 | 2018-07-17 14:31 |  | 94.84d |
| 370 |  | Sh-Davit Arm Arm Match | 5h | 2018-07-16 11:31 | 2018-07-16 16:31 | 328 | 94.84d |
| 371 |  | Sh-Davit Arm Fit Up | 5h | 2018-07-16 16:31 | 2018-07-16 21:31 | 370 | 94.84d |
| 372 |  | Sh-Davit Arm Welding | 9h | 2018-07-16 21:31 | 2018-07-17 14:31 | 371 | 94.84d |
| 373 | 4.3.13.34 | **Sh Nde Clearence** | 2.62d | 2018-07-17 14:31 | 2018-07-18 19:31 |  | 94.84d |
| 374 |  | Sh-Sh Nde Clearence | 13h | 2018-07-17 14:31 | 2018-07-18 11:31 | 369 | 94.84d |
| 375 |  | Tpi Inspection | 1d | 2018-07-18 11:31 | 2018-07-18 19:31 | 374 | 94.84d |
| 376 | 4.3.14 | **Channel Fabrication** | 13.06d | 2018-06-04 17:01 | 2018-06-21 08:19 |  | 69.06d |
| 377 | 4.3.14.1 | **Channel Fabrication** | 4.88d | 2018-06-04 17:01 | 2018-06-07 08:01 |  | 138.24d |
| 378 |  | Ch Plate Trnasfer | 4d | 2018-06-04 17:01 | 2018-06-06 17:01 | 33 | 138.24d |
| 379 |  | Ch-Marking | 1.5h | 2018-06-06 17:01 | 2018-06-06 18:31 | 378 | 138.24d |
| 380 |  | Ch-Cutting | 1h | 2018-06-06 18:31 | 2018-06-06 19:31 | 379 | 138.24d |
| 381 |  | Ch Pl Side Grinding | 1h | 2018-06-06 19:31 | 2018-06-06 20:31 | 380 | 138.24d |
| 382 |  | Ch-Bevelling Cir Side | 2h | 2018-06-06 20:31 | 2018-06-07 06:31 | 381 | 138.24d |
| 383 |  | Ch Ep Grinding | 1.5h | 2018-06-07 06:31 | 2018-06-07 08:01 | 382 | 138.24d |
| 384 | 4.3.14.2 | **Channel Sh Rolling** | 1.41d | 2018-06-07 08:01 | 2018-06-07 19:19 |  | 138.24d |
| 385 |  | Ch-Pre Bend | 4h | 2018-06-07 08:01 | 2018-06-07 12:01 | 377 | 138.24d |
| 386 |  | Ch-Pre Bend Cut Off | 1.3h | 2018-06-07 12:01 | 2018-06-07 13:19 | 385 | 138.24d |
| 387 |  | Ch Ls Beveling | 2h | 2018-06-07 13:19 | 2018-06-07 15:19 | 386 | 138.24d |
| 388 |  | Ch-Rolling | 4h | 2018-06-07 15:19 | 2018-06-07 19:19 | 387 | 138.24d |
| 389 | 4.3.14.3 | **Ch Shell Ls Fit Up** | 0.5d | 2018-06-07 19:19 | 2018-06-08 07:19 |  | 138.24d |
| 390 |  | Ch-Ls Correction | 2h | 2018-06-07 19:19 | 2018-06-07 21:19 | 384 | 138.24d |
| 391 |  | Ch-Ls Fit Up | 2h | 2018-06-07 21:19 | 2018-06-08 07:19 | 390 | 138.24d |
| 392 | 4.3.14.4 | **Ch Shell Ls Welding** | 1.56d | 2018-06-08 07:19 | 2018-06-08 19:49 |  | 138.24d |
| 393 |  | Ch-Ls Weld Arrangement | 3h | 2018-06-08 07:19 | 2018-06-08 10:19 | 389 | 138.24d |
| 394 |  | Ch-Ls Welding- Top Side | 2h | 2018-06-08 10:19 | 2018-06-08 12:19 | 393 | 138.24d |
| 395 |  | Ch-Ls Welding- Back Chip | 2h | 2018-06-08 12:19 | 2018-06-08 14:19 | 394 | 138.24d |
| 396 |  | Ch-Ls Innner Flush Grind | 1.5h | 2018-06-08 14:19 | 2018-06-08 15:49 | 395 | 138.24d |
| 397 |  | Ch Re Rolling | 4h | 2018-06-08 15:49 | 2018-06-08 19:49 | 396 | 138.24d |
| 398 | 4.3.14.5 | **Ch Ls Welding Radiography** | 1d | 2018-06-08 19:49 | 2018-06-11 11:49 |  | 138.24d |
| 399 |  | Ch Ls Welding Rt | 1d | 2018-06-08 19:49 | 2018-06-11 11:49 | 392 | 138.24d |
| 400 | 4.3.14.6 | **Ch Cs Flg 1 Fit Up** | 1.38d | 2018-06-11 11:49 | 2018-06-12 06:49 |  | 152.68d |
| 401 |  | Ch Cir Ep Correction | 3h | 2018-06-11 11:49 | 2018-06-11 14:49 | 398 | 152.68d |
| 402 |  | Ch Cs Fit Up Flg1 | 3h | 2018-06-11 14:49 | 2018-06-11 17:49 | 401 | 152.68d |
| 403 |  | Ch Cs Tack Dp Check Flg1 | 5h | 2018-06-11 17:49 | 2018-06-12 06:49 | 402 | 152.68d |
| 404 | 4.3.14.7 | **Ch Cs Flg 1 Welding** | 1.75d | 2018-06-12 06:49 | 2018-06-12 20:49 |  | 152.68d |
| 405 |  | Ch Cs Welding Transfere | 3h | 2018-06-12 06:49 | 2018-06-12 09:49 | 400 | 152.68d |
| 406 |  | Ch Cs Welding Outer Flg1 | 6h | 2018-06-12 09:49 | 2018-06-12 15:49 | 405 | 152.68d |
| 407 |  | Ch Cs Welding Back Chip Flg1 | 3h | 2018-06-12 15:49 | 2018-06-12 18:49 | 406 | 152.68d |
| 408 |  | Ch Cs Flush Grinding Flg1 | 2h | 2018-06-12 18:49 | 2018-06-12 20:49 | 407 | 152.68d |
| 409 | 4.3.14.8 | **Ch Cs Flg 2 Fit Up** | 1.06d | 2018-06-11 11:49 | 2018-06-11 20:19 |  | 138.24d |
| 410 |  | Ch Length Cutting | 1.5h | 2018-06-11 11:49 | 2018-06-11 13:19 | 398 | 138.24d |
| 411 |  | Ch Cir Ep Correction | 1h | 2018-06-11 13:19 | 2018-06-11 14:19 | 410 | 138.24d |
| 412 |  | Ch Cs Fit Up Flg2 | 3h | 2018-06-11 14:19 | 2018-06-11 17:19 | 411 | 138.24d |
| 413 |  | Ch Cs Tack Dp Check Flg1 | 3h | 2018-06-11 17:19 | 2018-06-11 20:19 | 412 | 138.24d |
| 414 | 4.3.14.9 | **Ch Cs Flg 2 Welding** | 1.75d | 2018-06-11 20:19 | 2018-06-12 18:19 |  | 138.24d |
| 415 |  | Ch Cs Welding Transfere Flg2 | 3h | 2018-06-11 20:19 | 2018-06-12 07:19 | 409 | 138.24d |
| 416 |  | Ch Cs Welding Outer Flg2 | 6h | 2018-06-12 07:19 | 2018-06-12 13:19 | 415 | 138.24d |
| 417 |  | Ch Cs Welding Back Chip Flg2 | 3h | 2018-06-12 13:19 | 2018-06-12 16:19 | 416 | 138.24d |
| 418 |  | Ch Cs Flush Grinding Flg2 | 2h | 2018-06-12 16:19 | 2018-06-12 18:19 | 417 | 138.24d |
| 419 | 4.3.14.10 | **Ch Cs Flg 1 & 2 Welding Rt** | 1d | 2018-06-12 18:19 | 2018-06-13 10:19 |  | 138.24d |
| 420 |  | Ch Cs Welding Rt | 1d | 2018-06-12 18:19 | 2018-06-13 10:19 | 414 | 138.24d |

| ID | WBS | Task | Duration | Start | Finish | Predecessors | Total float |
| --- | --- | --- | --- | --- | --- | --- | --- |
| 421 | 4.3.14.11 | **Channel Noz Marking** | 1.25d | 2018-06-13 10:19 | 2018-06-13 20:19 |  | 138.24d |
| 422 |  | Ch- Noz Ireientation Nkg | 5h | 2018-06-13 10:19 | 2018-06-13 15:19 | 419 | 138.24d |
| 423 |  | Ch-Noz Marking- 6"Nb - 2 Nos | 5h | 2018-06-13 15:19 | 2018-06-13 20:19 | 422 | 138.24d |
| 424 | 4.3.14.12 | **Ch Noz Opnning** | 0.19d | 2018-06-13 20:19 | 2018-06-13 21:49 |  | 138.24d |
| 425 |  | Ch-Noz Openning-Top | 1.5h | 2018-06-13 20:19 | 2018-06-13 21:49 | 421 | 138.24d |
| 426 |  | Ch-Noz Openning-Bot | 1.5h | 2018-06-13 20:19 | 2018-06-13 21:49 | 421 | 138.24d |
| 427 | 4.3.14.13 | **Ch Noz Open Ep** | 0.25d | 2018-06-13 21:49 | 2018-06-14 07:49 |  | 138.24d |
| 428 |  | Ch-Noz Ep -N5 | 2h | 2018-06-13 21:49 | 2018-06-14 07:49 | 425 | 138.24d |
| 429 |  | Ch-Noz Ep-N6 | 2h | 2018-06-13 21:49 | 2018-06-14 07:49 | 426 | 138.24d |
| 430 | 4.3.14.14 | **Ch Noz Fit Up** | 0.25d | 2018-06-14 07:49 | 2018-06-14 09:49 |  | 138.24d |
| 431 |  | Ch-Noz Fit Up -N5 | 2h | 2018-06-14 07:49 | 2018-06-14 09:49 | 428 | 138.24d |
| 432 |  | Ch-Noz Fit Up -N6 | 2h | 2018-06-14 07:49 | 2018-06-14 09:49 | 429 | 138.24d |
| 433 | 4.3.14.15 | **Ch Noz Fit Up Insp** | 0.25d | 2018-06-14 09:49 | 2018-06-14 11:49 |  | 138.24d |
| 434 |  | Ch-Noz Inspn -N5 | 2h | 2018-06-14 09:49 | 2018-06-14 11:49 | 431 | 138.24d |
| 435 |  | Ch-Noz Inspn-N6 | 2h | 2018-06-14 09:49 | 2018-06-14 11:49 | 432 | 138.24d |
| 436 | 4.3.14.16 | **Ch Noz Welding** | 3.31d | 2018-06-14 11:49 | 2018-06-16 06:19 |  | 138.24d |
| 437 |  | Ch Noz Welding Arrangement | 2.25h | 2018-06-14 11:49 | 2018-06-14 14:04 | 433 | 141.28d |
| 438 |  | Ch-Noz Welding -N5 | 4h | 2018-06-14 11:49 | 2018-06-14 15:49 | 434 | 138.24d |
| 439 |  | Ch-Noz Welding-N6 | 4h | 2018-06-14 11:49 | 2018-06-14 15:49 | 435 | 138.24d |
| 440 |  | Ch Noz Root Dp Check | 3h | 2018-06-14 15:49 | 2018-06-14 18:49 | 438, 439 | 138.24d |
| 441 |  | Ch-Noz Inner Weld -N5 | 4h | 2018-06-14 18:49 | 2018-06-15 06:49 | 440 | 138.43d |
| 442 |  | Ch-Noz Inner Weld-N6 | 4h | 2018-06-14 18:49 | 2018-06-15 06:49 | 440 | 138.24d |
| 443 |  | Rf Pad Fit Up & Nozzle Fit Up - N5 | 5h | 2018-06-15 06:49 | 2018-06-15 11:49 | 441 | 138.43d |
| 444 |  | Rf Pad Fit Up & Nozzle Fit Up - N6 | 5h | 2018-06-15 06:49 | 2018-06-15 11:49 | 442 | 138.24d |
| 445 |  | Rf Pad Fit Up Welding - N5 | 9h | 2018-06-15 11:49 | 2018-06-15 20:49 | 443 | 138.43d |
| 446 |  | Rf Pad Fit Up Welding - N6 | 9h | 2018-06-15 11:49 | 2018-06-15 20:49 | 444 | 138.24d |
| 447 |  | Noz Welding Flush Grind- 16"Nb | 1.5h | 2018-06-15 20:49 | 2018-06-16 06:19 | 446 | 138.24d |
| 448 | 4.3.14.17 | **Channel Pp Plate Fit Up** | 1.19d | 2018-06-16 06:19 | 2018-06-16 15:49 |  | 138.24d |
| 449 |  | Ch- Pp Plate Fit Up | 6.5h | 2018-06-16 06:19 | 2018-06-16 12:49 | 436 | 138.24d |
| 450 |  | Ch- Pp Plate Fit Up Insp | 3h | 2018-06-16 12:49 | 2018-06-16 15:49 | 449 | 138.24d |
| 451 | 4.3.14.18 | **Ch Pp Plate Welding** | 7.06d | 2018-06-16 15:49 | 2018-06-21 08:19 |  | 138.24d |
| 452 |  | Ch- Pp Plate Welding | 49h | 2018-06-16 15:49 | 2018-06-20 16:49 | 448 | 138.24d |
| 453 |  | Ch- Pp Plate Face Grinding | 7.5h | 2018-06-20 16:49 | 2018-06-21 08:19 | 452 | 138.24d |
| 454 | 4.3.14.19 | **Channel Davit Arm Welding** | 2.5d | 2018-06-16 15:49 | 2018-06-18 19:49 |  | 141.56d |
| 455 |  | Ch-Davit Arm Arm Match | 5h | 2018-06-16 15:49 | 2018-06-16 20:49 | 448 | 141.56d |
| 456 |  | Ch-Davit Arm Fit Up | 5h | 2018-06-16 20:49 | 2018-06-18 09:49 | 455 | 141.56d |
| 457 |  | Ch-Davit Arm Welding | 10h | 2018-06-18 09:49 | 2018-06-18 19:49 | 456 | 141.56d |
| 458 | 4.3.14.20 | **Channel Nde & Pwht** | 1.25d | 2018-06-18 19:49 | 2018-06-19 13:49 |  | 141.56d |
| 459 |  | Ch All Welding Dressup & Dp Check | 9h | 2018-06-18 19:49 | 2018-06-19 12:49 | 454 | 141.56d |
| 460 |  | Ch-Ch Nde Clearence | 1h | 2018-06-19 12:49 | 2018-06-19 13:49 | 459 | 141.56d |
| 461 | 4.3.15 | **Barrel Fabrication** | 11.06d | 2018-06-04 17:01 | 2018-06-18 21:45 |  | 71.06d |
| 462 | 4.3.15.1 | **Barrel Fabrication** | 4.09d | 2018-06-04 17:01 | 2018-06-06 17:46 |  | 142.78d |
| 463 |  | Barrel Plate Trnasfer | 1h | 2018-06-04 17:01 | 2018-06-04 18:01 | 35 | 142.78d |
| 464 |  | Barrel Sh Plate Cutting & Ep | 4h | 2018-06-04 18:01 | 2018-06-05 06:01 | 463 | 142.78d |
| 465 |  | Barrel-Marking | 3.75h | 2018-06-05 06:01 | 2018-06-05 09:46 | 464 | 142.78d |
| 466 |  | Barrel-Cutting | 2h | 2018-06-05 09:46 | 2018-06-05 11:46 | 465 | 142.78d |
| 467 |  | Barrel Pl Side Grinding | 4h | 2018-06-05 11:46 | 2018-06-05 15:46 | 466 | 142.78d |
| 468 |  | Barrel-Bevelling Cir Side | 12h | 2018-06-05 15:46 | 2018-06-06 11:46 | 467 | 142.78d |
| 469 |  | Ch Ep Grinding | 6h | 2018-06-06 11:46 | 2018-06-06 17:46 | 468 | 142.78d |
| 470 | 4.3.15.2 | **Bar Shell Rolling** | 1.5d | 2018-06-06 17:46 | 2018-06-07 13:46 |  | 142.78d |
| 471 |  | Barrel-Pre Bend | 4h | 2018-06-06 17:46 | 2018-06-06 21:46 | 462 | 142.78d |
| 472 |  | Barrel-Pre Bend Cut Off | 1.5h | 2018-06-06 21:46 | 2018-06-07 07:16 | 471 | 142.78d |
| 473 |  | Barrel -Pre Ls Ep | 2.5h | 2018-06-07 07:16 | 2018-06-07 09:46 | 472 | 142.78d |
| 474 |  | Barrel-Rolling | 4h | 2018-06-07 09:46 | 2018-06-07 13:46 | 473 | 142.78d |
| 475 | 4.3.15.3 | **Barrel Shell Ls Fit Up** | 0.56d | 2018-06-07 13:46 | 2018-06-07 18:16 |  | 142.78d |
| 476 |  | Barrel-Ls Correction | 2.5h | 2018-06-07 13:46 | 2018-06-07 16:16 | 470 | 142.78d |
| 477 |  | Barrel-Ls Fit Up | 2h | 2018-06-07 16:16 | 2018-06-07 18:16 | 476 | 142.78d |
| 478 | 4.3.15.4 | **Barrel Shell Ls Welding** | 1.75d | 2018-06-07 18:16 | 2018-06-08 16:16 |  | 142.78d |
| 479 |  | Barrel-Ls Weld Arrangement | 3h | 2018-06-07 18:16 | 2018-06-07 21:16 | 475 | 142.78d |
| 480 |  | Barrel-Ls Welding- Top Side | 3h | 2018-06-07 21:16 | 2018-06-08 08:16 | 479 | 142.78d |
| 481 |  | Barrel-Ls Welding- Back Chip | 2h | 2018-06-08 08:16 | 2018-06-08 10:16 | 480 | 142.78d |
| 482 |  | Barrel-Ls Innner Flush Grind | 2h | 2018-06-08 10:16 | 2018-06-08 12:16 | 481 | 142.78d |
| 483 |  | Barrel Re Rolling | 4h | 2018-06-08 12:16 | 2018-06-08 16:16 | 482 | 142.78d |
| 484 | 4.3.15.5 | **Barrel Ls Welding Rt** | 1d | 2018-06-08 16:16 | 2018-06-11 08:16 |  | 142.78d |
| 485 |  | Bar Ls Welding Rt | 1d | 2018-06-08 16:16 | 2018-06-11 08:16 | 478 | 142.78d |
| 486 | 4.3.15.6 | **Barrel Shell Cs Flg 1 Fit Up** | 0.88d | 2018-06-11 08:16 | 2018-06-11 15:16 |  | 142.78d |
| 487 |  | Barrel Cir Ep Correction | 1h | 2018-06-11 08:16 | 2018-06-11 09:16 | 485 | 142.78d |
| 488 |  | Barrel Cs Fit Up Flg1 | 3h | 2018-06-11 09:16 | 2018-06-11 12:16 | 487 | 142.78d |
| 489 |  | Barrel Cs Tack Dp Check Flg1 | 3h | 2018-06-11 12:16 | 2018-06-11 15:16 | 488 | 142.78d |
| 490 | 4.3.15.7 | **Barrel Sh Cs Flg 1 Welding** | 2.12d | 2018-06-11 15:16 | 2018-06-12 16:16 |  | 142.78d |

| ID | WBS | Task | Duration | Start | Finish | Predecessors | Total float |
| --- | --- | --- | --- | --- | --- | --- | --- |
| 491 |  | Barrel Cs Welding Transfere | 3h | 2018-06-11 15:16 | 2018-06-11 18:16 | 486 | 142.78d |
| 492 |  | Barrel Cs Welding Outer Flg1 | 7h | 2018-06-11 18:16 | 2018-06-12 09:16 | 491 | 142.78d |
| 493 |  | Barrel Cs Welding Back Chip Flg1 | 3h | 2018-06-12 09:16 | 2018-06-12 12:16 | 492 | 142.78d |
| 494 |  | Barrel Cs Inner Welding Flg 1 | 2h | 2018-06-12 12:16 | 2018-06-12 14:16 | 493 | 142.78d |
| 495 |  | Barrel Cs Flush Grinding Flg1 | 2h | 2018-06-12 14:16 | 2018-06-12 16:16 | 494 | 142.78d |
| 496 | 4.3.15.8 | **Barrel Cs Fit Up With Dish** | 1.06d | 2018-06-12 16:16 | 2018-06-13 08:46 | 490 | 142.78d |
| 497 |  | Barrel Length Cutting | 1.5h | 2018-06-12 16:16 | 2018-06-12 17:46 | 490 | 142.78d |
| 498 |  | Barrel Ep | 1h | 2018-06-12 17:46 | 2018-06-12 18:46 | 497 | 142.78d |
| 499 |  | Barrel Cs Fit Up Dish | 3h | 2018-06-12 18:46 | 2018-06-12 21:46 | 498 | 142.78d |
| 500 |  | Barrel Cs Tack Dp Check Dish | 3h | 2018-06-12 21:46 | 2018-06-13 08:46 | 499 | 142.78d |
| 501 | 4.3.15.9 | **Barrel Cs Welding With Dish** | 2.75d | 2018-06-13 08:46 | 2018-06-14 14:46 | 496 | 142.78d |
| 502 |  | Barrel Cs Welding Transfere Dish | 3h | 2018-06-13 08:46 | 2018-06-13 11:46 | 496 | 142.78d |
| 503 |  | Barrel Cs Welding Outer Dish | 7h | 2018-06-13 11:46 | 2018-06-13 18:46 | 502 | 142.78d |
| 504 |  | Barrel Cs Welding Back Chip Dish | 3h | 2018-06-13 18:46 | 2018-06-13 21:46 | 503 | 142.78d |
| 505 |  | Barrel Cs Inner Welding Dish | 7h | 2018-06-13 21:46 | 2018-06-14 12:46 | 504 | 142.78d |
| 506 |  | Barrel Cs Flush Grinding Dish | 2h | 2018-06-14 12:46 | 2018-06-14 14:46 | 505 | 142.78d |
| 507 | 4.3.15.10 | **Barrel Cs Flg 1 & Dish Welding Rt** | 1d | 2018-06-14 14:46 | 2018-06-15 06:46 | 501 | 142.78d |
| 508 |  | Barrel Cs Welding Rt | 1d | 2018-06-14 14:46 | 2018-06-15 06:46 | 501 | 142.78d |
| 509 | 4.3.15.11 | **Barrel Noz Oreination Marking** | 0.75d | 2018-06-15 06:46 | 2018-06-15 12:46 | 507 | 142.78d |
| 510 |  | Barrel- Noz Ireientation Nkg | 4h | 2018-06-15 06:46 | 2018-06-15 10:46 | 507 | 142.78d |
| 511 |  | Barrel-Noz Marking- 2 | 2h | 2018-06-15 10:46 | 2018-06-15 12:46 | 510 | 142.78d |
| 512 | 4.3.15.12 | **Barrel Nozzle Oppening** | 0.5d | 2018-06-15 12:46 | 2018-06-15 16:46 | 509 | 142.78d |
| 513 |  | Barrel-Noz Openning-40 Nb - Lwn | 4h | 2018-06-15 12:46 | 2018-06-15 16:46 | 509 | 142.78d |
| 514 |  | Barrel-Noz Openning-40 Nb - Lwn | 4h | 2018-06-15 12:46 | 2018-06-15 16:46 | 509 | 142.78d |
| 515 | 4.3.15.13 | **Barrel Noz Edge Preparation** | 0.38d | 2018-06-15 16:46 | 2018-06-15 19:46 | 512 | 142.78d |
| 516 |  | Barrel-Noz Openning-40 Nb - Lwn | 3h | 2018-06-15 16:46 | 2018-06-15 19:46 | 512 | 142.78d |
| 517 |  | Barrel-Noz Openning-40 Nb - Lwn | 3h | 2018-06-15 16:46 | 2018-06-15 19:46 | 512 | 142.78d |
| 518 | 4.3.15.14 | **Barrel Nozzzle Fit Up** | 0.25d | 2018-06-15 19:46 | 2018-06-15 21:46 | 515 | 142.78d |
| 519 |  | Barrel-Noz Fit Up -N4 | 2h | 2018-06-15 19:46 | 2018-06-15 21:46 | 515 | 142.78d |
| 520 |  | Barrel-Noz Fit Up -N3 | 2h | 2018-06-15 19:46 | 2018-06-15 21:46 | 515 | 142.78d |
| 521 | 4.3.15.15 | **Barrel Noz Fit Up Inspection** | 0.19d | 2018-06-16 08:30 | 2018-06-16 10:00 | 518 | 142.44d |
| 522 |  | Barrel-Noz Inspn -N3 | 1.5h | 2018-06-16 08:30 | 2018-06-16 10:00 | 519 | 142.44d |
| 523 |  | Barrel-Noz Inspn-N4 | 1.5h | 2018-06-16 08:30 | 2018-06-16 10:00 | 520 | 142.44d |
| 524 | 4.3.15.16 | **Barrel Nozzle Welding** | 2.84d | 2018-06-16 10:00 | 2018-06-18 16:45 | 521 | 142.56d |
| 525 |  | Barrel Noz Welding Arrangement | 1.5h | 2018-06-16 10:00 | 2018-06-16 11:30 | 521 | 142.56d |
| 526 |  | Barrel-Noz Welding -N3 | 1.5h | 2018-06-16 11:30 | 2018-06-16 13:00 | 525 | 142.56d |
| 527 |  | Barrel-Noz Welding-N4 | 1.5h | 2018-06-16 13:00 | 2018-06-16 14:30 | 526 | 142.56d |
| 528 |  | Barrel Noz Root Dp | 2h | 2018-06-16 14:30 | 2018-06-16 16:30 | 527 | 142.56d |
| 529 |  | Barrel-Noz Inner Welding -N3 | 1.5h | 2018-06-16 16:30 | 2018-06-16 18:00 | 528 | 142.56d |
| 530 |  | Barrel-Noz Inner Welding-N4 | 1.5h | 2018-06-16 18:00 | 2018-06-16 19:30 | 529 | 142.56d |
| 531 |  | Shell Noz Welding Arrangement | 2.25h | 2018-06-16 19:30 | 2018-06-16 21:45 | 530 | 142.56d |
| 532 |  | Shell-Noz Welding - MP connections | 4h | 2018-06-16 21:45 | 2018-06-18 09:45 | 531 | 142.56d |
| 533 |  | Shell Noz Welding-N9 & N10 - 1.5" SCH 160 | 4h | 2018-06-18 09:45 | 2018-06-18 13:45 | 532 | 142.56d |
| 534 |  | Shell Noz Root Dp Check | 3h | 2018-06-18 13:45 | 2018-06-18 16:45 | 533 | 142.56d |
| 535 | 4.3.15.17 | **Barrel Noz Inner Weld Flush Grind** | 0.62d | 2018-06-18 16:45 | 2018-06-18 21:45 | 524 | 142.56d |
| 536 |  | Barrel All Welding Dressup & Dp | 4h | 2018-06-18 16:45 | 2018-06-18 20:45 | 524 | 142.56d |
| 537 |  | Barrel-Barrel Nde Clearence | 1h | 2018-06-18 20:45 | 2018-06-18 21:45 | 536 | 142.56d |
| 538 | 4.3.16 | **Floating Head Fabrication** | 12.06d | 2018-07-25 17:01 | 2018-08-09 21:31 |  | 29.06d |
| 539 | 4.3.16.1 | **Floating Head Dish Forming** | 5d | 2018-07-25 17:01 | 2018-07-30 09:01 | 41 | 58.59d |
| 540 |  | Fl Head Dish Pl Issue | 4d | 2018-07-25 17:01 | 2018-07-27 17:01 | 41 | 58.59d |
| 541 |  | Fl Head Pl Marking | 1.5h | 2018-07-27 17:01 | 2018-07-27 18:31 | 540 | 58.59d |
| 542 |  | Fl Head Pl Stamping | 2h | 2018-07-27 18:31 | 2018-07-27 20:31 | 541 | 58.59d |
| 543 |  | Fl Head Pl Cutting | 1.5h | 2018-07-27 20:31 | 2018-07-30 06:01 | 542 | 58.59d |
| 544 |  | Fl Head Pl Grinding | 3h | 2018-07-30 06:01 | 2018-07-30 09:01 | 543 | 58.59d |
| 545 | 4.3.16.2 | **Fl Head Formig** | 11d | 2018-07-30 09:01 | 2018-08-04 17:01 | 539 | 58.59d |
| 546 |  | Fl Head Forming | 10d | 2018-07-30 09:01 | 2018-08-04 09:01 | 539 | 58.59d |
| 547 |  | Fl Head Profile Check | 1d | 2018-08-04 09:01 | 2018-08-04 17:01 | 546 | 58.59d |
| 548 | 4.3.16.3 | **Fl Head Cutting** | 0.75d | 2018-08-04 17:01 | 2018-08-06 07:01 | 545 | 58.59d |
| 549 |  | Fl Head Marking | 4h | 2018-08-04 17:01 | 2018-08-04 21:01 | 545 | 58.59d |
| 550 |  | Fl Head Cutting | 2h | 2018-08-04 21:01 | 2018-08-06 07:01 | 549 | 58.59d |
| 551 | 4.3.16.4 | **Fl Head Ep** | 0.5d | 2018-08-06 07:01 | 2018-08-06 11:01 | 548 | 58.59d |
| 552 |  | Fl Head Grinding | 4h | 2018-08-06 07:01 | 2018-08-06 11:01 | 548 | 58.59d |
| 553 | 4.3.16.5 | **Fl Head Fit Up** | 0.5d | 2018-08-06 11:01 | 2018-08-06 15:01 | 551 | 58.59d |
| 554 |  | Fl Head Fit Up | 4h | 2018-08-06 11:01 | 2018-08-06 15:01 | 551 | 58.59d |
| 555 | 4.3.16.6 | **Fl Head Welding** | 5.25d | 2018-08-06 15:01 | 2018-08-09 09:01 | 553 | 58.59d |
| 556 |  | Fl Head Welding | 18h | 2018-08-06 15:01 | 2018-08-07 17:01 | 553 | 58.59d |
| 557 |  | Fl Head Pp Plate Fit Up | 5h | 2018-08-07 17:01 | 2018-08-08 06:01 | 556 | 58.59d |
| 558 |  | Fl Head Pp Pl Welding | 10h | 2018-08-08 06:01 | 2018-08-08 16:01 | 557 | 58.59d |
| 559 |  | Fl Head Pp Pl Level Grinding | 7h | 2018-08-08 16:01 | 2018-08-09 07:01 | 558 | 58.59d |
| 560 |  | Fl Head Inspection | 2h | 2018-08-09 07:01 | 2018-08-09 09:01 | 559 | 58.59d |

| ID | WBS | Task | Duration | Start | Finish | Predecessors | Total float |
| --- | --- | --- | --- | --- | --- | --- | --- |
| 561 | 4.3.16.7 | **Fl Head Sr & Machining** | 1.56d | 2018-08-09 09:01 | 2018-08-09 21:31 | 555 | 58.59d |
| 562 |  | Fl Head Sr | 3h | 2018-08-09 09:01 | 2018-08-09 12:01 | 555 | 58.59d |
| 563 |  | Fl Head Final Machining | 4h | 2018-08-09 12:01 | 2018-08-09 16:01 | 562 | 58.59d |
| 564 |  | Fl Head Hole Marking | 0.5h | 2018-08-09 16:01 | 2018-08-09 16:31 | 563 | 58.59d |
| 565 |  | Fl Head Hole Drilling | 4h | 2018-08-09 16:31 | 2018-08-09 20:31 | 564 | 58.59d |
| 566 |  | Fl Head Final Inspection | 1h | 2018-08-09 20:31 | 2018-08-09 21:31 | 565 | 58.59d |
| 567 | 4.3.17 | **Tube Bundle Fabrication** | 14.82d | 2018-07-27 21:31 | 2018-08-17 16:06 |  | 0d |
| 568 | 4.3.17.1 | **Tube Bundle Assy** | 1.19d | 2018-07-27 21:31 | 2018-07-30 15:01 | 75, 85 | 0d |
| 569 |  | Frame Set Up & Tube Sht Set Up | 1.5h | 2018-07-27 21:31 | 2018-07-30 07:01 | 75, 85 | 0d |
| 570 |  | Skeliton Assy- 19 Baffle | 8h | 2018-07-30 07:01 | 2018-07-30 15:01 | 569 | 0d |
| 571 | 4.3.17.2 | **Tube Insert** | 3.5d | 2018-07-30 15:01 | 2018-08-01 11:01 | 568 | 0d |
| 572 |  | Tube Insert | 28h | 2018-07-30 15:01 | 2018-08-01 11:01 | 568 | 0d |
| 573 | 4.3.17.3 | **Sliding Strip Fit Up Welding** | 5.38d | 2018-08-01 11:01 | 2018-08-04 06:01 | 571 | 0d |
| 574 |  | Sealing Strip Fit Up | 7h | 2018-08-01 11:01 | 2018-08-01 18:01 | 571 | 0d |
| 575 |  | Sliding Strip Welding | 18h | 2018-08-01 18:01 | 2018-08-02 20:01 | 574 | 0d |
| 576 |  | Seal/Slid Trip Weld Grind | 18h | 2018-08-02 20:01 | 2018-08-04 06:01 | 575 | 0d |
| 577 | 4.3.17.4 | **Tube Bundle Insert** | 3.19d | 2018-08-04 06:01 | 2018-08-06 15:31 | 573 | 0d |
| 578 |  | Tube Bundle Insert In Shell | 8h | 2018-08-04 06:01 | 2018-08-04 14:01 | 573 | 0d |
| 579 |  | Fl Head Tube Sht Fixing | 10h | 2018-08-04 14:01 | 2018-08-06 08:01 | 578 | 0d |
| 580 |  | Test Flg & Gland Assy | 7.5h | 2018-08-06 08:01 | 2018-08-06 15:31 | 579 | 0d |
| 581 | 4.3.17.5 | **Tube Expansion In Grooves** | 3.24d | 2018-08-06 15:31 | 2018-08-08 09:26 | 577 | 0d |
| 582 |  | Tube Exp - St Side - 1 Stage | 6.75h | 2018-08-06 15:31 | 2018-08-07 06:16 | 577 | 0d |
| 583 |  | Tube Exp - Fl Side - 1 Stage | 4.5h | 2018-08-07 06:16 | 2018-08-07 10:46 | 582 | 0d |
| 584 |  | Tube Trimming Fl Side | 8h | 2018-08-07 10:46 | 2018-08-07 18:46 | 583 | 0d |
| 585 |  | Tube Exp Both Side - 4 Stage | 6.67h | 2018-08-07 18:46 | 2018-08-08 09:26 | 584 | 0d |
| 586 | 4.3.17.6 | **Tube Exp- Pnuematic Test** | 1.21d | 2018-08-08 09:26 | 2018-08-08 19:06 | 581 | 0d |
| 587 |  | Tube Exp Pnuematic Test | 6.67h | 2018-08-08 09:26 | 2018-08-08 16:06 | 581 | 0d |
| 588 |  | Pnuematic Test Tpi Witness | 1h | 2018-08-08 16:06 | 2018-08-08 17:06 | 587 | 0d |
| 589 |  | Cleaning | 2h | 2018-08-08 17:06 | 2018-08-08 19:06 | 588 | 0d |
| 590 | 4.3.17.7 | **Tube Tube Sheet Welding- Ft Side** | 7d | 2018-08-08 19:06 | 2018-08-14 11:06 | 586 | 0d |
| 591 |  | Tube Welding - St Side Root | 19h | 2018-08-08 19:06 | 2018-08-10 06:06 | 586 | 0d |
| 592 |  | Tube Welding - St Side Root Dp | 9h | 2018-08-10 06:06 | 2018-08-10 15:06 | 591 | 0d |
| 593 |  | Tube Welding - St Side Final Weld | 19h | 2018-08-10 15:06 | 2018-08-13 18:06 | 592 | 0d |
| 594 |  | Tube Welding - St Side Final Dp | 9h | 2018-08-13 18:06 | 2018-08-14 11:06 | 593 | 0d |
| 595 | 4.3.17.8 | **Tube To Tube Sheet Welding - Fl Head Side** | 4.62d | 2018-08-14 11:06 | 2018-08-17 16:06 | 590 | 0d |
| 596 |  | Tube Welding - Flh Side Root | 19h | 2018-08-14 11:06 | 2018-08-16 14:06 | 590 | 2.25d |
| 597 |  | Tube Welding - Flh Side Root Dp | 9h | 2018-08-14 11:06 | 2018-08-14 20:06 | 590 | 0d |
| 598 |  | Tube Welding - Flh Side Final Weld | 19h | 2018-08-14 20:06 | 2018-08-17 07:06 | 597 | 0d |
| 599 |  | Tube Welding - Flh Side Final Dp | 9h | 2018-08-17 07:06 | 2018-08-17 16:06 | 598 | 0d |
| 600 | 4.3.18 | **Hydro Testing** | 16.4d | 2018-08-17 16:06 | 2018-09-07 10:16 |  | 0d |
| 601 | 4.3.18.1 | **Shell Side Hydro** | 5.42d | 2018-08-17 16:06 | 2018-08-21 11:26 |  | 0d |
| 602 |  | Inserting the Tube bundle in shell | 12h | 2018-08-17 16:06 | 2018-08-18 12:06 | 595 | 0d |
| 603 |  | Shell Side Water Filling | 5h | 2018-08-18 12:06 | 2018-08-18 17:06 | 602 | 0d |
| 604 |  | Shell Side Hydro | 17.33h | 2018-08-18 17:06 | 2018-08-20 18:26 | 603 | 0d |
| 605 |  | Shell Side Tpi Witness | 1h | 2018-08-20 18:26 | 2018-08-20 19:26 | 604 | 0d |
| 606 |  | De Watering & Dismantle Of Gland | 8h | 2018-08-20 19:26 | 2018-08-21 11:26 | 605 | 0d |
| 607 | 4.3.18.2 | **Channel Side Hydro - Open bundle** | 12.85d | 2018-08-21 11:26 | 2018-08-29 18:16 |  | 0d |
| 608 |  | Tube bundle to Channel fixing | 25.5h | 2018-08-21 11:26 | 2018-08-22 20:56 | 601 | 0d |
| 609 |  | Assembly | 17.33h | 2018-08-22 20:56 | 2018-08-24 06:16 | 608 | 0d |
| 610 |  | Water Fill | 1d | 2018-08-24 06:16 | 2018-08-24 14:16 | 609 | 0d |
| 611 |  | Ch Side Hydro | 24h | 2018-08-24 14:16 | 2018-08-28 06:16 | 610 | 0d |
| 612 |  | Ch Side Hydro Tpi Witness | 2d | 2018-08-28 06:16 | 2018-08-29 06:16 | 611 | 0d |
| 613 |  | De Watering | 12h | 2018-08-29 06:16 | 2018-08-29 18:16 | 612 | 0d |
| 614 | 4.3.18.3 | **Barrel shell Hydro - Stacked** | 12d | 2018-08-29 18:16 | 2018-09-05 18:16 |  | 0d |
| 615 |  | Barrel Assy | 32h | 2018-08-29 18:16 | 2018-08-31 18:16 | 607 | 0d |
| 616 |  | Water Fill | 12h | 2018-08-31 18:16 | 2018-09-01 14:16 | 615 | 0d |
| 617 |  | Shell Side Hydro - Stacked | 24h | 2018-09-01 14:16 | 2018-09-04 06:16 | 616 | 0d |
| 618 |  | Shell Side Hydro- Stacked Tpi Witness | 2d | 2018-09-04 06:16 | 2018-09-05 06:16 | 617 | 0d |
| 619 |  | De Watering | 12h | 2018-09-05 06:16 | 2018-09-05 18:16 | 618 | 0d |
| 620 | 4.3.18.4 | **Nitorgen Purging** | 3d | 2018-09-05 18:16 | 2018-09-07 10:16 | 614 | 0d |
| 621 |  | N2 Gas Purging | 24h | 2018-09-05 18:16 | 2018-09-07 10:16 | 614 | 0d |
| 622 | 4.3.19 | **Painting** | 6d | 2018-09-07 10:16 | 2018-09-12 10:16 | 620 | 10d |
| 623 |  | Primer Painting | 2d | 2018-09-07 10:16 | 2018-09-10 10:16 | 620 | 10d |
| 624 |  | Intermediate Painting | 2d | 2018-09-10 10:16 | 2018-09-11 10:16 | 623 | 10d |
| 625 |  | Top Coat Painting | 2d | 2018-09-11 10:16 | 2018-09-12 10:16 | 624 | 10d |
| 626 | 4.3.20 | **133-EE-1008 Closure** | 8d | 2018-09-07 10:16 | 2018-09-19 10:16 |  | 0d |
| 627 |  | Store Handover | 1d | 2018-09-07 10:16 | 2018-09-10 10:16 | 600 | 0d |
| 628 |  | Transport Equipment to Delivery Location | 5d | 2018-09-10 10:16 | 2018-09-17 10:16 | 627 | 0d |
| 629 |  | Final Documentation Preperation & Review | 5d | 2018-09-07 10:16 | 2018-09-15 10:16 | 600 | 1.75d |
| 630 |  | Final Documentation Submission | 2h | 2018-09-15 10:16 | 2018-09-15 12:16 | 629 | 1.75d |

| ID | Task | Duration | Start | Finish | Predecessors | Total float |
| --- | --- | --- | --- | --- | --- | --- |
| 631 | Warranty guarantee Submission | 1d | 2018-09-15 12:16 | 2018-09-17 12:16 | 630 | 1.75d |
| 632 | Invoice Submission | 2d | 2018-09-17 10:16 | 2018-09-19 10:16 | 628 | 0d |

## Version 2 (saved 2018-05-24, file 4220-N1011.mpp)

Note of the change: third commit

Last finish 2018-09-19 → 2018-09-29 (+10d). Complete tasks 27 → 29.

Added:

| ID | Task | Duration | Start | Finish | Predecessors | Resources |
| --- | --- | --- | --- | --- | --- | --- |
| 1 | **4220-N1011** | 281d | 2017-10-03 08:30 A | 2018-09-29 17:45 |  |  |
| 30 | **Raw Material Receipt** | 116.06d | 2018-02-08 08:00 A | 2018-07-06 09:00 |  |  |
| 31 | Shell Plate | 1d | 2018-06-04 09:00 | 2018-06-04 17:00 | 7FS+79d |  |
| 32 | Shell Girth Flange | 1d | 2018-06-07 17:00 | 2018-06-08 09:00 | 8FS+110d |  |
| 33 | Channel Plate | 1d | 2018-06-04 09:00 | 2018-06-04 17:00 | 7FS+79d |  |
| 34 | Channel Girth Flange | 1d | 2018-06-07 17:00 | 2018-06-08 09:00 | 10FS+110d |  |
| 35 | Barrel Sheel Plate | 1d | 2018-06-04 09:00 | 2018-06-04 17:00 | 7FS+79d |  |
| 36 | Barrel Girth Flange | 1d | 2018-06-07 17:00 | 2018-06-08 09:00 | 12FS+110d |  |
| 37 | Barrel Dish | 1d | 2018-06-04 09:00 | 2018-06-04 17:00 | 7FS+79d |  |
| 38 | Tube Sheet-1 | 1d | 2018-06-20 17:00 | 2018-06-21 09:00 | 14FS+130d |  |
| 39 | Tube Sheet -2 | 1d | 2018-06-20 17:00 | 2018-06-21 09:00 | 15FS+130d |  |
| 40 | Floating Head Flg | 1d | 2018-06-20 17:00 | 2018-06-21 09:00 | 16FS+130d |  |
| 41 | Floating Head Dish | 1d | 2018-07-05 17:00 | 2018-07-06 09:00 | 17FS+130d |  |
| 42 | Backing Ring | 1d | 2018-06-20 17:00 | 2018-06-21 09:00 | 18FS+130d |  |
| 43 | Baffle Plate | 1d | 2018-06-04 09:00 | 2018-06-04 17:00 | 7FS+79d |  |
| 44 | Sealing Strip Plate | 1d | 2018-06-04 09:00 | 2018-06-04 17:00 | 7FS+79d |  |
| 45 | Sliding Strip Plate | 1d | 2018-06-04 09:00 | 2018-06-04 17:00 | 7FS+79d |  |
| 46 | Seal Rod | 3.12d | 2018-02-08 08:00 A | 2018-02-09 17:00 A | 22FS+45d |  |
| 47 | Noz pipe | 1d | 2018-05-19 17:00 | 2018-05-21 09:00 | 23FS+80d |  |
| 48 | Tube | 1d | 2018-06-20 17:30 | 2018-06-21 09:30 | 24FS+110d |  |
| 49 | Spacer Tube | 1d | 2018-06-20 17:30 | 2018-06-21 09:30 | 25FS+110d |  |
| 50 | Tie Rod | 1d | 2018-05-19 17:30 | 2018-05-21 09:30 | 26FS+60d |  |
| 51 | Test Ring & Test Flg | 1d | 2018-06-07 17:00 | 2018-06-08 09:00 | 27FS+110d |  |
| 54 | **Dish Forming** | 15.06d | 2018-06-04 17:00 | 2018-06-22 19:00 |  |  |
| 56 | Bar-Dish Blank Marking | 4h | 2018-06-04 21:00 | 2018-06-05 09:00 | 55 | Helper; Fitter |
| 66 | TPI Inspection | 4h | 2018-06-22 08:00 | 2018-06-22 12:00 | 65 | Fitter |
| 71 | **Tube Sheet Machining 1 off 2** | 2.25d | 2018-06-21 09:00 | 2018-06-25 11:00 |  |  |
| 73 | Tube Sheet M/C 1/2 | 2d | 2018-06-21 11:00 | 2018-06-25 11:00 | 72 | SC (Work) |
| 74 | **Tube Sheet Drilling 1 off 2** | 21.69d | 2018-06-25 11:00 | 2018-07-20 22:00 |  |  |
| 75 | Tube Sheet Drilling 1/2 | 305h | 2018-06-25 11:00 | 2018-07-18 12:00 | 71 | SC (Work) |
| 76 | Exp Groove+Welding Groove 1/2 | 2d | 2018-07-18 12:00 | 2018-07-19 12:00 | 75 | SC (Work) |
| 77 | Tie Rod, Pulling, Lifting Hole 1/2 | 4h | 2018-07-19 12:00 | 2018-07-19 16:00 | 76 | SC (Work) |
| 78 | Pass Partition Groove M/C 1/2 | 15h | 2018-07-19 16:00 | 2018-07-20 15:00 | 77 | SC (Work) |
| 79 | Cleaning ,Go/No Go Check 1/2 | 3h | 2018-07-20 15:00 | 2018-07-20 18:00 | 78 | Helper; Fitter |
| 80 | Final Inspection 1/2 | 4h | 2018-07-20 18:00 | 2018-07-20 22:00 | 79 | Helper; Fitter |
| 81 | **Tube Sheet Machining 2 off 2** | 1.25d | 2018-06-21 09:00 | 2018-06-22 11:00 |  |  |
| 83 | Tube Sheet M/C 2/2 | 8h | 2018-06-21 11:00 | 2018-06-22 11:00 | 82 | SC (Work) |
| 84 | **Tube Sheet Drilling 2 off 2** | 42.62d | 2018-06-22 11:00 | 2018-08-16 17:00 |  |  |
| 85 | Tube Sheet Drilling 2/2 | 305h | 2018-06-22 11:00 | 2018-08-09 12:00 | 81 | SC (Work) |
| 86 | Exp Groove+Welding Groove 2/2 | 2d | 2018-08-09 12:00 | 2018-08-13 12:00 | 85 | SC (Work) |
| 87 | Tie Rod, Pulling, Lifting Hole 2/2 | 4h | 2018-08-13 12:00 | 2018-08-13 17:00 | 86 | SC (Work) |
| 88 | Pass Partition Groove M/C 2/2 | 10h | 2018-08-13 17:00 | 2018-08-16 10:00 | 87 | SC (Work) |
| 89 | Cleaning ,Go/No Go Check 2/2 | 4h | 2018-08-16 10:00 | 2018-08-16 15:00 | 88 | Helper; Fitter |
| 90 | Final Inspection 2/2 | 2h | 2018-08-16 15:00 | 2018-08-16 17:00 | 89 | Helper; Fitter |
| 91 | **Nozzle Fab** | 11.38d | 2018-05-21 09:00 | 2018-05-28 20:00 |  |  |
| 92 | **Sh Noz Pipe Marking** | 0.25d | 2018-05-21 09:00 | 2018-05-21 11:00 |  |  |
| 93 | 10"NB- 2 Nos | 2h | 2018-05-21 09:00 | 2018-05-21 11:00 | 47 | Helper; Fitter |
| 94 | 1.5" NB Mp Con - 2 Nos | 1h | 2018-05-21 09:00 | 2018-05-21 10:00 | 47 | Helper; Forging Std (Cost) [0.1%]; Pipe (Cost) [0.1%]; Fitter |
| 95 | Inspection of Marking | 1h | 2018-05-21 10:00 | 2018-05-21 11:00 | 94 | Helper; Fitter |
| 96 | **Sh Noz Pipe Cutting** | 0.5d | 2018-05-21 11:00 | 2018-05-21 15:00 |  |  |
| 97 | 10"Nb- 2 Nos | 2h | 2018-05-21 11:00 | 2018-05-21 13:00 | 92 | Helper; Gas Cutter |
| 98 | 1.5" Mp Con - 2 Nos | 1h | 2018-05-21 13:00 | 2018-05-21 14:00 | 97 | Helper; Gas Cutter |
| 99 | Inspection | 1h | 2018-05-21 14:00 | 2018-05-21 15:00 | 98 | Helper; Gas Cutter |
| 100 | **Sh Noz Pipe Ep** | 1.38d | 2018-05-21 15:00 | 2018-05-22 10:00 |  |  |
| 101 | 10"Nb- 2 Nos | 6h | 2018-05-21 15:00 | 2018-05-21 21:00 | 96 | Helper; Gas Cutter |
| 102 | 1.5" Mp Con - 2 Nos | 4h | 2018-05-21 21:00 | 2018-05-22 09:00 | 101 | Helper; Gas Cutter |
| 103 | Inspection | 1h | 2018-05-22 09:00 | 2018-05-22 10:00 | 102 | Helper; Gas Cutter |
| 104 | **Sh Noz+Flg Fiitup** | 0.75d | 2018-05-22 10:00 | 2018-05-22 16:00 |  |  |
| 105 | 10"NB - 2 Nos | 3h | 2018-05-22 10:00 | 2018-05-22 13:00 | 100 | SMAW Welder; Helper; Fitter [200%] |
| 106 | 1.5" Mp Con - 2 Nos | 2h | 2018-05-22 13:00 | 2018-05-22 15:00 | 105 | SMAW Welder; Helper; Fitter [200%] |
| 107 | Inspection | 1h | 2018-05-22 15:00 | 2018-05-22 16:00 | 106 | SMAW Welder; Helper; Fitter [200%] |
| 108 | **Sh Noz Pipe+Flg Welding** | 1.62d | 2018-05-22 16:00 | 2018-05-23 13:00 |  |  |
| 109 | 10"Nb- 2 Nos | 8h | 2018-05-22 16:00 | 2018-05-23 08:00 | 104 | Helper; SMAW Welder |
| 110 | 1.5" Mp Con - 2 Nos | 4h | 2018-05-23 08:00 | 2018-05-23 12:00 | 109 | Helper; SMAW Welder |
| 111 | Inspection | 1h | 2018-05-23 12:00 | 2018-05-23 13:00 | 110 | Helper; SMAW Welder |
| 112 | **Sh Noz Pipe Profile Marking** | 0.75d | 2018-05-23 13:00 | 2018-05-23 19:00 |  |  |
| 113 | 10"Nb- 2 Nos | 3h | 2018-05-23 13:00 | 2018-05-23 16:00 | 108 | Helper; Fitter |
| 114 | 1.5" Mp Con - 2 Nos | 2h | 2018-05-23 16:00 | 2018-05-23 18:00 | 113 | Helper; Fitter |
| 115 | Inspection | 1h | 2018-05-23 18:00 | 2018-05-23 19:00 | 114 | Helper; Fitter |
| 116 | **Sh Nozzle Pipe Profile Cutting** | 0.5d | 2018-05-23 19:00 | 2018-05-24 07:00 |  |  |
| 117 | 10"Nb- 2 Nos | 2h | 2018-05-23 19:00 | 2018-05-23 21:00 | 112 | Helper; Grinder |
| 118 | 1.5" Mp Con - 2 Nos | 1h | 2018-05-23 21:00 | 2018-05-23 22:00 | 117 | Helper; Grinder |
| 119 | Inspection | 1h | 2018-05-24 06:00 | 2018-05-24 07:00 | 118 | Helper; Grinder |
| 120 | **Sh Nozzle Pipe Profile Ep** | 0.62d | 2018-05-24 07:00 | 2018-05-24 12:00 |  |  |
| 121 | 10"Nb- 2 Nos | 2h | 2018-05-24 07:00 | 2018-05-24 09:00 | 116 | Helper; Grinder |
| 122 | 1.5" Mp Con - 2 Nos | 2h | 2018-05-24 09:00 | 2018-05-24 11:00 | 121 | Helper; Grinder |
| 123 | Inspection | 1h | 2018-05-24 11:00 | 2018-05-24 12:00 | 122 | Helper; Grinder |
| 124 | **Ch Noz Pipe Marking** | 0.44d | 2018-05-24 12:00 | 2018-05-24 15:30 |  |  |
| 125 | 12"Nb- 2 Nos | 2h | 2018-05-24 12:00 | 2018-05-24 14:00 | 120 | Helper; Fitter |
| 126 | 1.5" Mp Con - 2 Nos | 0.5h | 2018-05-24 14:00 | 2018-05-24 14:30 | 125 | Helper; Fitter |
| 127 | Inspection | 1h | 2018-05-24 14:30 | 2018-05-24 15:30 | 126 | Helper; Fitter |
| 128 | **Ch Noz Pipe Cutting** | 0.5d | 2018-05-24 15:30 | 2018-05-24 19:30 |  |  |
| 129 | 12"Nb- 2 Nos | 2h | 2018-05-24 15:30 | 2018-05-24 17:30 | 124 | Helper; Gas Cutter |
| 130 | 1.5" Mp Con - 2 Nos | 1h | 2018-05-24 17:30 | 2018-05-24 18:30 | 129 | Helper; Gas Cutter |
| 131 | Inspection | 1h | 2018-05-24 18:30 | 2018-05-24 19:30 | 130 | Helper; Gas Cutter |
| 132 | **Ch Noz Pipe Ep** | 0.75d | 2018-05-24 19:30 | 2018-05-25 09:30 |  |  |
| 133 | 12"Nb- 2 Nos | 4h | 2018-05-24 19:30 | 2018-05-25 07:30 | 128 | Helper; Grinder |
| 134 | 1.5" Mp Con - 2 Nos | 1h | 2018-05-25 07:30 | 2018-05-25 08:30 | 133 | Helper; Grinder |
| 135 | Inspection | 1h | 2018-05-25 08:30 | 2018-05-25 09:30 | 134 | Helper; Grinder |
| 136 | **Ch Noz+Flg Fit Up** | 0.75d | 2018-05-25 09:30 | 2018-05-25 15:30 |  |  |
| 137 | 12"Nb- 2 Nos | 4h | 2018-05-25 09:30 | 2018-05-25 13:30 | 132 | SMAW Welder; Helper; Fitter [200%] |
| 138 | 1.5" Mp Con - 2 Nos | 1h | 2018-05-25 13:30 | 2018-05-25 14:30 | 137 | SMAW Welder; Helper; Fitter [200%] |
| 139 | Inspection | 1h | 2018-05-25 14:30 | 2018-05-25 15:30 | 138 | SMAW Welder; Helper; Fitter [200%] |
| 140 | **Ch Noz Pipe+Flg Welding** | 1.12d | 2018-05-25 15:30 | 2018-05-28 08:30 |  |  |
| 141 | 12"Nb- 2 Nos | 6h | 2018-05-25 15:30 | 2018-05-25 21:30 | 136 | Helper; SMAW Welder |
| 142 | 1.5" Mp Con - 2 Nos | 2h | 2018-05-25 21:30 | 2018-05-28 07:30 | 141 | Helper; SMAW Welder |
| 143 | Inspection | 1h | 2018-05-28 07:30 | 2018-05-28 08:30 | 142 | Helper; SMAW Welder |
| 144 | **Ch Noz Pipe Profile Marking** | 0.5d | 2018-05-28 08:30 | 2018-05-28 12:30 |  |  |
| 145 | 12"Nb- 2 Nos | 2h | 2018-05-28 08:30 | 2018-05-28 10:30 | 140 | Helper; Fitter |
| 146 | 1.5" Mp Con - 2 Nos | 1h | 2018-05-28 10:30 | 2018-05-28 11:30 | 145 | Helper; Fitter |
| 147 | Inspection | 1h | 2018-05-28 11:30 | 2018-05-28 12:30 | 146 | Helper; Fitter |
| 148 | **Ch Nozzle Pipe Profile Cutting** | 0.5d | 2018-05-28 12:30 | 2018-05-28 16:30 |  |  |
| 149 | 12"Nb- 2 Nos | 2h | 2018-05-28 12:30 | 2018-05-28 14:30 | 144 | Helper; Fitter |
| 150 | 1.5" Mp Con - 2 Nos | 1h | 2018-05-28 14:30 | 2018-05-28 15:30 | 149 | Helper; Fitter |
| 151 | Inspection | 1h | 2018-05-28 15:30 | 2018-05-28 16:30 | 150 | Helper; Fitter |
| 152 | **Ch Nozzle Pipe Profile Ep** | 0.44d | 2018-05-28 16:30 | 2018-05-28 20:00 |  |  |
| 153 | 12"Nb- 2 Nos | 2h | 2018-05-28 16:30 | 2018-05-28 18:30 | 148 | Helper; Grinder |
| 154 | 1.5" Mp Con - 2 Nos | 1h | 2018-05-28 18:30 | 2018-05-28 19:30 | 153 | Helper; Grinder |
| 155 | Inspection | 0.5h | 2018-05-28 19:30 | 2018-05-28 20:00 | 154 | Helper; Grinder |
| 156 | **Saddle & Other** | 28.06d | 2018-06-06 09:00 | 2018-06-25 09:30 |  |  |
| 157 | **Saddle Fabrrication** | 1.25d | 2018-06-06 09:00 | 2018-06-06 19:00 |  |  |
| 162 | **Sadlle Plate Cutting** | 1.62d | 2018-06-06 19:00 | 2018-06-07 16:00 |  |  |
| 166 | Grinding Of Above | 5h | 2018-06-07 11:00 | 2018-06-07 16:00 | 165 | Grinder [200%] |
| 174 | Pipe Marking | 3h | 2018-06-20 07:00 | 2018-06-20 10:00 | 173 | Helper; Fitter |
| 178 | Pipe Cutting | 3.5h | 2018-06-20 12:30 | 2018-06-20 16:00 | 177 | Helper; Gas Cutter |
| 180 | Pipe Grinding | 7h | 2018-06-20 16:45 | 2018-06-21 07:45 | 179 | Helper; Fitter |
| 181 | Support Pl Grinding | 1.25h | 2018-06-21 07:45 | 2018-06-21 09:00 | 180 | Grinder |
| 183 | Pipe Fit Up | 3h | 2018-06-21 10:00 | 2018-06-21 13:00 | 182 | Helper; SMAW Welder; Fitter |
| 184 | Pipe Welding | 8h | 2018-06-21 13:00 | 2018-06-21 21:00 | 183 | Helper; SMAW Welder |
| 186 | Support Pl Welding | 4h | 2018-06-22 07:00 | 2018-06-22 11:00 | 185 | Helper; Fitter |
| 200 | **Insulation Ring Prparation** | 0.5d | 2018-06-22 21:30 | 2018-06-25 09:30 |  |  |
| 201 | Insulaion Ring Marking | 1h | 2018-06-22 21:30 | 2018-06-25 06:30 | 197 | Helper; Plate (Cost) [0.1%]; Fitter |
| 202 | Insulaion Ring Cutting | 1h | 2018-06-25 06:30 | 2018-06-25 07:30 | 201 | Helper; Gas Cutter |
| 203 | Insulaion Ring Hole Marking | 1h | 2018-06-25 07:30 | 2018-06-25 08:30 | 202 | Helper; Fitter |
| 204 | Insulaion Ring Hole Drilling | 1h | 2018-06-25 08:30 | 2018-06-25 09:30 | 203 | Helper; Fitter |
| 212 | Baffle Pl Stacking Per 100mm | 0.5h | 2018-06-05 21:00 | 2018-06-05 21:30 | 211 | Helper; Fitter |
| 216 | Baffle De Stacking | 0.5h | 2018-06-08 21:30 | 2018-06-08 22:00 | 213 | Helper; Fitter |
| 217 | Baffle Chamfering (70% of TS Holes*No of Baffles) | 14h | 2018-06-11 06:00 | 2018-06-11 20:00 | 216 | Fitter |
| 221 | Baffle Hole Re Drill (Use 40% of Holes in Qty) | 14h | 2018-06-12 14:00 | 2018-06-13 12:00 | 220 | SC (Work) |
| 222 | Baffle Od Machining (100mm L * 700Ø = 3hrs) | 2d | 2018-06-13 12:00 | 2018-06-14 12:00 | 221 | SC (Work) |
| 223 | Baffle Cleaning (100mm L * 700Ø = 3hrs) | 6h | 2018-06-14 12:00 | 2018-06-14 18:00 | 222 | Helper [300%] |
| 230 | Support Pl Stacking | 2h | 2018-06-15 12:00 | 2018-06-15 14:00 | 229 | Helper; Fitter |
| 233 | **Sup Plate De Stacking & Chamfering** | 1.75d | 2018-06-16 14:00 | 2018-06-18 12:00 |  |  |
| 234 | Support De Stacking | 4h | 2018-06-16 14:00 | 2018-06-16 18:00 | 231 | Helper; Fitter |
| 243 | Length Cutting 237 Nos | 8h | 2018-05-22 18:00 | 2018-05-23 10:00 | 242 | Helper; Fitter |
| 244 | Length Machining | 2d | 2018-05-23 10:00 | 2018-05-24 10:00 | 243 | Lathe Operator |
| 260 | **Seal Rod Preparation** | 2.75d | 2018-06-12 17:00 | 2018-06-14 07:00 |  |  |
| 261 | Seal Rod Issuenece | 8h | 2018-06-12 17:00 | 2018-06-13 09:00 | 46FS+190d | Rod (Cost) [0.1%]; Store |
| 262 | Seal Rod Marking | 2h | 2018-06-13 09:00 | 2018-06-13 11:00 | 261 | Helper; Fitter |
| 263 | Seal Rod Cutting | 4h | 2018-06-13 11:00 | 2018-06-13 15:00 | 262 | Helper; Fitter |
| 264 | Seal Rod Bend Removal | 8h | 2018-06-13 15:00 | 2018-06-14 07:00 | 263 | Helper [200%]; Fitter |
| 292 | Sh-Rolling 1/4 | 4h | 2018-06-07 10:00 | 2018-06-07 14:00 | 287 | Helper; Fitter [200%] |
| 315 | **Sh Ls Inner Welding** | 1.78d | 2018-06-13 09:00 | 2018-06-14 07:15 |  |  |
| 316 | Sh-Ls Inner Welding | 4.75h | 2018-06-13 09:00 | 2018-06-13 13:45 | 311 | Helper; SMAW Welder |
| 317 | Sh-Ls Inner Welding | 4.75h | 2018-06-13 13:45 | 2018-06-13 18:30 | 316 | Helper; SMAW Welder |
| 318 | Sh-Ls Inner Welding | 4.75h | 2018-06-13 18:30 | 2018-06-14 07:15 | 317 | Helper; SMAW Welder |
| 336 | Sh Cs Fit Up [LS1+LS2] | 4h | 2018-06-16 17:15 | 2018-06-16 21:15 | 331 | Helper; SMAW Welder; Fitter [200%] |
| 337 | Sh Cs Tack Dp Check [LS1+LS2] | 1h | 2018-06-16 21:15 | 2018-06-18 06:15 | 336 | Helper; Fitter |
| 340 | Sh Cs Welding Outer [LS1+LS2] | 4.75h | 2018-06-18 08:15 | 2018-06-18 13:00 | 339 | Helper; SMAW Welder |
| 341 | Sh Cs Welding Back Chip [LS1+LS2] | 2h | 2018-06-18 13:00 | 2018-06-18 15:00 | 340 | Grinder |
| 342 | Sh Cs Inner Welding [LS1+LS2] | 4.75h | 2018-06-18 15:00 | 2018-06-18 19:45 | 341 | Helper; SMAW Welder |
| 343 | Sh Cs Flush Grinding [LS1+LS2] | 2h | 2018-06-18 19:45 | 2018-06-18 21:45 | 342 | Grinder |
| 345 | Sh Cs Fit Up [LS2+LS3] | 4h | 2018-06-18 21:45 | 2018-06-19 09:45 | 338 | Helper; SMAW Welder; Fitter [200%] |
| 346 | Sh Cs Tack Dp Check [LS2+LS3] | 1h | 2018-06-19 09:45 | 2018-06-19 10:45 | 345 | Helper; Fitter |
| 348 | Sh Cs Welding Transfere [LS2+LS3] | 1h | 2018-06-19 10:45 | 2018-06-19 11:45 | 344 | Helper; Fitter |
| 349 | Sh Cs Welding Outer [LS2+LS3] | 4.75h | 2018-06-19 11:45 | 2018-06-19 16:30 | 348 | Helper; SMAW Welder |
| 350 | Sh Cs Welding Back Chip [LS2+LS3] | 2h | 2018-06-19 16:30 | 2018-06-19 18:30 | 349 | Grinder |
| 351 | Sh Cs Inner Welding [LS2+LS3] | 4.75h | 2018-06-19 18:30 | 2018-06-20 07:15 | 350 | Helper; SMAW Welder |
| 352 | Sh Cs Flush Grinding [LS2+LS3] | 2h | 2018-06-20 07:15 | 2018-06-20 09:15 | 351 | Grinder |
| 357 | **Sh Cir Seam Fitup Flg1** | 0.62d | 2018-06-20 19:15 | 2018-06-21 08:15 |  |  |
| 358 | Sh Cs Fit Up Flg CS1 | 4h | 2018-06-20 19:15 | 2018-06-21 07:15 | 353, 32 | Helper; SMAW Welder; Forging Non-Std (Cost) [0.1%]; Fitter [200%] |
| 359 | Sh Cs Tack Dp Check Flg CS1 | 1h | 2018-06-21 07:15 | 2018-06-21 08:15 | 358 | Helper; Fitter |
| 360 | **Sh Cir Seam Welding Flg1** | 1.94d | 2018-06-21 08:15 | 2018-06-22 07:45 |  |  |
| 362 | Sh Cs Welding Outer Flg1 | 4.75h | 2018-06-21 10:15 | 2018-06-21 15:00 | 361 | Helper; SMAW Welder |
| 363 | Sh Cs Welding Back Chip Flg1 | 2h | 2018-06-21 15:00 | 2018-06-21 17:00 | 362 | Grinder |
| 364 | Sh Cs Inner Welding Flg1 | 4.75h | 2018-06-21 17:00 | 2018-06-21 21:45 | 363 | Helper; SMAW Welder |
| 365 | Sh Cs Flush Grinding Flg1 | 2h | 2018-06-21 21:45 | 2018-06-22 07:45 | 364 | Grinder |
| 367 | Sh Cs Fit Up Flg2 | 2h | 2018-06-22 07:45 | 2018-06-22 09:45 | 360, 32 | Helper; SMAW Welder; Forging Non-Std (Cost) [0.1%]; Fitter [200%] |
| 373 | Sh Cs Inner Welding Flg2 | 4.75h | 2018-06-22 18:30 | 2018-06-25 07:15 | 372 | Helper; SMAW Welder |
| 375 | **Nozzle Orientation Marking** | 0.5d | 2018-06-25 08:15 | 2018-06-25 12:15 |  |  |
| 376 | Sh-Noz Orientaion Marking | 2h | 2018-06-25 08:15 | 2018-06-25 10:15 | 369 | Fitter [200%] |
| 377 | Sh-Noz Marking N1 10" | 1h | 2018-06-25 10:15 | 2018-06-25 11:15 | 376 | Fitter [200%] |
| 378 | Sh-Noz Marking | 1h | 2018-06-25 11:15 | 2018-06-25 12:15 | 377 | Fitter [200%] |
| 379 | **Sh Nozzle Openning** | 0.75d | 2018-06-25 12:15 | 2018-06-25 18:15 |  |  |
| 380 | 250 NB NOZ N1 - 1 NO | 2h | 2018-06-25 12:15 | 2018-06-25 14:15 | 375 | Helper; Gas Cutter |
| 381 | 250 NB NOZ N2 - 1 NO | 2h | 2018-06-25 14:15 | 2018-06-25 16:15 | 380 | Helper; Gas Cutter |
| 382 | Inspection | 2h | 2018-06-25 16:15 | 2018-06-25 18:15 | 381 | Helper; Gas Cutter |
| 383 | **Sh Nozzle Ep** | 0.38d | 2018-06-25 18:15 | 2018-06-25 21:15 |  |  |
| 384 | 250 NB NOZ N1 - 1 NO | 1h | 2018-06-25 18:15 | 2018-06-25 19:15 | 379 | Grinder |
| 385 | 250 NB NOZ N2 - 1 NO | 1h | 2018-06-25 19:15 | 2018-06-25 20:15 | 384 | Grinder |
| 386 | Inspection | 1h | 2018-06-25 20:15 | 2018-06-25 21:15 | 385 | Helper; Fitter |
| 387 | **Sh Nozzzle Fit Up** | 0.62d | 2018-06-25 21:15 | 2018-06-26 10:15 |  |  |
| 388 | 250 NB NOZ N1 - 1 NO | 2h | 2018-06-25 21:15 | 2018-06-26 07:15 | 383 | Helper; SMAW Welder; Fitter [200%] |
| 389 | 250 NB NOZ N2 - 1 NO | 2h | 2018-06-26 07:15 | 2018-06-26 09:15 | 388 | Helper; SMAW Welder; Fitter [200%] |
| 390 | Dp Check | 1h | 2018-06-26 09:15 | 2018-06-26 10:15 | 389 | Fitter |
| 391 | **Sh Nozzle Fit Up Inspection** | 0.56d | 2018-06-26 10:15 | 2018-06-26 14:45 |  |  |
| 392 | 250 NB NOZ N1 - 1 NO | 2h | 2018-06-26 10:15 | 2018-06-26 12:15 | 387 | Helper; Fitter |
| 393 | 250 NB NOZ N2 - 1 NO | 2h | 2018-06-26 12:15 | 2018-06-26 14:15 | 392 | Helper; Fitter |
| 394 | Dp Check | 0.5h | 2018-06-26 14:15 | 2018-06-26 14:45 | 393 | Helper; Fitter |
| 395 | **Sh Nozzle Welding** | 2.12d | 2018-06-26 14:45 | 2018-06-27 15:45 |  |  |
| 396 | Sh Noz Welding Arrangement | 2h | 2018-06-26 14:45 | 2018-06-26 16:45 | 391 | Store |
| 397 | Sh-Noz Welding N1 | 4h | 2018-06-26 16:45 | 2018-06-26 20:45 | 396 | Helper; SMAW Welder |
| 398 | Sh-Noz Welding N2 | 4h | 2018-06-26 20:45 | 2018-06-27 08:45 | 397 | Helper; SMAW Welder |
| 399 | Sh Noz Root Dp Check | 1h | 2018-06-27 08:45 | 2018-06-27 09:45 | 398 | Helper; Fitter |
| 400 | Sh-Noz Inner Weld N1 | 3h | 2018-06-27 09:45 | 2018-06-27 12:45 | 399 | SMAW Welder; Helper |
| 401 | Sh-Noz Inner Weld N2 | 3h | 2018-06-27 12:45 | 2018-06-27 15:45 | 400 | SMAW Welder; Helper |
| 417 | **Channel Shell Ls Welding** | 1.5d | 2018-06-04 17:00 | 2018-06-05 13:00 |  |  |
| 418 | Ch Plate Trasnfer | 3h | 2018-06-04 17:00 | 2018-06-04 20:00 | 33 | Plate (Cost) [0.1%]; Store |
| 436 | Ch-Ls Inner Welding | 3h | 2018-06-06 20:00 | 2018-06-07 07:00 | 435 | Helper; SMAW Welder |
| 441 | **Ch Cs Fit Up Flg1** | 0.88d | 2018-06-07 20:00 | 2018-06-08 11:00 |  |  |
| 445 | **Ch Cs Welding Flg1** | 2.25d | 2018-06-08 11:00 | 2018-06-11 13:00 |  |  |
| 449 | Ch Cs Inner Welding Flg1 | 6h | 2018-06-08 21:00 | 2018-06-11 11:00 | 448 | Helper; SMAW Welder |
| 451 | **Ch Cs Fit Up Flg2** | 1.25d | 2018-06-11 13:00 | 2018-06-12 07:00 |  |  |
| 455 | Ch Cs Tack Dp Check Flg2 | 1h | 2018-06-12 06:00 | 2018-06-12 07:00 | 454 | Fitter |
| 460 | Ch Cs Inner Welding Flg2 | 4h | 2018-06-12 17:00 | 2018-06-12 21:00 | 459 | Helper; SMAW Welder |
| 462 | **Ch Cs Welding Rt Flg1 & 2** | 1d | 2018-06-13 08:00 | 2018-06-13 16:00 |  |  |
| 465 | Ch- Noz orientation | 1h | 2018-06-13 16:00 | 2018-06-13 17:00 | 462 | Helper; Fitter |
| 466 | Ch-Noz Marking 12''Nb - 2 Nos | 2h | 2018-06-13 17:00 | 2018-06-13 19:00 | 465 | Helper; Fitter |
| 467 | **Ch Noz Opening** | 0.5d | 2018-06-13 19:00 | 2018-06-14 07:00 |  |  |
| 468 | Ch-Noz Openning-Top N4 | 2h | 2018-06-13 19:00 | 2018-06-13 21:00 | 464 | Helper; Gas Cutter |
| 469 | Ch-Noz Openning-Bottom N3 | 2h | 2018-06-13 21:00 | 2018-06-14 07:00 | 468 | Helper; Gas Cutter |
| 471 | Ch-Noz Ep N4 | 3h | 2018-06-14 07:00 | 2018-06-14 10:00 | 467 | Helper; Grinder |
| 472 | Ch-Noz Ep N3 | 3h | 2018-06-14 10:00 | 2018-06-14 13:00 | 471 | Helper; Grinder |
| 474 | Ch-Noz Fit Up N4 | 3h | 2018-06-14 13:00 | 2018-06-14 16:00 | 470 | SMAW Welder; Helper; Fitter [200%] |
| 475 | Ch-Noz Fit Up N3 | 3h | 2018-06-14 16:00 | 2018-06-14 19:00 | 474 | SMAW Welder; Helper; Fitter [200%] |
| 477 | Ch-Noz Inspn N4 | 1h | 2018-06-14 19:00 | 2018-06-14 20:00 | 473 | Helper; Fitter |
| 478 | Ch-Noz Inspn N3 | 1h | 2018-06-14 20:00 | 2018-06-14 21:00 | 477 | Helper; Fitter |
| 481 | Ch-Noz Welding N4 | 4h | 2018-06-15 06:00 | 2018-06-15 10:00 | 480 | Helper; SMAW Welder |
| 482 | Ch-Noz Welding N3 | 4h | 2018-06-15 10:00 | 2018-06-15 14:00 | 481 | Helper; SMAW Welder |
| 484 | Ch-Noz Inner Weld N4 | 3h | 2018-06-15 14:30 | 2018-06-15 17:30 | 483 | Helper; SMAW Welder |
| 485 | Ch-Noz Inner Weld N5 | 3h | 2018-06-15 17:30 | 2018-06-15 20:30 | 484 | Helper; SMAW Welder |
| 486 | Rf Pad Fit Up & Nozzle Fit Up | 4h | 2018-06-15 20:30 | 2018-06-16 08:30 | 485 | Helper; SMAW Welder |
| 487 | Rf Pad Fit Up Welding | 5h | 2018-06-16 08:30 | 2018-06-16 13:30 | 486 | Helper; Grinder |
| 488 | Noz Welding Flush Grind 12''NB | 2h | 2018-06-16 13:30 | 2018-06-16 15:30 | 487 | Grinder |
| 503 | **Barrel Sh Plate Cutting & Ep** | 1.62d | 2018-06-04 17:00 | 2018-06-05 14:00 |  |  |
| 504 | Barrel Plate Transfer | 2h | 2018-06-04 17:00 | 2018-06-04 19:00 | 35 | Plate (Cost) [0.1%]; Store |
| 522 | Barrel-Ls Inner Welding | 4.75h | 2018-06-06 14:15 | 2018-06-06 19:00 | 521 | Helper; SMAW Welder |
| 531 | **Barrel Sh Cs Flg1 Welding** | 1.56d | 2018-06-07 17:30 | 2018-06-08 14:00 |  |  |
| 535 | Barrel Cs Inner Welding Flg1 | 4.75h | 2018-06-08 08:15 | 2018-06-08 13:00 | 534 | Helper; SMAW Welder |
| 548 | **Barrel Cs & Dish Welding Rt Flg1** | 1d | 2018-06-11 17:00 | 2018-06-12 09:00 |  |  |
| 551 | Barrel- Noz Orientation Mkg | 1h | 2018-06-12 09:00 | 2018-06-12 10:00 | 548 | Helper; Fitter |
| 552 | Barrel-Noz Marking 2 Nos | 1h | 2018-06-12 10:00 | 2018-06-12 11:00 | 551 | Helper; Fitter |
| 554 | Barrel-Noz Openning 40 Nb - WN | 0.5h | 2018-06-12 11:00 | 2018-06-12 11:30 | 550 | Helper; Gas Cutter |
| 555 | Barrel-Noz Openning 40 Nb - WN | 0.5h | 2018-06-12 11:30 | 2018-06-12 12:00 | 554 | Helper; Gas Cutter |
| 557 | Barrel-Noz Openning 40 Nb - WN | 0.5h | 2018-06-12 12:00 | 2018-06-12 12:30 | 553 | Helper; Grinder |
| 558 | Barrel-Noz Openning 40 Nb - WN | 0.5h | 2018-06-12 12:30 | 2018-06-12 13:00 | 557 | Helper; Grinder |
| 560 | Barrel-Noz Fit Up N5 | 1h | 2018-06-12 13:00 | 2018-06-12 14:00 | 556 | SMAW Welder; Helper; Fitter [200%] |
| 561 | Barrel-Noz Fit Up N6 | 1h | 2018-06-12 14:00 | 2018-06-12 15:00 | 560 | SMAW Welder; Helper; Fitter [200%] |
| 563 | Barrel-Noz Inspn N5 | 0.5h | 2018-06-12 15:00 | 2018-06-12 15:30 | 559 | QC Engineer |
| 564 | Barrel-Noz Inspn N6 | 0.5h | 2018-06-12 15:30 | 2018-06-12 16:00 | 563 | QC Engineer |
| 567 | Barrel-Noz Welding N5 | 0.5h | 2018-06-12 16:30 | 2018-06-12 17:00 | 566 | Helper; SMAW Welder |
| 568 | Barrel-Noz Welding N6 | 0.5h | 2018-06-12 17:00 | 2018-06-12 17:30 | 567 | Helper; SMAW Welder |
| 570 | Barrel-Noz Inner Welding N5 | 0.5h | 2018-06-12 17:30 | 2018-06-12 18:00 | 569 | Helper; SMAW Welder |
| 571 | Barrel-Noz Inner Welding N6 | 0.5h | 2018-06-12 18:00 | 2018-06-12 18:30 | 570 | Helper; SMAW Welder |
| 575 | **Fl Head Fabrication** | 20.81d | 2018-06-21 09:00 | 2018-07-17 16:30 |  |  |
| 576 | **Flaoting Head Dish Forming** | 1.38d | 2018-07-06 09:00 | 2018-07-06 20:00 |  |  |
| 607 | Skeliton Assy 19 Baffles | 4h | 2018-08-17 13:00 | 2018-08-17 17:00 | 606 | Helper [300%]; Fitter [200%] |
| 610 | Seal Rod Insert & Weld | 0h | 2018-08-23 17:30 | 2018-08-23 17:30 | 609 | SMAW Welder; Helper [200%]; Fitter [200%] |
| 611 | Tube Insert | 12h | 2018-08-23 17:30 | 2018-08-24 13:30 | 610 | Helper [400%]; Fitter |
| 621 | Tube Exp - St Side 1 Stage | 16h | 2018-08-29 19:30 | 2018-08-30 19:30 | 616 | Helper [200%]; Fitter |
| 622 | Tube Exp - Fl Side 1 Stage | 16h | 2018-08-30 19:30 | 2018-08-31 19:30 | 621 | Helper [200%]; Fitter |
| 624 | Tube Exp Both Side 4 Stage | 16h | 2018-09-04 19:45 | 2018-09-05 19:45 | 623 | Helper [200%]; Fitter [200%] |
| 639 | **Hydro Test** | 35.09d | 2018-06-13 08:30 | 2018-07-04 17:15 |  |  |
| 644 | **Channel Side Hydro** | 2.5d | 2018-06-20 13:30 | 2018-06-21 17:30 |  |  |
| 645 | Shell Side Hydro | 12h | 2018-06-20 13:30 | 2018-06-21 09:30 | 416 | Helper [200%]; Fitter [200%] |
| 646 | Shell Side Tpi Witness | 4h | 2018-06-21 09:30 | 2018-06-21 13:30 | 645 | Fitter [200%] |
| 647 | De Watering & Dismantle Of Gland | 4h | 2018-06-21 13:30 | 2018-06-21 17:30 | 646 | Helper [400%]; Fitter [200%] |
| 648 | **Barrel Side Hydro** | 2.5d | 2018-06-13 08:30 | 2018-06-14 12:30 |  |  |
| 649 | Shell Side Hydro | 12h | 2018-06-13 08:30 | 2018-06-13 20:30 | 502 | Helper [200%]; Fitter [200%] |
| 650 | Shell Side Tpi Witness | 4h | 2018-06-13 20:30 | 2018-06-14 08:30 | 649 | Fitter [200%] |
| 651 | De Watering & Dismantle Of Gland | 4h | 2018-06-14 08:30 | 2018-06-14 12:30 | 650 | Helper [400%]; Fitter [200%] |
| 652 | **Nitrogen Purging** | 0.87d | 2018-07-04 17:15 | 2018-07-05 08:14 |  |  |
| 653 | Blind & Nitrogen Purging | 0.87d | 2018-07-04 17:15 | 2018-07-05 08:14 | 640, 644, 648 | Helper [200%]; Fitter |
| 655 | Primer | 1d | 2018-07-05 08:14 | 2018-07-05 16:14 | 652 | Painter [300%] |
| 656 | Top Coat 1 | 1d | 2018-07-05 16:14 | 2018-07-06 08:14 | 655 | Painter [300%] |
| 657 | Top Coat 2 | 1d | 2018-07-06 08:14 | 2018-07-06 16:14 | 656 | Painter [300%] |
| 658 | **100-EE-1011 Closure** | 26.25d | 2018-07-06 16:14 | 2018-08-09 09:14 |  |  |

Removed: 4 4220-F1008; 30 Raw Material receipt; 31 Shell Plate-Sa 516 Gr60; 32 Shell Girth Flange-Sa266 Gr4; 33 Channel Plate-Sa 516 Gr60; 34 Channel Girth Flange-Sa 266 Gr4; 35 Barrel Sheel Plate-Sa 516 Gr 60; 36 Barrel Girth Flange-Sa 266 Gr4; 37 Barrel Dish-Sa 516 Gr 60; 38 Tube Sheet-1-Sa 266 Gr4; 39 Tube Sheet -2-Sa 266 Gr4; 40 Floating Head Flg-Sa 266 Gr4; 41 Floating Head Dish-Sa 516 Gr60; 42 Backing Ring-Sa 266 Gr4; 43 Baffle Plate-Sa 516 Gr60; 44 Sealing Strip Plate-Sa 516 Gr60; 45 Sliding Strip Plate-Sa 516 Gr60; 46 Lifting lug RF pad & Pad plate; 47 STD flanges, Pipes, davit arm pipe & plate; 48 Tube -Sa 179; 49 Spacer Tube-Sa 179; 50 Tie Rod-Sa 36; 51 Test Ring & Test Flg-Sa 266 Gr4; 54 133-EE1008F; 55 Dish Forming - 12T* 764 OD; 57 Bar-Dish Blank Marking - 12 * 764 Od; 72 Tube Sheet Machining 1 Off 2; 74 Tube Sheet M/C - 1/2; 75 Tube Sheet Drilling 1 Off 2; 76 Tube Sheet Drilling -1/2; 77 Exp Groove+Welding Groove -1/2; 78 Tie Rod, Pulling, Lifting Hole - 1/2; 79 Pass Partition Groove M/C -1/2; 80 Cleaning ,Go/No Go Check -1/2; 81 Final Inspection -1/2; 82 Tube Sheet Machining 2 Off 2; 84 Tube Sheet M/C - 2/2; 85 Tube Sheet Drilling 2 Off 2; 86 Tube Sheet Drilling -2/2; 87 Exp Groove+Welding Groove -2/2; 88 Tie Rod, Pulling, Lifting Hole - 2/2; 89 Pass Partition Groove M/C -2/2; 90 Cleaning ,Go/No Go Check -2/2; 91 Final Inspection -2/2; 92 Top Saddle Fabrrication; 97 Top Sadlle Plate Cutting; 101 Grinnding Of Above; 102 Drilling; 103 Milling; 111 Pipe Marking - 4 Nos; 115 Pipe Cutting - 6 Nos; 117 Pipe Grinding - 6 Nos; 118 Support Pl Grinding-10 Nos; 120 Pipe Fit Up-2 Nos; 121 Pipe Welding -2 Nos; 123 Support Pl Welding -2 Nos; 144 Baffle Pl Stacking / 100 mm; 148 Baffle De Stacing; 149 Baffle Chamfering; 153 Baffle Hole Re Drill; 154 Baffle Od Machining; 155 Baffle Cleaning; 172 Length Cutting 237Nos; 173 Lenngth Machining; 189 Nozzle Fabrication with Flange; 190 PIPE MARKING - 6" 4 NOS; 191 PIPE MARKING - 6" 4 NOS; 192 CUTTING; 193 EDGE PREPARATION; 194 NOZZLE FIT UP FLANGE; 195 WELDING; 196 DP; 197 RT; 198 PROFILE MARKING; 199 CUTTING; 200 Profile Grinding; 201 PIPE MARKING - 2" 4 NOS; 202 PIPE MARKING - 2" 4 NOS; 203 CUTTING; 204 EDGE PREPARATION; 205 NOZZLE FIT UP FLANGE; 206 WELDING; 207 DP; 208 RT; 209 PROFILE MARKING; 210 CUTTING; 211 Profile Grinding; 212 PIPE MARKING - 1.5 2 NOS; 213 PIPE MARKING - 1.5" 2 NOS; 214 CUTTING; 215 EDGE PREPARATION; 216 NOZZLE FIT UP FLANGE; 217 WELDING; 218 DP; 219 RT; 220 PROFILE MARKING; 221 CUTTING; 222 Profile Grinding; 223 Nozzle RF Pad fabrication; 224 PLATE ISSUENCE; 225 PAD MARKING; 226 PAD CUTTING; 227 PAD GRINDING; 228 Profile Marking; 229 Profile Forming; 230 Vent hole drilling and tapping; 258 Sh-Rolling 1/3; 298 Sh Cs Fit Up - [Ls1+Ls2]; 299 Sh Cs Tack Dp Check - [Ls1+Ls2]; 302 Sh Cs Welding Outer [Ls1+Ls2]; 303 Sh Cs Welding Back Chip [Ls1+Ls2]; 304 Sh Cs Flush Grinding [Ls1+Ls2]; 306 Sh Cs Fit Up - [Ls2+Ls3]; 307 Sh Cs Tack Dp Check - [Ls2+Ls3]; 309 Sh Cs Welding Transfere-[Ls2+Ls3]; 310 Sh Cs Welding Outer [Ls2+Ls3]; 311 Sh Cs Welding Back Chip [Ls2+Ls3]; 312 Sh Cs Flush Grinding [Ls2+Ls3]; 317 Sh Cir Seam Flange 1 Fitup; 318 Sh Cs Fit Up Flg Cs1; 319 Sh Cs Tack Dp Check Flg Cs1; 320 Sh Cir Seam Flange 1 Welding; 322 Sh Cs Welding Outer Flg Cs1; 323 Sh Cs Welding Back Chip Flg Cs1; 324 Sh Cs Flush Grinding Flg Cs1; 326 Sh Cs Fit Up Flg 2; 333 Shell Noz Opnning; 334 Shell-Noz Openning-Top; 335 Shell-Noz Openning-Bot; 336 Shell Noz Open Ep; 337 Shell -Noz Ep -N1; 338 Shell -Noz Ep-N2; 339 Shell Noz Fit Up; 340 Shell-Noz Fit Up -N1; 341 Shell-Noz Fit Up -N2; 342 Shell Noz Fit Up Insp; 343 Shell-Noz Inspn -N1; 344 Shell-Noz Inspn-N2; 345 Shell Noz Welding; 346 Shell Noz Welding Arrangement; 347 Shell-Noz Welding -N1; 348 Shell Noz Welding-N2; 349 Shell Noz Root Dp Check - N1; 350 Shell Noz Root Dp Check - N2; 351 Shell-Noz Inner Weld -N1; 352 Shell-Noz Inner Weld-N2; 353 Rf Pad Fit Up & Nozzle Fit Up - N1; 354 Rf Pad Fit Up & Nozzle Fit Up - N2; 355 Rf Pad Fit Up Welding - N1; 356 Rf Pad Fit Up Welding - N2; 357 Noz Welding Flush Grind- 6"Nb; 358 Shell Noz Welding Arrangement; 359 Shell-Noz Welding - MP connections; 360 Shell Noz Welding-N7 & N8 - 2" SCH 160; 361 Shell Noz Root Dp Check; 375 Tpi Inspection; 377 Channel Fabrication; 378 Ch Plate Trnasfer; 400 Ch Cs Flg 1 Fit Up; 404 Ch Cs Flg 1 Welding; 409 Ch Cs Flg 2 Fit Up; 413 Ch Cs Tack Dp Check Flg1; 419 Ch Cs Flg 1 & 2 Welding Rt; 422 Ch- Noz Ireientation Nkg; 423 Ch-Noz Marking- 6"Nb - 2 Nos; 424 Ch Noz Opnning; 425 Ch-Noz Openning-Top; 426 Ch-Noz Openning-Bot; 428 Ch-Noz Ep -N5; 429 Ch-Noz Ep-N6; 431 Ch-Noz Fit Up -N5; 432 Ch-Noz Fit Up -N6; 434 Ch-Noz Inspn -N5; 435 Ch-Noz Inspn-N6; 438 Ch-Noz Welding -N5; 439 Ch-Noz Welding-N6; 441 Ch-Noz Inner Weld -N5; 442 Ch-Noz Inner Weld-N6; 443 Rf Pad Fit Up & Nozzle Fit Up - N5; 444 Rf Pad Fit Up & Nozzle Fit Up - N6; 445 Rf Pad Fit Up Welding - N5; 446 Rf Pad Fit Up Welding - N6; 447 Noz Welding Flush Grind- 16"Nb; 462 Barrel Fabrication; 463 Barrel Plate Trnasfer; 464 Barrel Sh Plate Cutting & Ep; 490 Barrel Sh Cs Flg 1 Welding; 494 Barrel Cs Inner Welding Flg 1; 507 Barrel Cs Flg 1 & Dish Welding Rt; 510 Barrel- Noz Ireientation Nkg; 511 Barrel-Noz Marking- 2; 513 Barrel-Noz Openning-40 Nb - Lwn; 514 Barrel-Noz Openning-40 Nb - Lwn; 516 Barrel-Noz Openning-40 Nb - Lwn; 517 Barrel-Noz Openning-40 Nb - Lwn; 519 Barrel-Noz Fit Up -N4; 520 Barrel-Noz Fit Up -N3; 522 Barrel-Noz Inspn -N3; 523 Barrel-Noz Inspn-N4; 526 Barrel-Noz Welding -N3; 527 Barrel-Noz Welding-N4; 529 Barrel-Noz Inner Welding -N3; 530 Barrel-Noz Inner Welding-N4; 531 Shell Noz Welding Arrangement; 532 Shell-Noz Welding - MP connections; 533 Shell Noz Welding-N9 & N10 - 1.5" SCH 160; 534 Shell Noz Root Dp Check; 538 Floating Head Fabrication; 539 Floating Head Dish Forming; 570 Skeliton Assy- 19 Baffle; 582 Tube Exp - St Side - 1 Stage; 583 Tube Exp - Fl Side - 1 Stage; 585 Tube Exp Both Side - 4 Stage; 600 Hydro Testing; 602 Inserting the Tube bundle in shell; 603 Shell Side Water Filling; 607 Channel Side Hydro - Open bundle; 608 Tube bundle to Channel fixing; 609 Assembly; 610 Water Fill; 611 Ch Side Hydro; 612 Ch Side Hydro Tpi Witness; 613 De Watering; 614 Barrel shell Hydro - Stacked; 615 Barrel Assy; 616 Water Fill; 617 Shell Side Hydro - Stacked; 618 Shell Side Hydro- Stacked Tpi Witness; 619 De Watering; 620 Nitorgen Purging; 621 N2 Gas Purging; 623 Primer Painting; 624 Intermediate Painting; 625 Top Coat Painting; 626 133-EE-1008 Closure

Changed:

| ID | Task | Start | Finish | Duration | Complete | Total float | Predecessors | Other |
| --- | --- | --- | --- | --- | --- | --- | --- | --- |
| 4 | Drawing Approval | 2018-02-09 08:30 A → 2018-02-23 08:30 A (+14d) | 2018-02-09 17:30 A → 2018-02-23 17:30 A (+14d) |  |  |  | 3FS+72ed → 3FS+86ed | baseline start 2018-02-09 08:30 → 2018-02-23 08:30; baseline finish 2018-02-09 17:30 → 2018-02-23 17:30 |
| 5 | **Raw Material Ordering** |  | 2018-05-03 17:30 A → 2018-05-04 17:00 A (+1d) | 71d → 71.94d |  |  |  | baseline finish 2018-05-03 17:30 → 2018-05-02 10:30 |
| 6 | Material Ordering Start | 2018-02-16 08:30 A → 2018-02-26 08:30 A (+10d) | 2018-02-16 17:30 A → 2018-02-26 17:30 A (+10d) |  |  |  |  | baseline start 2018-02-16 08:30 → 2018-02-26 08:30; baseline finish 2018-02-16 17:30 → 2018-02-26 17:30 |
| 7 | Shell Plate | 2018-04-02 08:00 A → 2018-04-07 08:30 A (+5d) |  | 9.94d → 4.94d |  |  | 6FS+50ed → 6FS+39ed | baseline start 2018-04-02 08:00 → 2018-04-07 08:30 |
| 8 | Shell Girth Flange | 2018-03-29 08:30 A → 2018-03-29 08:00 A | 2018-03-31 17:30 A → 2018-03-29 17:00 A (-2d) | 3d → 0.94d |  |  | 6FS+50ed → 6FS+39ed | baseline start 2018-03-29 08:30 → 2018-03-29 08:00; baseline finish 2018-03-31 17:30 → 2018-03-29 17:00 |
| 9 | Channel Plate | 2018-04-02 08:00 A → 2018-04-07 08:00 A (+5d) |  | 9.94d → 4.94d |  |  | 6FS+50ed → 6FS+39ed | baseline start 2018-04-02 08:00 → 2018-04-07 08:00 |
| 10 | Channel Girth Flange | 2018-03-29 08:30 A → 2018-03-29 08:00 A | 2018-03-31 17:30 A → 2018-03-29 17:00 A (-2d) | 3d → 0.94d |  |  | 6FS+50ed → 6FS+39ed | baseline start 2018-03-29 08:30 → 2018-03-29 08:00; baseline finish 2018-03-31 17:30 → 2018-03-29 17:00 |
| 11 | Barrel Sheel Plate | 2018-04-02 08:00 A → 2018-04-07 08:00 A (+5d) |  | 9.94d → 4.94d |  |  | 6FS+50ed → 6FS+39ed | baseline start 2018-04-02 08:00 → 2018-04-07 08:00 |
| 12 | Barrel Girth Flange | 2018-03-29 08:30 A → 2018-03-29 08:00 A | 2018-03-31 17:30 A → 2018-03-29 17:00 A (-2d) | 3d → 0.94d |  |  | 6FS+50ed → 6FS+39ed | baseline start 2018-03-29 08:30 → 2018-03-29 08:00; baseline finish 2018-03-31 17:30 → 2018-03-29 17:00 |
| 13 | Barrel Dish | 2018-04-02 08:00 A → 2018-04-07 08:00 A (+5d) |  | 9.94d → 4.94d |  |  | 6FS+50ed → 6FS+39ed | baseline start 2018-04-02 08:00 → 2018-04-07 08:00 |
| 14 | Tube Sheet-1 | 2018-03-29 08:30 A → 2018-03-29 08:00 A | 2018-03-31 17:30 A → 2018-03-29 17:00 A (-2d) | 3d → 0.94d |  |  | 6FS+50ed → 6FS+39ed | baseline start 2018-03-29 08:30 → 2018-03-29 08:00; baseline finish 2018-03-31 17:30 → 2018-03-29 17:00 |
| 15 | Tube Sheet -2 | 2018-03-29 08:30 A → 2018-03-29 08:00 A | 2018-03-31 17:30 A → 2018-03-29 17:00 A (-2d) | 3d → 0.94d |  |  | 6FS+50ed → 6FS+39ed | baseline start 2018-03-29 08:30 → 2018-03-29 08:00; baseline finish 2018-03-31 17:30 → 2018-03-29 17:00 |
| 16 | Floating Head Flg | 2018-03-29 08:30 A → 2018-03-29 08:00 A | 2018-03-31 17:30 A → 2018-03-29 17:00 A (-2d) | 3d → 0.94d |  |  | 6FS+50ed → 6FS+39ed | baseline start 2018-03-29 08:30 → 2018-03-29 08:00; baseline finish 2018-03-31 17:30 → 2018-03-29 17:00 |
| 17 | Floating Head Dish | 2018-04-02 08:00 A → 2018-04-07 08:00 A (+5d) |  | 9.94d → 4.94d |  |  | 6FS+50ed → 6FS+39ed | baseline start 2018-04-02 08:00 → 2018-04-07 08:00 |
| 18 | Backing Ring | 2018-03-29 08:30 A → 2018-03-29 17:00 A | 2018-03-31 17:30 A → 2018-03-29 17:00 A (-2d) | 3d → 0d |  |  | 6FS+50ed → 6FS+39ed | baseline start 2018-03-29 08:30 → 2018-03-29 17:00; baseline finish 2018-03-31 17:30 → 2018-03-29 17:00 |
| 19 | Baffle Plate | 2018-04-02 08:00 A → 2018-04-07 08:00 A (+5d) |  | 9.94d → 4.94d |  |  | 6FS+50ed → 6FS+39ed | baseline start 2018-04-02 08:00 → 2018-04-07 08:00 |
| 20 | Sealing Strip Plate | 2018-04-09 08:30 A → 2018-04-07 08:00 A (-2d) | 2018-04-20 17:00 A → 2018-04-12 17:00 A (-8d) | 9.94d → 4.94d |  |  | 6FS+50ed → 6FS+39ed | baseline start 2018-04-09 08:30 → 2018-04-07 08:00; baseline finish 2018-04-20 17:00 → 2018-04-12 17:00 |
| 21 | Sliding Strip Plate | 2018-04-02 08:00 A → 2018-04-07 08:00 A (+5d) |  | 9.94d → 4.94d |  |  | 6FS+50ed → 6FS+39ed | baseline start 2018-04-02 08:00 → 2018-04-07 08:00 |
| 22 | Seal Rod |  | 2018-04-09 08:45 A → 2018-02-02 17:00 A (-66d) | 52.03d → 0.94d |  |  | 6FS+50ed → 6FS+39ed | baseline finish 2018-04-09 08:45 → 2018-02-02 17:00 |
| 23 | Noz Srn | 2018-03-29 08:30 A → 2018-03-29 08:00 A | 2018-03-31 17:30 A → 2018-03-29 17:00 A (-2d) | 3d → 0.94d |  |  | 6FS+50ed → 6FS+39ed | baseline start 2018-03-29 08:30 → 2018-03-29 08:00; baseline finish 2018-03-31 17:30 → 2018-03-29 17:00 |
| 24 | Tube | 2018-03-29 08:30 A → 2018-04-07 08:30 A (+9d) | 2018-03-31 17:30 A → 2018-04-10 17:30 A (+10d) |  |  |  | 6FS+50ed → 6FS+39ed | baseline start 2018-03-29 08:30 → 2018-04-07 08:30; baseline finish 2018-03-31 17:30 → 2018-04-10 17:30 |
| 25 | Spacer Tube | 2018-03-29 08:30 A → 2018-04-07 08:30 A (+9d) | 2018-03-31 17:30 A → 2018-04-10 17:30 A (+10d) |  |  |  | 6FS+50ed → 6FS+39ed | baseline start 2018-03-29 08:30 → 2018-04-07 08:30; baseline finish 2018-03-31 17:30 → 2018-04-10 17:30 |
| 26 | Tie Rod | 2018-02-02 08:00 A → 2018-04-07 08:30 A (+64d) | 2018-04-09 08:45 A → 2018-04-10 17:30 A (+1d) | 52.03d → 3d |  |  | 6FS+50ed → 6FS+39ed | baseline start 2018-02-02 08:00 → 2018-04-07 08:30; baseline finish 2018-04-09 08:45 → 2018-04-10 17:30 |
| 27 | Test Ring & Test Flg |  | 2018-03-31 17:00 A → 2018-03-29 17:00 A (-2d) | 2.94d → 0.94d |  |  | 6FS+50ed → 6FS+39ed | baseline finish 2018-03-31 17:00 → 2018-03-29 17:00 |
| 28 | Ms Rod For Handle Etc | 2018-04-30 08:30 A → 2018-04-07 08:30 A (-23d) | 2018-05-03 17:30 A → 2018-05-04 17:00 A (+1d) | 3d → 20.94d |  |  | 6FS+70ed → 6FS+59ed | baseline start 2018-04-30 08:30 → 2018-04-07 08:30; baseline finish 2018-05-03 17:30 → 2018-05-02 10:30 |
| 29 | Ms Plate For Saddle | 2018-04-30 08:30 A → 2018-04-07 08:30 A (-23d) | 2018-05-03 17:30 A → 2018-05-04 17:00 A (+1d) | 3d → 20.94d |  |  | 6FS+70ed → 6FS+59ed | baseline start 2018-04-30 08:30 → 2018-04-07 08:30; baseline finish 2018-05-03 17:30 → 2018-05-02 10:30 |
| 52 | Ms Rod For Handle Etc | 2018-07-06 08:30 → 2018-02-08 08:00 A (-148d) | 2018-07-07 08:31 → 2018-02-09 17:00 A (-148d) | 1d → 3.12d | 0% → 100% | 55.22d → none |  | baseline start 2018-07-06 08:30 → 2018-02-08 08:00; baseline finish 2018-07-07 08:31 → 2018-02-09 17:00 |
| 53 | Ms Plate For Saddle | 2018-07-06 08:30 → 2018-06-05 17:00 (-31d) | 2018-07-07 08:31 → 2018-06-06 09:00 (-31d) |  |  | 53d → 151.03d |  | baseline start 2018-07-06 08:30 → 2018-06-02 10:30; baseline finish 2018-07-07 08:31 → 2018-06-02 18:30 |
| 55 | Bar Dish Blank Issuence | 2018-06-04 17:01 → 2018-06-04 17:00 | 2018-06-06 17:01 → 2018-06-04 21:00 (-2d) | 4d → 4h |  | 137.16d → 151.84d | Barrel Dish-Sa 516 Gr 60 → 37 | baseline start 2018-05-17 17:01 → 2018-05-14 17:00; baseline finish 2018-05-19 17:01 → 2018-05-14 21:00 |
| 57 | Bar-Dish Blank Marking Inspection | 2018-06-06 18:01 → 2018-06-05 09:00 (-1d) | 2018-06-07 10:01 → 2018-06-05 13:00 (-2d) | 1d → 4h |  | 137.16d → 151.84d | Bar-Dish Blank Marking - 12 * 764 Od → 56 | baseline start 2018-05-19 18:01 → 2018-05-15 09:00; baseline finish 2018-05-21 10:01 → 2018-05-15 13:00 |
| 58 | Bar-Dish Blank Cutting | 2018-06-07 10:01 → 2018-06-05 13:00 (-2d) | 2018-06-07 11:01 → 2018-06-05 15:00 (-2d) | 1h → 2h |  | 137.16d → 151.84d |  | baseline start 2018-05-21 10:01 → 2018-05-15 13:00; baseline finish 2018-05-21 11:01 → 2018-05-15 15:00 |
| 59 | Bar-Dish Forming | 2018-06-07 11:01 → 2018-06-05 15:00 (-2d) | 2018-06-14 11:01 → 2018-06-14 15:00 | 10d → 7d |  | 137.16d → 75.84d |  | baseline start 2018-05-21 11:01 → 2018-05-15 15:00; baseline finish 2018-05-28 11:01 → 2018-05-23 15:00 |
| 60 | Profile Insp | 2018-06-14 11:01 → 2018-06-14 15:00 | 2018-06-14 19:01 → 2018-06-15 10:00 (+1d) | 1d → 4h |  | 137.16d → 75.84d |  | baseline start 2018-05-28 11:01 → 2018-05-23 15:00; baseline finish 2018-05-28 19:01 → 2018-05-24 10:00 |
| 61 | Heat Treatment Preparation | 2018-06-14 19:01 → 2018-06-15 10:00 (+1d) | 2018-06-15 11:01 → 2018-06-16 10:00 (+1d) |  |  | 137.16d → 75.84d |  | baseline start 2018-05-28 19:01 → 2018-05-24 10:00; baseline finish 2018-05-29 11:01 → 2018-05-25 10:00 |
| 62 | Stress Releiving- Sub Cont | 2018-06-15 11:01 → 2018-06-16 10:00 (+1d) | 2018-06-18 11:01 → 2018-06-21 10:00 (+3d) |  |  | 137.16d → 75.84d |  | baseline start 2018-05-29 11:01 → 2018-05-25 10:00; baseline finish 2018-05-31 11:01 → 2018-05-31 10:00 |
| 63 | Removal Of Spiders | 2018-06-18 11:01 → 2018-06-21 10:00 (+3d) | 2018-06-18 19:01 → 2018-06-21 13:00 (+3d) | 1d → 3h |  | 137.16d → 151.84d |  | baseline start 2018-05-31 11:01 → 2018-05-31 10:00; baseline finish 2018-05-31 19:01 → 2018-05-31 13:00 |
| 64 | Surface Preparation | 2018-06-18 19:01 → 2018-06-21 13:00 (+3d) | 2018-06-19 19:01 → 2018-06-21 20:00 (+2d) | 2d → 7h |  | 137.16d → 151.84d |  | baseline start 2018-05-31 19:01 → 2018-05-31 13:00; baseline finish 2018-06-01 19:01 → 2018-05-31 20:00 |
| 65 | Inspection | 2018-06-19 19:01 → 2018-06-21 20:00 (+2d) | 2018-06-20 11:01 → 2018-06-22 08:00 (+2d) | 1d → 4h |  | 137.16d → 151.84d |  | baseline start 2018-06-01 19:01 → 2018-05-31 20:00; baseline finish 2018-06-02 11:01 → 2018-06-01 08:00 |
| 67 | Sf Marking | 2018-06-20 15:01 → 2018-06-22 12:00 (+2d) | 2018-06-20 17:01 → 2018-06-22 14:00 (+2d) |  |  | 137.16d → 151.84d | 415 → 66 | baseline start 2018-06-02 15:01 → 2018-06-01 12:00; baseline finish 2018-06-02 17:01 → 2018-06-01 14:00 |
| 68 | Sf Cutting | 2018-06-20 17:01 → 2018-06-22 14:00 (+2d) | 2018-06-21 09:31 → 2018-06-22 16:00 (+1d) | 8.5h → 2h |  | 137.16d → 151.84d |  | baseline start 2018-06-02 17:01 → 2018-06-01 14:00; baseline finish 2018-06-04 09:31 → 2018-06-01 16:00 |
| 69 | Sf Gridning & Ep | 2018-06-21 09:31 → 2018-06-22 16:00 (+1d) | 2018-06-21 17:01 → 2018-06-22 19:00 (+1d) | 7.5h → 3h |  | 137.16d → 151.84d |  | baseline start 2018-06-04 09:31 → 2018-06-01 16:00; baseline finish 2018-06-04 17:01 → 2018-06-01 19:00 |
| 70 | **Tube Sheet** | 2018-07-13 08:31 → 2018-06-21 09:00 (-22d) | 2018-07-27 21:31 → 2018-08-16 17:00 (+20d) | 23.62d → 43.88d |  |  |  | baseline start 2018-07-13 08:31 → 2018-06-21 09:00; baseline finish 2018-07-27 21:31 → 2018-08-16 17:00 |
| 72 | Inward Inspection | 2018-07-13 08:31 → 2018-06-21 09:00 (-22d) | 2018-07-17 08:31 → 2018-06-21 11:00 (-26d) | 2d → 2h |  | 5.75d → 19.69d | Tube Sheet-1-Sa 266 Gr4 → 38 | resources Tube Sheet (Cost) [0.1%]; QC Engineer → Helper; Tube Sheet (Cost) [0.1%]; QC Engineer; baseline start 2018-07-13 08:31 → 2018-06-21 09:00; baseline finish 2018-07-17 08:31 → 2018-06-21 11:00 |
| 82 | Inward Inspection | 2018-07-13 08:31 → 2018-06-21 09:00 (-22d) | 2018-07-17 08:31 → 2018-06-21 11:00 (-26d) | 2d → 2h |  |  | Tube Sheet-1-Sa 266 Gr4 → 39 | resources Tube Sheet (Cost) [0.1%]; QC Engineer → Helper; Tube Sheet (Cost) [0.1%]; QC Engineer; baseline start 2018-07-13 08:31 → 2018-06-21 09:00; baseline finish 2018-07-17 08:31 → 2018-06-21 11:00 |
| 158 | Plate Issuence | 2018-07-07 08:31 → 2018-06-06 09:00 (-31d) | 2018-07-10 08:31 → 2018-06-06 13:00 (-34d) | 4d → 4h |  | 107.47d → 151.03d |  | resources Store; Plate (Cost) [0.1%] → Plate (Cost) [0.1%]; Helper [300%]; baseline start 2018-07-07 08:31 → 2018-06-02 18:30; baseline finish 2018-07-10 08:31 → 2018-06-04 06:30 |
| 159 | Base Marking | 2018-07-10 08:31 → 2018-06-06 13:00 (-34d) | 2018-07-10 10:31 → 2018-06-06 15:00 (-34d) |  |  | 107.47d → 151.03d |  | baseline start 2018-07-10 08:31 → 2018-06-04 06:30; baseline finish 2018-07-10 10:31 → 2018-06-04 08:30 |
| 160 | Web Pl Marking | 2018-07-10 10:31 → 2018-06-06 15:00 (-34d) | 2018-07-10 12:31 → 2018-06-06 17:00 (-34d) |  |  | 107.47d → 151.03d |  | baseline start 2018-07-10 10:31 → 2018-06-04 08:30; baseline finish 2018-07-10 12:31 → 2018-06-04 10:30 |
| 161 | Ribs Marking | 2018-07-10 12:31 → 2018-06-06 17:00 (-34d) | 2018-07-10 14:31 → 2018-06-06 19:00 (-34d) |  |  | 107.47d → 151.03d |  | baseline start 2018-07-10 12:31 → 2018-06-04 10:30; baseline finish 2018-07-10 14:31 → 2018-06-04 12:30 |
| 163 | Base Cutting | 2018-07-07 08:31 → 2018-06-06 19:00 (-31d) | 2018-07-07 11:01 → 2018-06-07 07:00 (-30d) | 2.5h → 4h |  | 105.28d → 151.03d | 53 → 157 | baseline start 2018-07-07 08:31 → 2018-06-04 12:30; baseline finish 2018-07-07 11:01 → 2018-06-04 16:30 |
| 164 | Web Pl Cutting | 2018-07-07 08:31 → 2018-06-07 07:00 (-30d) | 2018-07-07 11:31 → 2018-06-07 09:00 (-30d) | 3h → 2h |  | 105.22d → 151.03d | 53 → 163 | baseline start 2018-07-07 08:31 → 2018-06-04 16:30; baseline finish 2018-07-07 11:31 → 2018-06-04 18:30 |
| 165 | Ribs Cutting | 2018-07-07 08:31 → 2018-06-07 09:00 (-30d) | 2018-07-07 10:31 → 2018-06-07 11:00 (-30d) |  |  | 109.97d → 151.03d | 53 → 164 | baseline start 2018-07-07 08:31 → 2018-06-04 18:30; baseline finish 2018-07-07 10:31 → 2018-06-04 20:30 |
| 167 | **Saddle Fit Up & Welding** | 2018-07-07 11:31 → 2018-06-07 16:00 (-30d) | 2018-07-11 16:31 → 2018-06-19 22:00 (-22d) | 6.62d → 18.75d |  | 105.22d → 151.03d |  | baseline start 2018-07-07 11:31 → 2018-06-05 09:30; baseline finish 2018-07-11 16:31 → 2018-06-16 15:30 |
| 168 | Base + Web Fit Up | 2018-07-07 11:31 → 2018-06-07 16:00 (-30d) | 2018-07-09 07:31 → 2018-06-08 10:00 (-31d) | 12h → 10h |  | 105.22d → 151.03d | 163, 164 → 162 | baseline start 2018-07-07 11:31 → 2018-06-05 09:30; baseline finish 2018-07-09 07:31 → 2018-06-05 19:30 |
| 169 | Base + Web Welding | 2018-07-09 07:31 → 2018-06-08 10:00 (-31d) | 2018-07-09 16:31 → 2018-06-11 14:00 (-28d) | 9h → 20h |  | 105.22d → 151.03d |  | baseline start 2018-07-09 07:31 → 2018-06-05 19:30; baseline finish 2018-07-09 16:31 → 2018-06-07 07:30 |
| 170 | Ribs+Web Fit Up | 2018-07-09 16:31 → 2018-06-11 14:00 (-28d) | 2018-07-10 16:31 → 2018-06-13 12:00 (-27d) | 16h → 30h |  | 105.22d → 151.03d |  | baseline start 2018-07-09 16:31 → 2018-06-07 07:30; baseline finish 2018-07-10 16:31 → 2018-06-08 21:30 |
| 171 | Ribs+Web Welding | 2018-07-10 16:31 → 2018-06-13 12:00 (-27d) | 2018-07-11 16:31 → 2018-06-19 22:00 (-22d) | 16h → 90h |  | 105.22d → 151.03d |  | baseline start 2018-07-10 16:31 → 2018-06-08 21:30; baseline finish 2018-07-11 16:31 → 2018-06-16 15:30 |
| 172 | **Davit Pipe Fabrication** | 2018-07-13 08:31 → 2018-06-20 06:00 (-23d) | 2018-07-18 07:31 → 2018-06-22 11:00 (-26d) | 5.88d → 4.62d |  | 96.34d → 151.03d |  | baseline start 2018-07-13 08:31 → 2018-06-16 15:30; baseline finish 2018-07-18 07:31 → 2018-06-19 20:30 |
| 173 | Pipe Transfere | 2018-07-13 08:31 → 2018-06-20 06:00 (-23d) | 2018-07-17 08:31 → 2018-06-20 07:00 (-27d) | 4d → 1h |  | 96.34d → 151.03d | STD flanges, Pipes, davit arm pipe & plate → 171 | baseline start 2018-07-13 08:31 → 2018-06-16 15:30; baseline finish 2018-07-17 08:31 → 2018-06-16 16:30 |
| 175 | Support Pl Marking | 2018-07-13 08:31 → 2018-06-20 10:00 (-23d) | 2018-07-13 10:31 → 2018-06-20 11:00 (-23d) | 2h → 1h |  | 101.72d → 151.03d | STD flanges, Pipes, davit arm pipe & plate → 174 | baseline start 2018-07-13 08:31 → 2018-06-16 19:30; baseline finish 2018-07-13 10:31 → 2018-06-16 20:30 |
| 176 | Gusset Pl Marking | 2018-07-13 08:31 → 2018-06-20 11:00 (-23d) | 2018-07-13 10:31 → 2018-06-20 12:00 (-23d) | 2h → 1h |  | 101.97d → 151.03d | STD flanges, Pipes, davit arm pipe & plate → 175 | baseline start 2018-07-13 08:31 → 2018-06-16 20:30; baseline finish 2018-07-13 10:31 → 2018-06-16 21:30 |
| 177 | Base Hub Marking | 2018-07-13 08:31 → 2018-06-20 12:00 (-23d) | 2018-07-13 09:31 → 2018-06-20 12:30 (-23d) | 1h → 0.5h |  | 102.09d → 151.03d | STD flanges, Pipes, davit arm pipe & plate → 176 | baseline start 2018-07-13 08:31 → 2018-06-16 21:30; baseline finish 2018-07-13 09:31 → 2018-06-16 22:00 |
| 179 | Support Pl Cutting | 2018-07-13 10:31 → 2018-06-20 16:00 (-23d) | 2018-07-13 12:31 → 2018-06-20 16:45 (-23d) | 2h → 0.75h |  | 101.72d → 151.03d | 175 → 178 | baseline start 2018-07-13 10:31 → 2018-06-18 09:30; baseline finish 2018-07-13 12:31 → 2018-06-18 10:15 |
| 182 | Pivot Pl Grinding | 2018-07-17 18:31 → 2018-06-21 09:00 (-26d) | 2018-07-17 19:31 → 2018-06-21 10:00 (-26d) |  |  | 96.34d → 151.03d | Support Pl Grinding-10 Nos → 181 | baseline start 2018-07-17 18:31 → 2018-06-18 18:30; baseline finish 2018-07-17 19:31 → 2018-06-18 19:30 |
| 185 | Pivot Pl Welding | 2018-07-17 21:31 → 2018-06-21 21:00 (-26d) | 2018-07-18 06:31 → 2018-06-22 07:00 (-26d) | 1h → 2h |  | 96.34d → 151.03d | Pipe Welding -2 Nos → 184 | baseline start 2018-07-17 21:31 → 2018-06-19 14:30; baseline finish 2018-07-18 06:31 → 2018-06-19 16:30 |
| 187 | **Lifting Lug Pad** | 2018-07-31 08:46 → 2018-06-22 11:00 (-39d) | 2018-08-02 15:46 → 2018-06-22 14:30 (-41d) | 4.88d → 0.44d |  | 71.31d → 151.03d |  | baseline start 2018-07-31 08:46 → 2018-06-19 20:30; baseline finish 2018-08-02 15:46 → 2018-06-20 08:00 |
| 188 | Plate Issuence | 2018-07-31 08:46 → 2018-06-22 11:00 (-39d) | 2018-08-02 08:46 → 2018-06-22 12:00 (-41d) | 4d → 1h |  | 71.31d → 151.03d | Lifting lug RF pad & Pad plate → 172 | resources none → Helper [300%]; baseline start 2018-07-31 08:46 → 2018-06-19 20:30; baseline finish 2018-08-02 08:46 → 2018-06-19 21:30 |
| 189 | Lifting Lug Pad Marking | 2018-08-02 08:46 → 2018-06-22 12:00 (-41d) | 2018-08-02 11:46 → 2018-06-22 12:30 (-41d) | 3h → 0.5h |  | 71.31d → 151.03d |  | baseline start 2018-08-02 08:46 → 2018-06-19 21:30; baseline finish 2018-08-02 11:46 → 2018-06-19 22:00 |
| 190 | Lifting Lug Pad Cutting | 2018-08-02 11:46 → 2018-06-22 12:30 (-41d) | 2018-08-02 13:46 → 2018-06-22 13:30 (-41d) | 2h → 1h |  | 71.31d → 151.03d |  | baseline start 2018-08-02 11:46 → 2018-06-20 06:00; baseline finish 2018-08-02 13:46 → 2018-06-20 07:00 |
| 191 | Lifting Lugs Pad Grinding | 2018-08-02 13:46 → 2018-06-22 13:30 (-41d) | 2018-08-02 15:46 → 2018-06-22 14:30 (-41d) | 2h → 1h |  | 71.31d → 151.03d |  | baseline start 2018-08-02 13:46 → 2018-06-20 07:00; baseline finish 2018-08-02 15:46 → 2018-06-20 08:00 |
| 192 | **Lifting Lug Preparation** | 2018-07-31 08:46 → 2018-06-22 14:30 (-39d) | 2018-08-02 14:46 → 2018-06-22 20:00 (-41d) | 4.75d → 0.69d |  | 71.44d → 151.03d |  | baseline start 2018-07-31 08:46 → 2018-06-20 08:00; baseline finish 2018-08-02 14:46 → 2018-06-20 13:30 |

| ID | Task | Start | Finish | Duration | Total float | Predecessors | Other |
| --- | --- | --- | --- | --- | --- | --- | --- |
| 193 | Lifting Lugs Marking | 2018-07-31 08:46 → 2018-06-22 14:30 (-39d) | 2018-08-02 08:46 → 2018-06-22 15:00 (-41d) | 4d → 0.5h | 71.44d → 151.03d | Lifting lug RF pad & Pad plate → 187 | baseline start 2018-07-31 08:46 → 2018-06-20 08:00; baseline finish 2018-08-02 08:46 → 2018-06-20 08:30 |
| 194 | Lifting Lugs Cutting | 2018-08-02 08:46 → 2018-06-22 15:00 (-41d) | 2018-08-02 10:46 → 2018-06-22 16:00 (-41d) | 2h → 1h | 71.44d → 151.03d |  | baseline start 2018-08-02 08:46 → 2018-06-20 08:30; baseline finish 2018-08-02 10:46 → 2018-06-20 09:30 |
| 195 | Lifting Lugs Grinding | 2018-08-02 10:46 → 2018-06-22 16:00 (-41d) | 2018-08-02 12:46 → 2018-06-22 19:00 (-41d) | 2h → 3h | 71.44d → 151.03d |  | baseline start 2018-08-02 10:46 → 2018-06-20 09:30; baseline finish 2018-08-02 12:46 → 2018-06-20 12:30 |
| 196 | Lifting Lug Drilling | 2018-08-02 12:46 → 2018-06-22 19:00 (-41d) | 2018-08-02 14:46 → 2018-06-22 20:00 (-41d) | 2h → 1h | 71.44d → 151.03d |  | baseline start 2018-08-02 12:46 → 2018-06-20 12:30; baseline finish 2018-08-02 14:46 → 2018-06-20 13:30 |
| 197 | **Channel Cover Handle Prepataion** | 2018-07-07 08:31 → 2018-06-22 20:00 (-15d) | 2018-07-09 08:31 → 2018-06-22 21:30 (-17d) | 2d → 0.19d | 110.22d → 151.03d |  | baseline start 2018-07-07 08:31 → 2018-06-20 13:30; baseline finish 2018-07-09 08:31 → 2018-06-20 15:00 |
| 198 | Ch Cover Ring Forming | 2018-07-07 08:31 → 2018-06-22 20:00 (-15d) | 2018-07-09 08:31 → 2018-06-22 21:00 (-17d) | 2d → 1h | 110.22d → 151.03d | 52 → 192 | baseline start 2018-07-07 08:31 → 2018-06-20 13:30; baseline finish 2018-07-09 08:31 → 2018-06-20 14:30 |
| 199 | Sliding Sling Forming | 2018-07-07 08:31 → 2018-06-22 21:00 (-15d) | 2018-07-09 08:31 → 2018-06-22 21:30 (-17d) | 2d → 0.5h | 110.22d → 151.03d | 52 → 198 | baseline start 2018-07-07 08:31 → 2018-06-20 14:30; baseline finish 2018-07-09 08:31 → 2018-06-20 15:00 |
| 205 | **Baffle & Tb Items Fab** | 2018-06-04 17:01 → 2018-05-21 09:30 (-14d) | 2018-07-11 16:46 → 2018-06-18 12:00 (-23d) | 59.97d → 44.31d | 105.19d → 92.62d |  | baseline start 2018-05-17 17:01 → 2018-05-14 17:00; baseline finish 2018-07-11 16:46 → 2018-06-14 07:00 |
| 206 | **Baffle Preparation** | 2018-06-04 17:01 → 2018-06-04 17:00 | 2018-06-05 16:01 → 2018-06-05 11:00 | 1.88d → 1.25d | 152.53d → 92.62d |  | baseline start 2018-05-17 17:01 → 2018-05-14 17:00; baseline finish 2018-05-18 16:01 → 2018-05-15 11:00 |
| 207 | Baffle Plate Transfer | 2018-06-04 17:01 → 2018-06-04 17:00 | 2018-06-05 09:01 → 2018-06-04 21:00 (-1d) | 8h → 4h | 152.53d → 92.62d | Baffle Plate-Sa 516 Gr60 → 43 | resources Store; Plate (Cost) [0.1%] → Plate (Cost) [0.1%]; Helper [400%]; baseline start 2018-05-17 17:01 → 2018-05-14 17:00; baseline finish 2018-05-18 09:01 → 2018-05-14 21:00 |
| 208 | Baffle Marking | 2018-06-05 09:01 → 2018-06-04 21:00 (-1d) | 2018-06-05 13:01 → 2018-06-05 07:00 | 4h → 2h | 152.53d → 92.62d |  | baseline start 2018-05-18 09:01 → 2018-05-14 21:00; baseline finish 2018-05-18 13:01 → 2018-05-15 07:00 |
| 209 | Baffle Profile Cutting | 2018-06-05 13:01 → 2018-06-05 07:00 | 2018-06-05 16:01 → 2018-06-05 11:00 | 3h → 4h | 152.53d → 92.62d |  | resources SC (Work) → Helper; Gas Cutter; baseline start 2018-05-18 13:01 → 2018-05-15 07:00; baseline finish 2018-05-18 16:01 → 2018-05-15 11:00 |
| 210 | **Baffle Bend Removal & Stacking** | 2018-06-05 16:01 → 2018-06-05 11:00 | 2018-06-06 13:46 → 2018-06-05 21:30 (-1d) | 1.72d → 1.31d | 152.53d → 92.62d |  | baseline start 2018-05-18 16:01 → 2018-05-15 11:00; baseline finish 2018-05-19 13:46 → 2018-05-15 21:30 |
| 211 | Baffle Pl Bend Removal | 2018-06-05 16:01 → 2018-06-05 11:00 | 2018-06-06 13:31 → 2018-06-05 21:00 (-1d) | 13.5h → 10h | 152.53d → 92.62d | 209 → 206 | baseline start 2018-05-18 16:01 → 2018-05-15 11:00; baseline finish 2018-05-19 13:31 → 2018-05-15 21:00 |
| 213 | **Baffle Drilling** | 2018-06-06 13:46 → 2018-06-05 21:30 (-1d) | 2018-06-08 13:46 → 2018-06-08 21:30 | 4d → 6d | 152.53d → 92.62d |  | baseline start 2018-05-19 13:46 → 2018-05-15 21:30; baseline finish 2018-05-22 13:46 → 2018-05-18 21:30 |
| 214 | Baffle Drilling | 2018-06-06 13:46 → 2018-06-05 21:30 (-1d) | 2018-06-08 13:46 → 2018-06-08 21:30 | 4d → 6d | 152.53d → 92.62d | Baffle Pl Stacking / 100 mm → 210 | baseline start 2018-05-19 13:46 → 2018-05-15 21:30; baseline finish 2018-05-22 13:46 → 2018-05-18 21:30 |
| 215 | **Baffle De Stacking & Chamfering** | 2018-06-08 13:46 → 2018-06-08 21:30 | 2018-06-11 11:46 → 2018-06-11 20:00 | 1.75d → 1.81d | 152.53d → 92.62d |  | baseline start 2018-05-22 13:46 → 2018-05-18 21:30; baseline finish 2018-05-23 11:46 → 2018-05-19 20:00 |
| 218 | **Baffle Stacking & Thro Hole Check** | 2018-06-11 11:46 → 2018-06-11 20:00 | 2018-06-13 06:01 → 2018-06-14 18:00 (+1d) | 3.28d → 5.75d | 152.53d → 92.62d |  | baseline start 2018-05-23 11:46 → 2018-05-19 20:00; baseline finish 2018-05-25 06:01 → 2018-05-23 18:00 |
| 219 | Stacking | 2018-06-11 11:46 → 2018-06-11 20:00 | 2018-06-11 16:01 → 2018-06-12 08:00 (+1d) | 4.25h → 4h | 152.53d → 92.62d | Baffle Chamfering → 215 | baseline start 2018-05-23 11:46 → 2018-05-19 20:00; baseline finish 2018-05-23 16:01 → 2018-05-21 08:00 |
| 220 | Baffle Hole Alingment | 2018-06-11 16:01 → 2018-06-12 08:00 (+1d) | 2018-06-11 18:01 → 2018-06-12 14:00 (+1d) | 2h → 6h | 152.53d → 92.62d |  | baseline start 2018-05-23 16:01 → 2018-05-21 08:00; baseline finish 2018-05-23 18:01 → 2018-05-21 14:00 |
| 224 | **Support Plate Marking** | 2018-06-04 17:01 → 2018-06-14 18:00 (+10d) | 2018-06-06 07:01 → 2018-06-15 08:00 (+9d) | 2.75d → 0.75d | 160.16d → 92.62d |  | baseline start 2018-05-17 17:01 → 2018-05-23 18:00; baseline finish 2018-05-19 07:01 → 2018-05-24 08:00 |
| 225 | Support Plate Transfer | 2018-06-04 17:01 → 2018-06-14 18:00 (+10d) | 2018-06-04 21:01 → 2018-06-14 20:00 (+10d) | 0.5d → 2h | 160.16d → 92.62d | Baffle Plate-Sa 516 Gr60 → 218 | resources Store; Plate (Cost) [0.1%] → Plate (Cost) [0.1%]; Helper [200%]; baseline start 2018-05-17 17:01 → 2018-05-23 18:00; baseline finish 2018-05-17 21:01 → 2018-05-23 20:00 |
| 226 | Support Marking | 2018-06-04 21:01 → 2018-06-14 20:00 (+10d) | 2018-06-05 07:01 → 2018-06-14 22:00 (+9d) |  | 160.16d → 92.62d |  | baseline start 2018-05-17 21:01 → 2018-05-23 20:00; baseline finish 2018-05-18 07:01 → 2018-05-23 22:00 |
| 227 | Support Profile Cutting | 2018-06-05 07:01 → 2018-06-15 06:00 (+10d) | 2018-06-06 07:01 → 2018-06-15 08:00 (+9d) | 2d → 2h | 160.16d → 92.62d |  | baseline start 2018-05-18 07:01 → 2018-05-24 06:00; baseline finish 2018-05-19 07:01 → 2018-05-24 08:00 |
| 228 | **Support Plate Bend Removal** | 2018-06-06 07:01 → 2018-06-15 08:00 (+9d) | 2018-06-06 11:01 → 2018-06-15 14:00 (+9d) | 0.5d → 0.75d | 160.16d → 92.62d |  | baseline start 2018-05-19 07:01 → 2018-05-24 08:00; baseline finish 2018-05-19 11:01 → 2018-05-24 14:00 |
| 229 | Support Pl Bend Removal | 2018-06-06 07:01 → 2018-06-15 08:00 (+9d) | 2018-06-06 11:01 → 2018-06-15 12:00 (+9d) |  | 160.16d → 92.62d | 227 → 224 | baseline start 2018-05-19 07:01 → 2018-05-24 08:00; baseline finish 2018-05-19 11:01 → 2018-05-24 12:00 |
| 231 | **Support Plate Drlinng** | 2018-06-06 11:01 → 2018-06-15 14:00 (+9d) | 2018-06-06 21:01 → 2018-06-16 14:00 (+10d) | 1.25d → 2d | 160.16d → 92.62d |  | baseline start 2018-05-19 11:01 → 2018-05-24 14:00; baseline finish 2018-05-19 21:01 → 2018-05-25 14:00 |
| 232 | Support Drilling | 2018-06-06 11:01 → 2018-06-15 14:00 (+9d) | 2018-06-06 21:01 → 2018-06-16 14:00 (+10d) | 10h → 2d | 160.16d → 92.62d | 229 → 228 | baseline start 2018-05-19 11:01 → 2018-05-24 14:00; baseline finish 2018-05-19 21:01 → 2018-05-25 14:00 |
| 235 | Support Hole Chamfering | 2018-06-06 21:01 → 2018-06-16 18:00 (+10d) | 2018-06-07 09:01 → 2018-06-18 12:00 (+11d) | 4h → 10h | 160.16d → 92.62d | 232 → 234 | baseline start 2018-05-19 21:01 → 2018-05-25 18:00; baseline finish 2018-05-21 09:01 → 2018-05-28 12:00 |
| 236 | **Tie Rod Preparation** | 2018-07-09 08:46 → 2018-05-21 09:30 (-49d) | 2018-07-11 16:46 → 2018-05-22 17:00 (-50d) | 5d → 2.94d | 105.19d → 130.75d |  | baseline start 2018-07-09 08:46 → 2018-05-21 09:30; baseline finish 2018-07-11 16:46 → 2018-05-22 17:00 |
| 237 | Tie Rod Matl Transfere | 2018-07-09 08:46 → 2018-05-21 09:30 (-49d) | 2018-07-11 08:46 → 2018-05-21 10:00 (-51d) | 4d → 0.5h | 105.19d → 130.75d | Tie Rod-Sa 36 → 50 | resources Store; Rod (Cost) [0.1%] → Rod (Cost) [0.1%]; Helper; baseline start 2018-07-09 08:46 → 2018-05-21 09:30; baseline finish 2018-07-11 08:46 → 2018-05-21 10:00 |
| 238 | Rod Cutting | 2018-07-11 08:46 → 2018-05-21 10:00 (-51d) | 2018-07-11 10:46 → 2018-05-21 11:00 (-51d) | 2h → 1h | 105.19d → 130.75d |  | baseline start 2018-07-11 08:46 → 2018-05-21 10:00; baseline finish 2018-07-11 10:46 → 2018-05-21 11:00 |
| 239 | Thread Machining. | 2018-07-11 10:46 → 2018-05-21 11:00 (-51d) | 2018-07-11 13:46 → 2018-05-22 11:00 (-50d) | 3h → 2d | 105.19d → 130.75d |  | baseline start 2018-07-11 10:46 → 2018-05-21 11:00; baseline finish 2018-07-11 13:46 → 2018-05-22 11:00 |
| 240 | Joining | 2018-07-11 13:46 → 2018-05-22 11:00 (-50d) | 2018-07-11 16:46 → 2018-05-22 17:00 (-50d) | 3h → 6h | 105.19d → 130.75d |  | baseline start 2018-07-11 13:46 → 2018-05-22 11:00; baseline finish 2018-07-11 16:46 → 2018-05-22 17:00 |
| 241 | **Spacer Tube Preparation** | 2018-06-06 08:31 → 2018-05-22 17:00 (-15d) | 2018-06-07 11:31 → 2018-05-24 11:00 (-14d) | 2.38d → 3.25d | 159.84d → 130.75d |  | baseline start 2018-06-06 08:31 → 2018-05-22 17:00; baseline finish 2018-06-07 11:31 → 2018-05-24 11:00 |
| 242 | Spacer Tube Transfere | 2018-06-06 08:31 → 2018-05-22 17:00 (-15d) | 2018-06-06 12:31 → 2018-05-22 18:00 (-15d) | 4h → 1h | 159.84d → 130.75d | Spacer Tube-Sa 179 → 236 | resources Tube (Cost) [0.1%]; Store → Tube (Cost) [0.1%]; Helper; baseline start 2018-06-06 08:31 → 2018-05-22 17:00; baseline finish 2018-06-06 12:31 → 2018-05-22 18:00 |
| 245 | Cleaninng | 2018-06-07 10:31 → 2018-05-24 10:00 (-14d) | 2018-06-07 11:31 → 2018-05-24 11:00 (-14d) |  | 159.84d → 130.75d | Lenngth Machining → 244 | baseline start 2018-06-07 10:31 → 2018-05-24 10:00; baseline finish 2018-06-07 11:31 → 2018-05-24 11:00 |
| 246 | **Sealing Strip Preparation** | 2018-06-04 17:01 → 2018-06-04 17:00 | 2018-06-07 15:01 → 2018-06-06 09:30 (-1d) | 5.75d → 3.06d | 159.41d → 110.94d |  | baseline start 2018-05-17 17:01 → 2018-05-14 17:00; baseline finish 2018-05-21 15:01 → 2018-05-16 09:30 |
| 247 | Sealing Strip Marking | 2018-06-04 17:01 → 2018-06-04 17:00 | 2018-06-04 18:01 → 2018-06-04 21:15 | 1h → 4.25h | 159.41d → 110.94d | Sealing Strip Plate-Sa 516 Gr60 → 44 | baseline start 2018-05-17 17:01 → 2018-05-14 17:00; baseline finish 2018-05-17 18:01 → 2018-05-14 21:15 |
| 248 | Sealing Strip Cutting | 2018-06-04 18:01 → 2018-06-04 21:15 | 2018-06-04 21:01 → 2018-06-05 12:30 (+1d) | 3h → 7.25h | 159.41d → 110.94d |  | baseline start 2018-05-17 18:01 → 2018-05-14 21:15; baseline finish 2018-05-17 21:01 → 2018-05-15 12:30 |
| 249 | Sealing Strip Bend Removal | 2018-06-04 21:01 → 2018-06-05 12:30 (+1d) | 2018-06-06 07:01 → 2018-06-05 20:30 (-1d) | 18h → 8h | 159.41d → 110.94d |  | baseline start 2018-05-17 21:01 → 2018-05-15 12:30; baseline finish 2018-05-19 07:01 → 2018-05-15 20:30 |
| 250 | Sealing Strip Grinding | 2018-06-06 07:01 → 2018-06-05 20:30 (-1d) | 2018-06-07 07:01 → 2018-06-05 21:30 (-2d) | 16h → 1h | 159.41d → 110.94d |  | baseline start 2018-05-19 07:01 → 2018-05-15 20:30; baseline finish 2018-05-21 07:01 → 2018-05-15 21:30 |
| 251 | Sealing Strip Joining | 2018-06-07 07:01 → 2018-06-05 21:30 (-2d) | 2018-06-07 11:01 → 2018-06-06 07:30 (-1d) | 4h → 2h | 159.41d → 110.94d |  | baseline start 2018-05-21 07:01 → 2018-05-15 21:30; baseline finish 2018-05-21 11:01 → 2018-05-16 07:30 |
| 252 | Sealing Strip Dress Up | 2018-06-07 11:01 → 2018-06-06 07:30 (-1d) | 2018-06-07 15:01 → 2018-06-06 09:30 (-1d) | 4h → 2h | 159.41d → 110.94d |  | baseline start 2018-05-21 11:01 → 2018-05-16 07:30; baseline finish 2018-05-21 15:01 → 2018-05-16 09:30 |
| 253 | **Sliding Strip Preparation** | 2018-06-04 17:01 → 2018-06-04 17:00 | 2018-06-07 15:01 → 2018-06-05 11:00 (-2d) | 5.75d → 1.25d | 159.41d → 112.75d |  | baseline start 2018-05-17 17:01 → 2018-05-14 17:00; baseline finish 2018-05-21 15:01 → 2018-05-15 11:00 |
| 254 | Sliding Strip Marking | 2018-06-04 17:01 → 2018-06-04 17:00 | 2018-06-04 18:01 → 2018-06-04 18:00 |  | 159.41d → 112.75d | Sliding Strip Plate-Sa 516 Gr60 → 45 | resources Helper; Fitter → Helper; Plate (Cost) [0.1%]; Fitter; baseline start 2018-05-17 17:01 → 2018-05-14 17:00; baseline finish 2018-05-17 18:01 → 2018-05-14 18:00 |
| 255 | Sliding Strip Cutting | 2018-06-04 18:01 → 2018-06-04 18:00 | 2018-06-04 21:01 → 2018-06-04 19:30 | 3h → 1.5h | 159.41d → 112.75d |  | baseline start 2018-05-17 18:01 → 2018-05-14 18:00; baseline finish 2018-05-17 21:01 → 2018-05-14 19:30 |
| 256 | Sliding Strip Bend Removal | 2018-06-04 21:01 → 2018-06-04 19:30 | 2018-06-06 07:01 → 2018-06-04 20:30 (-2d) | 18h → 1h | 159.41d → 112.75d |  | baseline start 2018-05-17 21:01 → 2018-05-14 19:30; baseline finish 2018-05-19 07:01 → 2018-05-14 20:30 |
| 257 | Sliding Strip Grinding | 2018-06-06 07:01 → 2018-06-04 20:30 (-2d) | 2018-06-07 07:01 → 2018-06-04 21:00 (-3d) | 16h → 0.5h | 159.41d → 112.75d |  | baseline start 2018-05-19 07:01 → 2018-05-14 20:30; baseline finish 2018-05-21 07:01 → 2018-05-14 21:00 |
| 258 | Sliding Strip Joining | 2018-06-07 07:01 → 2018-06-04 21:00 (-3d) | 2018-06-07 11:01 → 2018-06-05 10:00 (-2d) | 4h → 5h | 159.41d → 112.75d |  | baseline start 2018-05-21 07:01 → 2018-05-14 21:00; baseline finish 2018-05-21 11:01 → 2018-05-15 10:00 |
| 259 | Sliding Strip Dress Up | 2018-06-07 11:01 → 2018-06-05 10:00 (-2d) | 2018-06-07 15:01 → 2018-06-05 11:00 (-2d) | 4h → 1h | 159.41d → 112.75d |  | baseline start 2018-05-21 11:01 → 2018-05-15 10:00; baseline finish 2018-05-21 15:01 → 2018-05-15 11:00 |
| 265 | **Shell Fabrication** | 2018-06-04 17:01 → 2018-06-04 17:00 | 2018-07-24 06:51 → 2018-07-03 13:15 (-21d) | 78.73d → 45.53d | 86.43d → 77.91d |  | baseline start 2018-05-17 17:01 → 2018-05-14 17:00; baseline finish 2018-07-24 06:51 → 2018-06-20 19:00 |
| 266 | **Shell Marking & Cutting** | 2018-06-04 17:01 → 2018-06-04 17:00 | 2018-06-06 19:16 → 2018-06-05 08:00 (-1d) | 4.28d → 0.88d | 131.66d → 77.91d |  | baseline start 2018-05-17 17:01 → 2018-05-14 17:00; baseline finish 2018-05-19 19:16 → 2018-05-15 08:00 |
| 267 | Sh Plate Trnasfer | 2018-06-04 17:01 → 2018-06-04 17:00 | 2018-06-06 17:01 → 2018-06-04 21:00 (-2d) | 4d → 4h | 131.66d → 77.91d | Shell Plate-Sa 516 Gr60 → 31 | resources Plate (Cost) [0.1%]; Forging Non-Std (Cost) [0.1%]; Store → Plate (Cost) [0.1%]; Store; baseline start 2018-05-17 17:01 → 2018-05-14 17:00; baseline finish 2018-05-19 17:01 → 2018-05-14 21:00 |
| 268 | Sh-Marking | 2018-06-06 17:01 → 2018-06-04 21:00 (-2d) | 2018-06-06 19:16 → 2018-06-05 08:00 (-1d) | 2.25h → 3h | 131.66d → 77.91d |  | baseline start 2018-05-19 17:01 → 2018-05-14 21:00; baseline finish 2018-05-19 19:16 → 2018-05-15 08:00 |
| 269 | **Shell Plate Cutting** | 2018-06-06 19:16 → 2018-06-05 08:00 (-1d) | 2018-06-07 10:46 → 2018-06-05 12:00 (-2d) | 0.94d → 0.5d | 131.66d → 77.91d |  | baseline start 2018-05-19 19:16 → 2018-05-15 08:00; baseline finish 2018-05-21 10:46 → 2018-05-15 12:00 |
| 270 | Sh-Cutting | 2018-06-06 19:16 → 2018-06-05 08:00 (-1d) | 2018-06-07 10:46 → 2018-06-05 12:00 (-2d) | 7.5h → 4h | 131.66d → 77.91d | 268 → 266 | baseline start 2018-05-19 19:16 → 2018-05-15 08:00; baseline finish 2018-05-21 10:46 → 2018-05-15 12:00 |
| 271 | **Sh Pl Side Grinding** | 2018-06-07 10:46 → 2018-06-05 12:00 (-2d) | 2018-06-07 14:46 → 2018-06-05 15:00 (-2d) | 0.5d → 0.38d | 131.66d → 77.91d |  | baseline start 2018-05-21 10:46 → 2018-05-15 12:00; baseline finish 2018-05-21 14:46 → 2018-05-15 15:00 |
| 272 | Sh Pl Side Bevel Cutting | 2018-06-07 10:46 → 2018-06-05 12:00 (-2d) | 2018-06-07 14:46 → 2018-06-05 13:00 (-2d) | 4h → 1h | 131.66d → 77.91d |  | baseline start 2018-05-21 10:46 → 2018-05-15 12:00; baseline finish 2018-05-21 14:46 → 2018-05-15 13:00 |
| 273 | Sh Pl Side Bevel Cutting | 2018-06-07 10:46 → 2018-06-05 13:00 (-2d) | 2018-06-07 14:46 → 2018-06-05 14:00 (-2d) | 4h → 1h | 132.33d → 77.91d | 270 → 272 | baseline start 2018-05-21 10:46 → 2018-05-15 13:00; baseline finish 2018-05-21 14:46 → 2018-05-15 14:00 |
| 274 | Sh Pl Side Bevel Cutting | 2018-06-07 10:46 → 2018-06-05 14:00 (-2d) | 2018-06-07 13:46 → 2018-06-05 15:00 (-2d) | 3h → 1h | 136.18d → 77.91d | 270 → 273 | baseline start 2018-05-21 10:46 → 2018-05-15 14:00; baseline finish 2018-05-21 13:46 → 2018-05-15 15:00 |
| 275 | **Shell Plate Edge Preparation** | 2018-06-07 13:46 → 2018-06-05 15:00 (-2d) | 2018-06-07 17:16 → 2018-06-05 21:00 (-2d) | 0.44d → 0.75d | 131.79d → 77.91d |  | baseline start 2018-05-21 13:46 → 2018-05-15 15:00; baseline finish 2018-05-21 17:16 → 2018-05-15 21:00 |
| 276 | Sh-Bevel Grinding | 2018-06-07 14:46 → 2018-06-05 15:00 (-2d) | 2018-06-07 17:16 → 2018-06-05 17:00 (-2d) | 2.5h → 2h | 131.66d → 77.91d | 272 → 271 | baseline start 2018-05-21 14:46 → 2018-05-15 15:00; baseline finish 2018-05-21 17:16 → 2018-05-15 17:00 |
| 277 | Sh-Bevel Grinding | 2018-06-07 14:46 → 2018-06-05 17:00 (-2d) | 2018-06-07 16:46 → 2018-06-05 19:00 (-2d) |  | 132.33d → 77.91d | 273 → 276 | baseline start 2018-05-21 14:46 → 2018-05-15 17:00; baseline finish 2018-05-21 16:46 → 2018-05-15 19:00 |
| 278 | Sh-Bevel Grinding | 2018-06-07 13:46 → 2018-06-05 19:00 (-2d) | 2018-06-07 14:46 → 2018-06-05 21:00 (-2d) | 1h → 2h | 136.18d → 77.91d | 274 → 277 | baseline start 2018-05-21 13:46 → 2018-05-15 19:00; baseline finish 2018-05-21 14:46 → 2018-05-15 21:00 |
| 279 | **Shell Pre Bending** | 2018-06-07 14:46 → 2018-06-05 21:00 (-2d) | 2018-06-07 19:16 → 2018-06-06 11:00 (-1d) | 0.56d → 0.75d | 131.97d → 77.91d |  | baseline start 2018-05-21 14:46 → 2018-05-15 21:00; baseline finish 2018-05-21 19:16 → 2018-05-16 11:00 |
| 280 | Sh-Pre Bend | 2018-06-07 17:16 → 2018-06-05 21:00 (-2d) | 2018-06-07 19:16 → 2018-06-06 07:00 (-1d) |  | 131.66d → 77.91d | 276 → 275 | baseline start 2018-05-21 17:16 → 2018-05-15 21:00; baseline finish 2018-05-21 19:16 → 2018-05-16 07:00 |
| 281 | Sh-Pre Bend | 2018-06-07 16:46 → 2018-06-06 07:00 (-1d) | 2018-06-07 18:46 → 2018-06-06 09:00 (-1d) |  | 132.33d → 77.91d | 277 → 280 | baseline start 2018-05-21 16:46 → 2018-05-16 07:00; baseline finish 2018-05-21 18:46 → 2018-05-16 09:00 |
| 282 | Sh-Pre Bend | 2018-06-07 14:46 → 2018-06-06 09:00 (-1d) | 2018-06-07 16:46 → 2018-06-06 11:00 (-1d) |  | 136.18d → 77.91d | 278 → 281 | baseline start 2018-05-21 14:46 → 2018-05-16 09:00; baseline finish 2018-05-21 16:46 → 2018-05-16 11:00 |
| 283 | **Shell Pl Pre Bend Cut Off** | 2018-06-07 16:46 → 2018-06-06 11:00 (-1d) | 2018-06-07 19:46 → 2018-06-06 14:00 (-1d) |  | 131.97d → 77.91d |  | baseline start 2018-05-21 16:46 → 2018-05-16 11:00; baseline finish 2018-05-21 19:46 → 2018-05-16 14:00 |

| ID | Task | Start | Finish | Duration | Total float | Predecessors | Other |
| --- | --- | --- | --- | --- | --- | --- | --- |
| 284 | Sh-Pre Bend Cut Off | 2018-06-07 19:16 → 2018-06-06 11:00 (-1d) | 2018-06-07 19:46 → 2018-06-06 12:00 (-1d) | 0.5h → 1h | 131.66d → 77.91d | 280 → 279 | baseline start 2018-05-21 19:16 → 2018-05-16 11:00; baseline finish 2018-05-21 19:46 → 2018-05-16 12:00 |
| 285 | Sh-Pre Bend Cut Off | 2018-06-07 18:46 → 2018-06-06 12:00 (-1d) | 2018-06-07 19:16 → 2018-06-06 13:00 (-1d) | 0.5h → 1h | 132.33d → 77.91d | 281 → 284 | baseline start 2018-05-21 18:46 → 2018-05-16 12:00; baseline finish 2018-05-21 19:16 → 2018-05-16 13:00 |
| 286 | Sh-Pre Bend Cut Off | 2018-06-07 16:46 → 2018-06-06 13:00 (-1d) | 2018-06-07 17:46 → 2018-06-06 14:00 (-1d) |  | 136.18d → 77.91d | 282 → 285 | baseline start 2018-05-21 16:46 → 2018-05-16 13:00; baseline finish 2018-05-21 17:46 → 2018-05-16 14:00 |
| 287 | **Shell Plate Ls Ep** | 2018-06-07 17:46 → 2018-06-06 14:00 (-1d) | 2018-06-08 06:16 → 2018-06-07 10:00 (-1d) | 0.56d → 1.5d | 131.91d → 77.91d |  | baseline start 2018-05-21 17:46 → 2018-05-16 14:00; baseline finish 2018-05-22 06:16 → 2018-05-17 10:00 |
| 288 | Sh-Pre Bend Ls Ep | 2018-06-07 19:46 → 2018-06-06 14:00 (-1d) | 2018-06-08 06:16 → 2018-06-06 18:00 (-2d) | 2.5h → 4h | 131.66d → 77.91d | 284 → 283 | baseline start 2018-05-21 19:46 → 2018-05-16 14:00; baseline finish 2018-05-22 06:16 → 2018-05-16 18:00 |
| 289 | Sh-Pre Bend Ls Ep | 2018-06-07 19:16 → 2018-06-06 18:00 (-1d) | 2018-06-07 21:16 → 2018-06-06 22:00 (-1d) | 2h → 4h | 132.33d → 77.91d | 285 → 288 | baseline start 2018-05-21 19:16 → 2018-05-16 18:00; baseline finish 2018-05-21 21:16 → 2018-05-16 22:00 |
| 290 | Sh-Pre Bend Ls Ep | 2018-06-07 17:46 → 2018-06-07 06:00 | 2018-06-07 18:46 → 2018-06-07 10:00 | 1h → 4h | 136.18d → 77.91d | 286 → 289 | baseline start 2018-05-21 17:46 → 2018-05-17 06:00; baseline finish 2018-05-21 18:46 → 2018-05-17 10:00 |
| 291 | **Shell Rolling** | 2018-06-07 18:46 → 2018-06-07 10:00 | 2018-06-08 10:16 → 2018-06-07 22:00 (-1d) | 0.94d → 1.5d | 132.1d → 77.91d |  | baseline start 2018-05-21 18:46 → 2018-05-17 10:00; baseline finish 2018-05-22 10:16 → 2018-05-17 22:00 |
| 293 | Sh-Rolling | 2018-06-07 21:16 → 2018-06-07 14:00 | 2018-06-08 09:16 → 2018-06-07 18:00 (-1d) |  | 132.33d → 77.91d | 289 → 292 | baseline start 2018-05-21 21:16 → 2018-05-17 14:00; baseline finish 2018-05-22 09:16 → 2018-05-17 18:00 |
| 294 | Sh-Rolling | 2018-06-07 18:46 → 2018-06-07 18:00 | 2018-06-08 06:46 → 2018-06-07 22:00 (-1d) |  | 136.18d → 77.91d | 290 → 293 | baseline start 2018-05-21 18:46 → 2018-05-17 18:00; baseline finish 2018-05-22 06:46 → 2018-05-17 22:00 |
| 295 | **Shell Cir Length & Ep Correction** | 2018-06-08 06:46 → 2018-06-08 06:00 | 2018-06-08 12:08 → 2018-06-08 15:00 | 0.67d → 1.12d | 132.1d → 77.91d |  | baseline start 2018-05-22 06:46 → 2018-05-18 06:00; baseline finish 2018-05-22 12:08 → 2018-05-18 15:00 |
| 296 | Sh-Ls Correction | 2018-06-08 10:16 → 2018-06-08 06:00 | 2018-06-08 12:08 → 2018-06-08 09:00 | 1.88h → 3h | 131.66d → 77.91d | Sh-Rolling 1/3 → 291 | baseline start 2018-05-22 10:16 → 2018-05-18 06:00; baseline finish 2018-05-22 12:08 → 2018-05-18 09:00 |
| 297 | Sh-Ls Correction | 2018-06-08 09:16 → 2018-06-08 09:00 | 2018-06-08 10:46 → 2018-06-08 12:00 | 1.5h → 3h | 132.33d → 77.91d | 293 → 296 | baseline start 2018-05-22 09:16 → 2018-05-18 09:00; baseline finish 2018-05-22 10:46 → 2018-05-18 12:00 |
| 298 | Sh-Ls Correction | 2018-06-08 06:46 → 2018-06-08 12:00 | 2018-06-08 07:31 → 2018-06-08 15:00 | 0.75h → 3h | 136.18d → 77.91d | 294 → 297 | baseline start 2018-05-22 06:46 → 2018-05-18 12:00; baseline finish 2018-05-22 07:31 → 2018-05-18 15:00 |
| 299 | **Shell Ls Seams Fit Up** | 2018-06-08 07:31 → 2018-06-08 15:00 | 2018-06-08 14:38 → 2018-06-11 11:00 (+3d) | 0.89d → 1.5d | 132.24d → 77.91d |  | baseline start 2018-05-22 07:31 → 2018-05-18 15:00; baseline finish 2018-05-22 14:38 → 2018-05-19 11:00 |
| 300 | Sh-Ls Fit Up | 2018-06-08 12:08 → 2018-06-08 15:00 | 2018-06-08 14:38 → 2018-06-08 19:00 | 2.5h → 4h | 131.66d → 77.91d | 296 → 295 | resources Helper; SMAW Welder; Fitter [200%] → none; baseline start 2018-05-22 12:08 → 2018-05-18 15:00; baseline finish 2018-05-22 14:38 → 2018-05-18 19:00 |
| 301 | Sh-Ls Fit Up | 2018-06-08 10:46 → 2018-06-08 19:00 | 2018-06-08 12:46 → 2018-06-11 07:00 (+3d) | 2h → 4h | 132.33d → 77.91d | 297 → 300 | baseline start 2018-05-22 10:46 → 2018-05-18 19:00; baseline finish 2018-05-22 12:46 → 2018-05-19 07:00 |
| 302 | Sh-Ls Fit Up | 2018-06-08 07:31 → 2018-06-11 07:00 (+3d) | 2018-06-08 08:31 → 2018-06-11 11:00 (+3d) | 1h → 4h | 136.18d → 77.91d | 298 → 301 | baseline start 2018-05-22 07:31 → 2018-05-19 07:00; baseline finish 2018-05-22 08:31 → 2018-05-19 11:00 |
| 303 | **Sh Ls Welding Arrangement** | 2018-06-08 08:31 → 2018-06-11 11:00 (+3d) | 2018-06-08 15:53 → 2018-06-11 17:00 (+3d) | 0.92d → 0.75d | 132.43d → 77.91d |  | baseline start 2018-05-22 08:31 → 2018-05-19 11:00; baseline finish 2018-05-22 15:53 → 2018-05-19 17:00 |
| 304 | Sh-Ls Weld Arrangement | 2018-06-08 14:38 → 2018-06-11 11:00 (+3d) | 2018-06-08 15:53 → 2018-06-11 13:00 (+3d) | 1.25h → 2h | 131.66d → 77.91d | 300 → 299 | baseline start 2018-05-22 14:38 → 2018-05-19 11:00; baseline finish 2018-05-22 15:53 → 2018-05-19 13:00 |
| 305 | Sh-Ls Weld Arrangement | 2018-06-08 12:46 → 2018-06-11 13:00 (+3d) | 2018-06-08 13:46 → 2018-06-11 15:00 (+3d) | 1h → 2h | 132.33d → 77.91d | 301 → 304 | baseline start 2018-05-22 12:46 → 2018-05-19 13:00; baseline finish 2018-05-22 13:46 → 2018-05-19 15:00 |
| 306 | Sh-Ls Weld Arrangement | 2018-06-08 08:31 → 2018-06-11 15:00 (+3d) | 2018-06-08 09:01 → 2018-06-11 17:00 (+3d) | 0.5h → 2h | 136.18d → 77.91d | 302 → 305 | baseline start 2018-05-22 08:31 → 2018-05-19 15:00; baseline finish 2018-05-22 09:01 → 2018-05-19 17:00 |
| 307 | **Shell Long Seam Outer Welding** | 2018-06-08 09:01 → 2018-06-11 17:00 (+3d) | 2018-06-11 06:08 → 2018-06-12 19:00 (+1d) | 1.64d → 2.25d | 132.52d → 77.91d |  | baseline start 2018-05-22 09:01 → 2018-05-19 17:00; baseline finish 2018-05-23 06:08 → 2018-05-21 19:00 |
| 308 | Sh-Ls Welding- Top Side | 2018-06-08 15:53 → 2018-06-11 17:00 (+3d) | 2018-06-11 06:08 → 2018-06-12 07:00 (+1d) | 6.25h → 6h | 131.66d → 77.91d | 304 → 303 | baseline start 2018-05-22 15:53 → 2018-05-19 17:00; baseline finish 2018-05-23 06:08 → 2018-05-21 07:00 |
| 309 | Sh-Ls Welding- Top Side | 2018-06-08 13:46 → 2018-06-12 07:00 (+4d) | 2018-06-08 18:46 → 2018-06-12 13:00 (+4d) | 5h → 6h | 132.33d → 77.91d | 305 → 308 | baseline start 2018-05-22 13:46 → 2018-05-21 07:00; baseline finish 2018-05-22 18:46 → 2018-05-21 13:00 |
| 310 | Sh-Ls Welding- Top Side | 2018-06-08 09:01 → 2018-06-12 13:00 (+4d) | 2018-06-08 11:31 → 2018-06-12 19:00 (+4d) | 2.5h → 6h | 136.18d → 77.91d | 306 → 309 | baseline start 2018-05-22 09:01 → 2018-05-21 13:00; baseline finish 2018-05-22 11:31 → 2018-05-21 19:00 |
| 311 | **Sh Ls Back Chip** | 2018-06-08 11:31 → 2018-06-12 19:00 (+4d) | 2018-06-11 10:08 → 2018-06-13 09:00 (+2d) | 1.83d → 0.75d | 132.99d → 77.91d |  | baseline start 2018-05-22 11:31 → 2018-05-21 19:00; baseline finish 2018-05-23 10:08 → 2018-05-22 09:00 |
| 312 | Sh-Ls Welding- Back Chip | 2018-06-11 06:08 → 2018-06-12 19:00 (+1d) | 2018-06-11 10:08 → 2018-06-12 21:00 (+1d) | 4h → 2h | 131.66d → 77.91d | 308 → 307 | baseline start 2018-05-23 06:08 → 2018-05-21 19:00; baseline finish 2018-05-23 10:08 → 2018-05-21 21:00 |
| 313 | Sh-Ls Welding- Back Chip | 2018-06-08 18:46 → 2018-06-12 21:00 (+4d) | 2018-06-08 21:46 → 2018-06-13 07:00 (+5d) | 3h → 2h | 132.33d → 77.91d | 309 → 312 | baseline start 2018-05-22 18:46 → 2018-05-21 21:00; baseline finish 2018-05-22 21:46 → 2018-05-22 07:00 |
| 314 | Sh-Ls Welding- Back Chip | 2018-06-08 11:31 → 2018-06-13 07:00 (+5d) | 2018-06-08 13:31 → 2018-06-13 09:00 (+5d) |  | 136.18d → 77.91d | 310 → 313 | baseline start 2018-05-22 11:31 → 2018-05-22 07:00; baseline finish 2018-05-22 13:31 → 2018-05-22 09:00 |
| 319 | **Sh Inner Ls Flush Grinding** | 2018-06-08 13:31 → 2018-06-14 07:15 (+6d) | 2018-06-11 12:38 → 2018-06-14 10:15 (+3d) | 1.89d → 0.38d | 133.24d → 77.91d |  | baseline start 2018-05-22 13:31 → 2018-05-23 07:15; baseline finish 2018-05-23 12:38 → 2018-05-23 10:15 |
| 320 | Sh Inner Flush Grinding | 2018-06-11 10:08 → 2018-06-14 07:15 (+3d) | 2018-06-11 12:38 → 2018-06-14 08:15 (+3d) | 2.5h → 1h | 131.66d → 77.91d | 312 → 315 | baseline start 2018-05-23 10:08 → 2018-05-23 07:15; baseline finish 2018-05-23 12:38 → 2018-05-23 08:15 |
| 321 | Sh Inner Flush Grinding | 2018-06-08 21:46 → 2018-06-14 08:15 (+6d) | 2018-06-11 07:16 → 2018-06-14 09:15 (+3d) | 1.5h → 1h | 132.33d → 77.91d | 313 → 320 | baseline start 2018-05-22 21:46 → 2018-05-23 08:15; baseline finish 2018-05-23 07:16 → 2018-05-23 09:15 |
| 322 | Sh Inner Flush Grinding | 2018-06-08 13:31 → 2018-06-14 09:15 (+6d) | 2018-06-08 14:31 → 2018-06-14 10:15 (+6d) |  | 136.18d → 77.91d | 314 → 321 | baseline start 2018-05-22 13:31 → 2018-05-23 09:15; baseline finish 2018-05-22 14:31 → 2018-05-23 10:15 |
| 323 | **Sh Ls Radiography** | 2018-06-08 14:31 → 2018-06-14 10:15 (+6d) | 2018-06-11 20:38 → 2018-06-15 18:15 (+4d) | 2.77d → 3d | 133.43d → 77.91d |  | baseline start 2018-05-22 14:31 → 2018-05-23 10:15; baseline finish 2018-05-23 20:38 → 2018-05-24 18:15 |
| 324 | Sh Ls Welding Rt | 2018-06-11 12:38 → 2018-06-14 10:15 (+3d) | 2018-06-11 20:38 → 2018-06-14 18:15 (+3d) |  | 131.66d → 77.91d | 320 → 319 | baseline start 2018-05-23 12:38 → 2018-05-23 10:15; baseline finish 2018-05-23 20:38 → 2018-05-23 18:15 |
| 325 | Sh Ls Welding Rt | 2018-06-11 07:16 → 2018-06-14 18:15 (+3d) | 2018-06-11 15:16 → 2018-06-15 10:15 (+4d) |  | 132.33d → 77.91d | 321 → 324 | baseline start 2018-05-23 07:16 → 2018-05-23 18:15; baseline finish 2018-05-23 15:16 → 2018-05-24 10:15 |
| 326 | Sh Ls Welding Rt | 2018-06-08 14:31 → 2018-06-15 10:15 (+7d) | 2018-06-11 06:31 → 2018-06-15 18:15 (+4d) |  | 136.18d → 77.91d | 322 → 325 | baseline start 2018-05-22 14:31 → 2018-05-24 10:15; baseline finish 2018-05-23 06:31 → 2018-05-24 18:15 |
| 327 | **Shell Re Rolling** | 2018-06-11 06:31 → 2018-06-15 18:15 (+4d) | 2018-06-12 08:38 → 2018-06-16 11:15 (+4d) | 2.27d → 1.12d | 133.43d → 77.91d |  | baseline start 2018-05-23 06:31 → 2018-05-24 18:15; baseline finish 2018-05-24 08:38 → 2018-05-25 11:15 |
| 328 | Sh Re Rolling | 2018-06-11 20:38 → 2018-06-15 18:15 (+4d) | 2018-06-12 08:38 → 2018-06-15 21:15 (+3d) | 4h → 3h | 131.66d → 77.91d | 324 → 323 | baseline start 2018-05-23 20:38 → 2018-05-24 18:15; baseline finish 2018-05-24 08:38 → 2018-05-24 21:15 |
| 329 | Sh Re Rolling | 2018-06-11 15:16 → 2018-06-15 21:15 (+4d) | 2018-06-11 19:16 → 2018-06-16 08:15 (+5d) | 4h → 3h | 132.33d → 77.91d | 325 → 328 | baseline start 2018-05-23 15:16 → 2018-05-24 21:15; baseline finish 2018-05-23 19:16 → 2018-05-25 08:15 |
| 330 | Sh Re Rolling | 2018-06-11 06:31 → 2018-06-16 08:15 (+5d) | 2018-06-11 10:31 → 2018-06-16 11:15 (+5d) | 4h → 3h | 136.18d → 77.91d | 326 → 329 | baseline start 2018-05-23 06:31 → 2018-05-25 08:15; baseline finish 2018-05-23 10:31 → 2018-05-25 11:15 |
| 331 | **Sh Plate Cs Ep Correction** | 2018-06-11 10:31 → 2018-06-16 11:15 (+5d) | 2018-06-12 11:38 → 2018-06-16 17:15 (+4d) | 2.14d → 0.75d | 133.43d → 77.91d |  | baseline start 2018-05-23 10:31 → 2018-05-25 11:15; baseline finish 2018-05-24 11:38 → 2018-05-25 17:15 |
| 332 | Sh Cir Ep Correction | 2018-06-12 08:38 → 2018-06-16 11:15 (+4d) | 2018-06-12 11:38 → 2018-06-16 13:15 (+4d) | 3h → 2h | 131.66d → 77.91d | 328 → 327 | baseline start 2018-05-24 08:38 → 2018-05-25 11:15; baseline finish 2018-05-24 11:38 → 2018-05-25 13:15 |
| 333 | Sh Cir Ep Correction | 2018-06-11 19:16 → 2018-06-16 13:15 (+5d) | 2018-06-12 06:16 → 2018-06-16 15:15 (+4d) | 3h → 2h | 132.33d → 77.91d | 329 → 332 | baseline start 2018-05-23 19:16 → 2018-05-25 13:15; baseline finish 2018-05-24 06:16 → 2018-05-25 15:15 |
| 334 | Sh Cir Ep Correction | 2018-06-11 10:31 → 2018-06-16 15:15 (+5d) | 2018-06-11 13:31 → 2018-06-16 17:15 (+5d) | 3h → 2h | 155.59d → 77.91d | 330 → 333 | baseline start 2018-05-23 10:31 → 2018-05-25 15:15; baseline finish 2018-05-23 13:31 → 2018-05-25 17:15 |
| 335 | **Sh Cir Seam First Fit Up** | 2018-06-12 11:38 → 2018-06-16 17:15 (+4d) | 2018-06-12 17:38 → 2018-06-18 06:15 (+6d) | 0.75d → 0.62d | 131.66d → 77.91d |  | baseline start 2018-05-24 11:38 → 2018-05-25 17:15; baseline finish 2018-05-24 17:38 → 2018-05-28 06:15 |
| 338 | **Sh Cir Seam First Welding** | 2018-06-12 17:38 → 2018-06-18 06:15 (+6d) | 2018-06-13 14:38 → 2018-06-18 21:45 (+5d) | 1.62d → 1.94d | 131.66d → 77.91d |  | baseline start 2018-05-24 17:38 → 2018-05-28 06:15; baseline finish 2018-05-25 14:38 → 2018-05-28 21:45 |
| 339 | Sh Cs Welding Transfere | 2018-06-12 17:38 → 2018-06-18 06:15 (+6d) | 2018-06-12 19:38 → 2018-06-18 08:15 (+6d) |  | 131.66d → 77.91d | Sh Cs Tack Dp Check - [Ls1+Ls2] → 335 | baseline start 2018-05-24 17:38 → 2018-05-28 06:15; baseline finish 2018-05-24 19:38 → 2018-05-28 08:15 |
| 344 | **Sh Cir Seam Second Fitup** | 2018-06-13 14:38 → 2018-06-18 21:45 (+5d) | 2018-06-13 20:38 → 2018-06-19 10:45 (+6d) | 0.75d → 0.62d | 131.66d → 77.91d |  | baseline start 2018-05-25 14:38 → 2018-05-28 21:45; baseline finish 2018-05-25 20:38 → 2018-05-29 10:45 |
| 347 | **Sh Cir Seam Second Welding** | 2018-06-13 20:38 → 2018-06-19 10:45 (+6d) | 2018-06-14 17:38 → 2018-06-20 09:15 (+6d) | 1.62d → 1.81d | 131.66d → 77.91d |  | baseline start 2018-05-25 20:38 → 2018-05-29 10:45; baseline finish 2018-05-28 17:38 → 2018-05-30 09:15 |
| 353 | **Sh Final Length Correction** | 2018-06-14 17:38 → 2018-06-20 09:15 (+6d) | 2018-06-15 14:38 → 2018-06-20 19:15 (+5d) | 1.62d → 1.25d | 131.66d → 77.91d |  | baseline start 2018-05-28 17:38 → 2018-05-30 09:15; baseline finish 2018-05-29 14:38 → 2018-05-30 19:15 |
| 354 | Sh Length Marking | 2018-06-14 17:38 → 2018-06-20 09:15 (+6d) | 2018-06-15 06:38 → 2018-06-20 12:15 (+5d) | 5h → 3h | 131.66d → 77.91d | Sh Cs Flush Grinding [Ls2+Ls3] → 347 | baseline start 2018-05-28 17:38 → 2018-05-30 09:15; baseline finish 2018-05-29 06:38 → 2018-05-30 12:15 |
| 355 | Length Cutting | 2018-06-15 06:38 → 2018-06-20 12:15 (+5d) | 2018-06-15 10:38 → 2018-06-20 15:15 (+5d) | 4h → 3h | 131.66d → 77.91d |  | baseline start 2018-05-29 06:38 → 2018-05-30 12:15; baseline finish 2018-05-29 10:38 → 2018-05-30 15:15 |
| 356 | Grinding & Ep | 2018-06-15 10:38 → 2018-06-20 15:15 (+5d) | 2018-06-15 14:38 → 2018-06-20 19:15 (+5d) |  | 131.66d → 77.91d |  | baseline start 2018-05-29 10:38 → 2018-05-30 15:15; baseline finish 2018-05-29 14:38 → 2018-05-30 19:15 |
| 361 | Sh Cs Welding Transfere | 2018-07-13 14:31 → 2018-06-21 08:15 (-22d) | 2018-07-13 16:31 → 2018-06-21 10:15 (-22d) |  | 99.84d → 77.91d | Sh Cs Tack Dp Check Flg Cs1 → 357 | baseline start 2018-07-13 14:31 → 2018-06-08 14:00; baseline finish 2018-07-13 16:31 → 2018-06-08 16:00 |
| 366 | **Sh Cs Fit Up Flg2** | 2018-07-13 08:31 → 2018-06-22 07:45 (-21d) | 2018-07-13 14:31 → 2018-06-22 10:45 (-21d) | 0.75d → 0.38d | 86.43d → 77.91d |  | baseline start 2018-07-13 08:31 → 2018-06-11 13:30; baseline finish 2018-07-13 14:31 → 2018-06-11 16:30 |
| 368 | Sh Cs Tack Dp Check Flg2 | 2018-07-13 11:31 → 2018-06-22 09:45 (-21d) | 2018-07-13 14:31 → 2018-06-22 10:45 (-21d) | 3h → 1h | 86.43d → 77.91d | Sh Cs Fit Up Flg 2 → 367 | baseline start 2018-07-13 11:31 → 2018-06-11 15:30; baseline finish 2018-07-13 14:31 → 2018-06-11 16:30 |
| 369 | **Sh Cs Welding Flg2** | 2018-07-13 14:31 → 2018-06-22 10:45 (-21d) | 2018-07-16 11:31 → 2018-06-25 08:15 (-21d) | 1.62d → 1.69d | 86.43d → 77.91d |  | baseline start 2018-07-13 14:31 → 2018-06-11 16:30; baseline finish 2018-07-16 11:31 → 2018-06-12 14:00 |
| 370 | Sh Cs Welding Transfere Flg2 | 2018-07-13 14:31 → 2018-06-22 10:45 (-21d) | 2018-07-13 16:31 → 2018-06-22 12:45 (-21d) |  | 86.43d → 77.91d | 368 → 366 | baseline start 2018-07-13 14:31 → 2018-06-11 16:30; baseline finish 2018-07-13 16:31 → 2018-06-11 18:30 |
| 371 | Sh Cs Welding Outer Flg2 | 2018-07-13 16:31 → 2018-06-22 12:45 (-21d) | 2018-07-16 06:31 → 2018-06-22 17:30 (-24d) | 6h → 4.75h | 86.43d → 77.91d |  | baseline start 2018-07-13 16:31 → 2018-06-11 18:30; baseline finish 2018-07-16 06:31 → 2018-06-12 07:15 |
| 372 | Sh Cs Welding Back Chip Flg2 | 2018-07-16 06:31 → 2018-06-22 17:30 (-24d) | 2018-07-16 09:31 → 2018-06-22 18:30 (-24d) | 3h → 1h | 86.43d → 77.91d |  | baseline start 2018-07-16 06:31 → 2018-06-12 07:15; baseline finish 2018-07-16 09:31 → 2018-06-12 08:15 |
| 374 | Sh Cs Flush Grinding Flg2 | 2018-07-16 09:31 → 2018-06-25 07:15 (-21d) | 2018-07-16 11:31 → 2018-06-25 08:15 (-21d) | 2h → 1h | 86.43d → 77.91d | 372 → 373 | baseline start 2018-07-16 09:31 → 2018-06-12 13:00; baseline finish 2018-07-16 11:31 → 2018-06-12 14:00 |
| 402 | **Sh Saddle Welding** | 2018-07-16 11:31 → 2018-06-27 15:45 (-19d) | 2018-07-24 06:51 → 2018-07-02 08:45 (-22d) | 13.42d → 7.12d | 86.43d → 77.91d |  | baseline start 2018-07-16 11:31 → 2018-06-14 21:30; baseline finish 2018-07-24 06:51 → 2018-06-19 14:30 |
| 403 | Sh-Saddle Pad Fit Up | 2018-07-16 11:31 → 2018-06-27 15:45 (-19d) | 2018-07-16 16:31 → 2018-06-28 07:45 (-18d) | 5h → 8h | 86.43d → 77.91d | 369 → 395 | baseline start 2018-07-16 11:31 → 2018-06-14 21:30; baseline finish 2018-07-16 16:31 → 2018-06-15 13:30 |
| 404 | Sh-Saddle Pad Welding | 2018-07-16 16:31 → 2018-06-28 07:45 (-18d) | 2018-07-17 19:11 → 2018-06-28 20:45 (-19d) | 18.67h → 13h | 86.43d → 77.91d |  | resources Helper; SMAW Welder [200%] → Helper [200%]; SMAW Welder [200%]; baseline start 2018-07-16 16:31 → 2018-06-15 13:30; baseline finish 2018-07-17 19:11 → 2018-06-16 10:30 |
| 405 | Sh-Saddle Matching | 2018-07-17 19:11 → 2018-06-28 20:45 (-19d) | 2018-07-19 09:51 → 2018-06-29 08:45 (-20d) | 22.67h → 4h | 86.43d → 77.91d |  | baseline start 2018-07-17 19:11 → 2018-06-16 10:30; baseline finish 2018-07-19 09:51 → 2018-06-16 14:30 |
| 406 | Sh-Saddle Fit Up | 2018-07-19 09:51 → 2018-06-29 08:45 (-20d) | 2018-07-20 11:11 → 2018-06-29 20:45 (-21d) | 17.33h → 12h | 86.43d → 77.91d |  | baseline start 2018-07-19 09:51 → 2018-06-16 14:30; baseline finish 2018-07-20 11:11 → 2018-06-18 10:30 |
| 407 | Sh-Saddle Welding | 2018-07-20 11:11 → 2018-06-29 20:45 (-21d) | 2018-07-23 13:51 → 2018-06-30 19:45 (-23d) | 34.67h → 15h | 86.43d → 77.91d |  | baseline start 2018-07-20 11:11 → 2018-06-18 10:30; baseline finish 2018-07-23 13:51 → 2018-06-19 09:30 |
| 408 | Sh-Saddle Dress Up | 2018-07-23 13:51 → 2018-06-30 19:45 (-23d) | 2018-07-24 06:51 → 2018-07-02 08:45 (-22d) | 9h → 5h | 86.43d → 77.91d |  | baseline start 2018-07-23 13:51 → 2018-06-19 09:30; baseline finish 2018-07-24 06:51 → 2018-06-19 14:30 |

| ID | Task | Start | Finish | Duration | Total float | Predecessors | Other |
| --- | --- | --- | --- | --- | --- | --- | --- |
| 409 | **Sh Davit Arm Welding** | 2018-07-16 11:31 → 2018-07-02 08:45 (-14d) | 2018-07-17 14:31 → 2018-07-02 20:15 (-15d) | 2.38d → 1.44d | 94.84d → 77.91d |  | baseline start 2018-07-16 11:31 → 2018-06-19 14:30; baseline finish 2018-07-17 14:31 → 2018-06-20 10:00 |
| 410 | Sh-Davit Arm Arm Match | 2018-07-16 11:31 → 2018-07-02 08:45 (-14d) | 2018-07-16 16:31 → 2018-07-02 10:45 (-14d) | 5h → 2h | 94.84d → 77.91d | 369 → 402 | resources Grinder; Fitter → Grinder; Pipe (Cost) [0.1%]; Fitter; baseline start 2018-07-16 11:31 → 2018-06-19 14:30; baseline finish 2018-07-16 16:31 → 2018-06-19 16:30 |
| 411 | Sh-Davit Arm Fit Up | 2018-07-16 16:31 → 2018-07-02 10:45 (-14d) | 2018-07-16 21:31 → 2018-07-02 14:15 (-14d) | 5h → 3.5h | 94.84d → 77.91d |  | baseline start 2018-07-16 16:31 → 2018-06-19 16:30; baseline finish 2018-07-16 21:31 → 2018-06-19 20:00 |
| 412 | Sh-Davit Arm Welding | 2018-07-16 21:31 → 2018-07-02 14:15 (-14d) | 2018-07-17 14:31 → 2018-07-02 20:15 (-15d) | 9h → 6h | 94.84d → 77.91d |  | baseline start 2018-07-16 21:31 → 2018-06-19 20:00; baseline finish 2018-07-17 14:31 → 2018-06-20 10:00 |
| 413 | **Sh Nde Clearence** | 2018-07-17 14:31 → 2018-07-02 20:15 (-15d) | 2018-07-18 19:31 → 2018-07-03 13:15 (-15d) | 2.62d → 1.12d | 94.84d → 77.91d |  | baseline start 2018-07-17 14:31 → 2018-06-20 10:00; baseline finish 2018-07-18 19:31 → 2018-06-20 19:00 |
| 414 | Sh-Sh Nde Clearence | 2018-07-17 14:31 → 2018-07-02 20:15 (-15d) | 2018-07-18 11:31 → 2018-07-03 09:15 (-15d) | 13h → 5h | 94.84d → 77.91d |  | baseline start 2018-07-17 14:31 → 2018-06-20 10:00; baseline finish 2018-07-18 11:31 → 2018-06-20 15:00 |
| 415 | Tpi Inspection | 2018-06-20 11:01 → 2018-07-03 09:15 (+13d) | 2018-06-20 15:01 → 2018-07-03 13:15 (+13d) |  | 137.16d → 77.91d | 65 → 414 | resources Fitter → Helper; Fitter; baseline start 2018-06-02 11:01 → 2018-06-20 15:00; baseline finish 2018-06-02 15:01 → 2018-06-20 19:00 |
| 416 | **Channel Fabrication** | 2018-06-04 17:01 → 2018-06-04 17:00 | 2018-06-21 08:19 → 2018-06-20 13:30 (-1d) | 13.06d → 25.56d | 69.06d → 97.88d |  | baseline start 2018-05-17 17:01 → 2018-05-14 17:00; baseline finish 2018-06-04 08:19 → 2018-05-30 13:30 |
| 419 | Ch-Marking | 2018-06-06 17:01 → 2018-06-04 20:00 (-2d) | 2018-06-06 18:31 → 2018-06-04 22:00 (-2d) | 1.5h → 2h | 138.24d → 97.88d | Ch Plate Trnasfer → 418 | baseline start 2018-05-19 17:01 → 2018-05-14 20:00; baseline finish 2018-05-19 18:31 → 2018-05-14 22:00 |
| 420 | Ch-Cutting | 2018-06-06 18:31 → 2018-06-05 06:00 (-1d) | 2018-06-06 19:31 → 2018-06-05 08:00 (-1d) | 1h → 2h | 138.24d → 97.88d |  | baseline start 2018-05-19 18:31 → 2018-05-15 06:00; baseline finish 2018-05-19 19:31 → 2018-05-15 08:00 |
| 421 | Ch Pl Side Grinding | 2018-06-06 19:31 → 2018-06-05 08:00 (-1d) | 2018-06-06 20:31 → 2018-06-05 10:00 (-1d) | 1h → 2h | 138.24d → 97.88d |  | baseline start 2018-05-19 19:31 → 2018-05-15 08:00; baseline finish 2018-05-19 20:31 → 2018-05-15 10:00 |
| 422 | Ch-Bevelling Cir Side | 2018-06-06 20:31 → 2018-06-05 10:00 (-1d) | 2018-06-07 06:31 → 2018-06-05 12:00 (-2d) |  | 138.24d → 97.88d |  | baseline start 2018-05-19 20:31 → 2018-05-15 10:00; baseline finish 2018-05-21 06:31 → 2018-05-15 12:00 |
| 423 | Ch Ep Grinding | 2018-06-07 06:31 → 2018-06-05 12:00 (-2d) | 2018-06-07 08:01 → 2018-06-05 13:00 (-2d) | 1.5h → 1h | 138.24d → 97.88d |  | baseline start 2018-05-21 06:31 → 2018-05-15 12:00; baseline finish 2018-05-21 08:01 → 2018-05-15 13:00 |
| 424 | **Channel Sh Rolling** | 2018-06-07 08:01 → 2018-06-05 13:00 (-2d) | 2018-06-07 19:19 → 2018-06-06 07:00 (-1d) | 1.41d → 1.25d | 138.24d → 97.88d |  | baseline start 2018-05-21 08:01 → 2018-05-15 13:00; baseline finish 2018-05-21 19:19 → 2018-05-16 07:00 |
| 425 | Ch-Pre Bend | 2018-06-07 08:01 → 2018-06-05 13:00 (-2d) | 2018-06-07 12:01 → 2018-06-05 15:00 (-2d) | 4h → 2h | 138.24d → 97.88d | Channel Fabrication → 417 | baseline start 2018-05-21 08:01 → 2018-05-15 13:00; baseline finish 2018-05-21 12:01 → 2018-05-15 15:00 |
| 426 | Ch-Pre Bend Cut Off | 2018-06-07 12:01 → 2018-06-05 15:00 (-2d) | 2018-06-07 13:19 → 2018-06-05 18:00 (-2d) | 1.3h → 3h | 138.24d → 97.88d |  | baseline start 2018-05-21 12:01 → 2018-05-15 15:00; baseline finish 2018-05-21 13:19 → 2018-05-15 18:00 |
| 427 | Ch Ls Beveling | 2018-06-07 13:19 → 2018-06-05 18:00 (-2d) | 2018-06-07 15:19 → 2018-06-05 20:00 (-2d) |  | 138.24d → 97.88d |  | baseline start 2018-05-21 13:19 → 2018-05-15 18:00; baseline finish 2018-05-21 15:19 → 2018-05-15 20:00 |
| 428 | Ch-Rolling | 2018-06-07 15:19 → 2018-06-05 20:00 (-2d) | 2018-06-07 19:19 → 2018-06-06 07:00 (-1d) | 4h → 3h | 138.24d → 97.88d |  | baseline start 2018-05-21 15:19 → 2018-05-15 20:00; baseline finish 2018-05-21 19:19 → 2018-05-16 07:00 |
| 429 | **Ch Shell Ls Fit Up** | 2018-06-07 19:19 → 2018-06-06 07:00 (-1d) | 2018-06-08 07:19 → 2018-06-06 13:00 (-2d) | 0.5d → 0.75d | 138.24d → 97.88d |  | baseline start 2018-05-21 19:19 → 2018-05-16 07:00; baseline finish 2018-05-22 07:19 → 2018-05-16 13:00 |
| 430 | Ch-Ls Correction | 2018-06-07 19:19 → 2018-06-06 07:00 (-1d) | 2018-06-07 21:19 → 2018-06-06 09:00 (-1d) |  | 138.24d → 97.88d |  | baseline start 2018-05-21 19:19 → 2018-05-16 07:00; baseline finish 2018-05-21 21:19 → 2018-05-16 09:00 |
| 431 | Ch-Ls Fit Up | 2018-06-07 21:19 → 2018-06-06 09:00 (-1d) | 2018-06-08 07:19 → 2018-06-06 13:00 (-2d) | 2h → 4h | 138.24d → 97.88d |  | baseline start 2018-05-21 21:19 → 2018-05-16 09:00; baseline finish 2018-05-22 07:19 → 2018-05-16 13:00 |
| 432 | **Ch Shell Ls Welding** | 2018-06-08 07:19 → 2018-06-06 13:00 (-2d) | 2018-06-08 19:49 → 2018-06-07 12:00 (-1d) | 1.56d → 1.88d | 138.24d → 97.88d |  | baseline start 2018-05-22 07:19 → 2018-05-16 13:00; baseline finish 2018-05-22 19:49 → 2018-05-17 12:00 |
| 433 | Ch-Ls Weld Arrangement | 2018-06-08 07:19 → 2018-06-06 13:00 (-2d) | 2018-06-08 10:19 → 2018-06-06 15:00 (-2d) | 3h → 2h | 138.24d → 97.88d |  | baseline start 2018-05-22 07:19 → 2018-05-16 13:00; baseline finish 2018-05-22 10:19 → 2018-05-16 15:00 |
| 434 | Ch-Ls Welding- Top Side | 2018-06-08 10:19 → 2018-06-06 15:00 (-2d) | 2018-06-08 12:19 → 2018-06-06 18:00 (-2d) | 2h → 3h | 138.24d → 97.88d |  | baseline start 2018-05-22 10:19 → 2018-05-16 15:00; baseline finish 2018-05-22 12:19 → 2018-05-16 18:00 |
| 435 | Ch-Ls Welding- Back Chip | 2018-06-08 12:19 → 2018-06-06 18:00 (-2d) | 2018-06-08 14:19 → 2018-06-06 20:00 (-2d) |  | 138.24d → 97.88d |  | baseline start 2018-05-22 12:19 → 2018-05-16 18:00; baseline finish 2018-05-22 14:19 → 2018-05-16 20:00 |
| 437 | Ch-Ls Innner Flush Grind | 2018-06-08 14:19 → 2018-06-07 07:00 (-1d) | 2018-06-08 15:49 → 2018-06-07 09:00 (-1d) | 1.5h → 2h | 138.24d → 97.88d | 435 → 436 | baseline start 2018-05-22 14:19 → 2018-05-17 07:00; baseline finish 2018-05-22 15:49 → 2018-05-17 09:00 |
| 438 | Ch Re Rolling | 2018-06-08 15:49 → 2018-06-07 09:00 (-1d) | 2018-06-08 19:49 → 2018-06-07 12:00 (-1d) | 4h → 3h | 138.24d → 97.88d |  | baseline start 2018-05-22 15:49 → 2018-05-17 09:00; baseline finish 2018-05-22 19:49 → 2018-05-17 12:00 |
| 439 | **Ch Ls Welding Radiography** | 2018-06-08 19:49 → 2018-06-07 12:00 (-1d) | 2018-06-11 11:49 → 2018-06-07 20:00 (-4d) |  | 138.24d → 97.88d |  | baseline start 2018-05-22 19:49 → 2018-05-17 12:00; baseline finish 2018-05-23 11:49 → 2018-05-17 20:00 |
| 440 | Ch Ls Welding Rt | 2018-06-08 19:49 → 2018-06-07 12:00 (-1d) | 2018-06-11 11:49 → 2018-06-07 20:00 (-4d) |  | 138.24d → 97.88d |  | baseline start 2018-05-22 19:49 → 2018-05-17 12:00; baseline finish 2018-05-23 11:49 → 2018-05-17 20:00 |
| 442 | Ch Cir Ep Correction | 2018-06-11 11:49 → 2018-06-07 20:00 (-4d) | 2018-06-11 14:49 → 2018-06-08 07:00 (-3d) |  | 152.68d → 97.88d |  | resources Fitter [200%] → Forging Non-Std (Cost) [0.1%]; Fitter [200%]; baseline start 2018-05-23 11:49 → 2018-05-17 20:00; baseline finish 2018-05-23 14:49 → 2018-05-18 07:00 |
| 443 | Ch Cs Fit Up Flg1 | 2018-06-11 14:49 → 2018-06-08 07:00 (-3d) | 2018-06-11 17:49 → 2018-06-08 10:00 (-3d) |  | 152.68d → 97.88d |  | baseline start 2018-05-23 14:49 → 2018-05-18 07:00; baseline finish 2018-05-23 17:49 → 2018-05-18 10:00 |
| 444 | Ch Cs Tack Dp Check Flg1 | 2018-06-11 17:49 → 2018-06-08 10:00 (-3d) | 2018-06-12 06:49 → 2018-06-08 11:00 (-4d) | 5h → 1h | 152.68d → 97.88d |  | baseline start 2018-05-23 17:49 → 2018-05-18 10:00; baseline finish 2018-05-24 06:49 → 2018-05-18 11:00 |
| 446 | Ch Cs Welding Transfere | 2018-06-12 06:49 → 2018-06-08 11:00 (-4d) | 2018-06-12 09:49 → 2018-06-08 13:00 (-4d) | 3h → 2h | 152.68d → 97.88d | Ch Cs Flg 1 Fit Up → 441 | baseline start 2018-05-24 06:49 → 2018-05-18 11:00; baseline finish 2018-05-24 09:49 → 2018-05-18 13:00 |
| 447 | Ch Cs Welding Outer Flg1 | 2018-06-12 09:49 → 2018-06-08 13:00 (-4d) | 2018-06-12 15:49 → 2018-06-08 19:00 (-4d) |  | 152.68d → 97.88d |  | baseline start 2018-05-24 09:49 → 2018-05-18 13:00; baseline finish 2018-05-24 15:49 → 2018-05-18 19:00 |
| 448 | Ch Cs Welding Back Chip Flg1 | 2018-06-12 15:49 → 2018-06-08 19:00 (-4d) | 2018-06-12 18:49 → 2018-06-08 21:00 (-4d) | 3h → 2h | 152.68d → 97.88d |  | baseline start 2018-05-24 15:49 → 2018-05-18 19:00; baseline finish 2018-05-24 18:49 → 2018-05-18 21:00 |
| 450 | Ch Cs Flush Grinding Flg1 | 2018-06-12 18:49 → 2018-06-11 11:00 (-1d) | 2018-06-12 20:49 → 2018-06-11 13:00 (-1d) |  | 152.68d → 97.88d | 448 → 449 | baseline start 2018-05-24 18:49 → 2018-05-19 11:00; baseline finish 2018-05-24 20:49 → 2018-05-19 13:00 |
| 452 | Ch Length Cutting | 2018-06-11 11:49 → 2018-06-11 13:00 | 2018-06-11 13:19 → 2018-06-11 15:00 | 1.5h → 2h | 138.24d → 97.88d | 439 → 445 | baseline start 2018-05-23 11:49 → 2018-05-19 13:00; baseline finish 2018-05-23 13:19 → 2018-05-19 15:00 |
| 453 | Ch Cir Ep Correction | 2018-06-11 13:19 → 2018-06-11 15:00 | 2018-06-11 14:19 → 2018-06-11 18:00 | 1h → 3h | 138.24d → 97.88d |  | baseline start 2018-05-23 13:19 → 2018-05-19 15:00; baseline finish 2018-05-23 14:19 → 2018-05-19 18:00 |
| 454 | Ch Cs Fit Up Flg2 | 2018-06-11 14:19 → 2018-06-11 18:00 | 2018-06-11 17:19 → 2018-06-11 22:00 | 3h → 4h | 138.24d → 97.88d |  | baseline start 2018-05-23 14:19 → 2018-05-19 18:00; baseline finish 2018-05-23 17:19 → 2018-05-19 22:00 |
| 456 | **Ch Cs Flg 2 Welding** | 2018-06-11 20:19 → 2018-06-12 07:00 (+1d) | 2018-06-12 18:19 → 2018-06-13 08:00 (+1d) | 1.75d → 2.12d | 138.24d → 97.88d |  | baseline start 2018-05-23 20:19 → 2018-05-21 07:00; baseline finish 2018-05-24 18:19 → 2018-05-22 08:00 |
| 457 | Ch Cs Welding Transfere Flg2 | 2018-06-11 20:19 → 2018-06-12 07:00 (+1d) | 2018-06-12 07:19 → 2018-06-12 09:00 | 3h → 2h | 138.24d → 97.88d | Ch Cs Flg 2 Fit Up → 451 | baseline start 2018-05-23 20:19 → 2018-05-21 07:00; baseline finish 2018-05-24 07:19 → 2018-05-21 09:00 |
| 458 | Ch Cs Welding Outer Flg2 | 2018-06-12 07:19 → 2018-06-12 09:00 | 2018-06-12 13:19 → 2018-06-12 13:00 | 6h → 4h | 138.24d → 97.88d |  | baseline start 2018-05-24 07:19 → 2018-05-21 09:00; baseline finish 2018-05-24 13:19 → 2018-05-21 13:00 |
| 459 | Ch Cs Welding Back Chip Flg2 | 2018-06-12 13:19 → 2018-06-12 13:00 | 2018-06-12 16:19 → 2018-06-12 17:00 | 3h → 4h | 138.24d → 97.88d |  | baseline start 2018-05-24 13:19 → 2018-05-21 13:00; baseline finish 2018-05-24 16:19 → 2018-05-21 17:00 |
| 461 | Ch Cs Flush Grinding Flg2 | 2018-06-12 16:19 → 2018-06-12 21:00 | 2018-06-12 18:19 → 2018-06-13 08:00 (+1d) | 2h → 3h | 138.24d → 97.88d | 459 → 460 | baseline start 2018-05-24 16:19 → 2018-05-21 21:00; baseline finish 2018-05-24 18:19 → 2018-05-22 08:00 |
| 463 | Ch Cs Welding Rt | 2018-06-12 18:19 → 2018-06-13 08:00 (+1d) | 2018-06-13 10:19 → 2018-06-13 16:00 |  | 138.24d → 97.88d |  | baseline start 2018-05-24 18:19 → 2018-05-22 08:00; baseline finish 2018-05-25 10:19 → 2018-05-22 16:00 |
| 464 | **Channel Noz Marking** | 2018-06-13 10:19 → 2018-06-13 16:00 | 2018-06-13 20:19 → 2018-06-13 19:00 | 1.25d → 0.38d | 138.24d → 97.88d |  | baseline start 2018-05-25 10:19 → 2018-05-22 16:00; baseline finish 2018-05-25 20:19 → 2018-05-22 19:00 |
| 470 | **Ch Noz Open Ep** | 2018-06-13 21:49 → 2018-06-14 07:00 (+1d) | 2018-06-14 07:49 → 2018-06-14 13:00 | 0.25d → 0.75d | 138.24d → 97.88d |  | baseline start 2018-05-25 21:49 → 2018-05-23 07:00; baseline finish 2018-05-28 07:49 → 2018-05-23 13:00 |
| 473 | **Ch Noz Fit Up** | 2018-06-14 07:49 → 2018-06-14 13:00 | 2018-06-14 09:49 → 2018-06-14 19:00 | 0.25d → 0.75d | 138.24d → 97.88d |  | baseline start 2018-05-28 07:49 → 2018-05-23 13:00; baseline finish 2018-05-28 09:49 → 2018-05-23 19:00 |
| 476 | **Ch Noz Fit Up Insp** | 2018-06-14 09:49 → 2018-06-14 19:00 | 2018-06-14 11:49 → 2018-06-14 21:00 |  | 138.24d → 97.88d |  | baseline start 2018-05-28 09:49 → 2018-05-23 19:00; baseline finish 2018-05-28 11:49 → 2018-05-23 21:00 |
| 479 | **Ch Noz Welding** | 2018-06-14 11:49 → 2018-06-14 21:00 | 2018-06-16 06:19 → 2018-06-16 15:30 |  | 138.24d → 97.88d |  | baseline start 2018-05-28 11:49 → 2018-05-23 21:00; baseline finish 2018-05-30 06:19 → 2018-05-25 15:30 |
| 480 | Ch Noz Welding Arrangement | 2018-06-14 11:49 → 2018-06-14 21:00 | 2018-06-14 14:04 → 2018-06-14 22:00 | 2.25h → 1h | 141.28d → 97.88d |  | baseline start 2018-05-28 11:49 → 2018-05-23 21:00; baseline finish 2018-05-28 14:04 → 2018-05-23 22:00 |
| 483 | Ch Noz Root Dp Check | 2018-06-14 15:49 → 2018-06-15 14:00 (+1d) | 2018-06-14 18:49 → 2018-06-15 14:30 (+1d) | 3h → 0.5h | 138.24d → 97.88d | Ch-Noz Welding -N5, Ch-Noz Welding-N6 → 482 | baseline start 2018-05-28 15:49 → 2018-05-24 14:00; baseline finish 2018-05-28 18:49 → 2018-05-24 14:30 |
| 489 | **Channel Pp Plate Fit Up** | 2018-06-16 06:19 → 2018-06-16 15:30 | 2018-06-16 15:49 → 2018-06-18 06:30 (+2d) | 1.19d → 0.88d | 138.24d → 97.88d |  | baseline start 2018-05-30 06:19 → 2018-05-25 15:30; baseline finish 2018-05-30 15:49 → 2018-05-28 06:30 |
| 490 | Ch- Pp Plate Fit Up | 2018-06-16 06:19 → 2018-06-16 15:30 | 2018-06-16 12:49 → 2018-06-16 21:30 | 6.5h → 6h | 138.24d → 97.88d |  | baseline start 2018-05-30 06:19 → 2018-05-25 15:30; baseline finish 2018-05-30 12:49 → 2018-05-25 21:30 |
| 491 | Ch- Pp Plate Fit Up Insp | 2018-06-16 12:49 → 2018-06-16 21:30 | 2018-06-16 15:49 → 2018-06-18 06:30 (+2d) | 3h → 1h | 138.24d → 97.88d |  | baseline start 2018-05-30 12:49 → 2018-05-25 21:30; baseline finish 2018-05-30 15:49 → 2018-05-28 06:30 |
| 492 | **Ch Pp Plate Welding** | 2018-06-16 15:49 → 2018-06-18 06:30 (+2d) | 2018-06-21 08:19 → 2018-06-18 19:30 (-3d) | 7.06d → 1.62d | 138.24d → 97.88d |  | baseline start 2018-05-30 15:49 → 2018-05-28 06:30; baseline finish 2018-06-04 08:19 → 2018-05-28 19:30 |
| 493 | Ch- Pp Plate Welding | 2018-06-16 15:49 → 2018-06-18 06:30 (+2d) | 2018-06-20 16:49 → 2018-06-18 16:30 (-2d) | 49h → 10h | 138.24d → 97.88d |  | baseline start 2018-05-30 15:49 → 2018-05-28 06:30; baseline finish 2018-06-02 16:49 → 2018-05-28 16:30 |
| 494 | Ch- Pp Plate Face Grinding | 2018-06-20 16:49 → 2018-06-18 16:30 (-2d) | 2018-06-21 08:19 → 2018-06-18 19:30 (-3d) | 7.5h → 3h | 138.24d → 97.88d |  | baseline start 2018-06-02 16:49 → 2018-05-28 16:30; baseline finish 2018-06-04 08:19 → 2018-05-28 19:30 |
| 495 | **Channel Davit Arm Welding** | 2018-06-16 15:49 → 2018-06-18 19:30 (+2d) | 2018-06-18 19:49 → 2018-06-19 18:30 (+1d) | 2.5d → 1.88d | 141.56d → 97.88d |  | baseline start 2018-05-30 15:49 → 2018-05-28 19:30; baseline finish 2018-05-31 19:49 → 2018-05-29 18:30 |
| 496 | Ch-Davit Arm Arm Match | 2018-06-16 15:49 → 2018-06-18 19:30 (+2d) | 2018-06-16 20:49 → 2018-06-19 07:30 (+3d) | 5h → 4h | 141.56d → 97.88d | 489 → 492 | baseline start 2018-05-30 15:49 → 2018-05-28 19:30; baseline finish 2018-05-30 20:49 → 2018-05-29 07:30 |
| 497 | Ch-Davit Arm Fit Up | 2018-06-16 20:49 → 2018-06-19 07:30 (+3d) | 2018-06-18 09:49 → 2018-06-19 11:30 (+1d) | 5h → 4h | 141.56d → 97.88d |  | baseline start 2018-05-30 20:49 → 2018-05-29 07:30; baseline finish 2018-05-31 09:49 → 2018-05-29 11:30 |
| 498 | Ch-Davit Arm Welding | 2018-06-18 09:49 → 2018-06-19 11:30 (+1d) | 2018-06-18 19:49 → 2018-06-19 18:30 (+1d) | 10h → 7h | 141.56d → 97.88d |  | baseline start 2018-05-31 09:49 → 2018-05-29 11:30; baseline finish 2018-05-31 19:49 → 2018-05-29 18:30 |
| 499 | **Channel Nde & Pwht** | 2018-06-18 19:49 → 2018-06-19 18:30 (+1d) | 2018-06-19 13:49 → 2018-06-20 13:30 (+1d) | 1.25d → 1.38d | 141.56d → 97.88d |  | baseline start 2018-05-31 19:49 → 2018-05-29 18:30; baseline finish 2018-06-01 13:49 → 2018-05-30 13:30 |
| 500 | Ch All Welding Dressup & Dp Check | 2018-06-18 19:49 → 2018-06-19 18:30 (+1d) | 2018-06-19 12:49 → 2018-06-20 08:30 (+1d) | 9h → 6h | 141.56d → 97.88d |  | baseline start 2018-05-31 19:49 → 2018-05-29 18:30; baseline finish 2018-06-01 12:49 → 2018-05-30 08:30 |
| 501 | Ch-Ch Nde Clearence | 2018-06-19 12:49 → 2018-06-20 08:30 (+1d) | 2018-06-19 13:49 → 2018-06-20 13:30 (+1d) | 1h → 5h | 141.56d → 97.88d |  | baseline start 2018-06-01 12:49 → 2018-05-30 08:30; baseline finish 2018-06-01 13:49 → 2018-05-30 13:30 |
| 502 | **Barrel Fabrication** | 2018-06-04 17:01 → 2018-06-04 17:00 | 2018-06-18 21:45 → 2018-06-13 08:30 (-5d) | 11.06d → 12.94d | 71.06d → 110.19d |  | baseline start 2018-05-17 17:01 → 2018-05-14 17:00; baseline finish 2018-05-31 21:45 → 2018-05-22 08:30 |
| 505 | Barrel-Marking | 2018-06-05 06:01 → 2018-06-04 19:00 (-1d) | 2018-06-05 09:46 → 2018-06-04 21:00 (-1d) | 3.75h → 2h | 142.78d → 110.19d | Barrel Sh Plate Cutting & Ep → 504 | baseline start 2018-05-18 06:01 → 2018-05-14 19:00; baseline finish 2018-05-18 09:46 → 2018-05-14 21:00 |
| 506 | Barrel-Cutting | 2018-06-05 09:46 → 2018-06-04 21:00 (-1d) | 2018-06-05 11:46 → 2018-06-05 07:00 |  | 142.78d → 110.19d |  | baseline start 2018-05-18 09:46 → 2018-05-14 21:00; baseline finish 2018-05-18 11:46 → 2018-05-15 07:00 |
| 507 | Barrel Pl Side Grinding | 2018-06-05 11:46 → 2018-06-05 07:00 | 2018-06-05 15:46 → 2018-06-05 09:00 | 4h → 2h | 142.78d → 110.19d |  | baseline start 2018-05-18 11:46 → 2018-05-15 07:00; baseline finish 2018-05-18 15:46 → 2018-05-15 09:00 |
| 508 | Barrel-Bevelling Cir Side | 2018-06-05 15:46 → 2018-06-05 09:00 | 2018-06-06 11:46 → 2018-06-05 12:00 (-1d) | 12h → 3h | 142.78d → 110.19d |  | baseline start 2018-05-18 15:46 → 2018-05-15 09:00; baseline finish 2018-05-19 11:46 → 2018-05-15 12:00 |

| ID | Task | Start | Finish | Duration | Total float | Predecessors | Other |
| --- | --- | --- | --- | --- | --- | --- | --- |
| 509 | Ch Ep Grinding | 2018-06-06 11:46 → 2018-06-05 12:00 (-1d) | 2018-06-06 17:46 → 2018-06-05 14:00 (-1d) | 6h → 2h | 142.78d → 110.19d |  | baseline start 2018-05-19 11:46 → 2018-05-15 12:00; baseline finish 2018-05-19 17:46 → 2018-05-15 14:00 |
| 510 | **Bar Shell Rolling** | 2018-06-06 17:46 → 2018-06-05 14:00 (-1d) | 2018-06-07 13:46 → 2018-06-05 21:30 (-2d) | 1.5d → 0.94d | 142.78d → 110.19d |  | baseline start 2018-05-19 17:46 → 2018-05-15 14:00; baseline finish 2018-05-21 13:46 → 2018-05-15 21:30 |
| 511 | Barrel-Pre Bend | 2018-06-06 17:46 → 2018-06-05 14:00 (-1d) | 2018-06-06 21:46 → 2018-06-05 16:00 (-1d) | 4h → 2h | 142.78d → 110.19d | Barrel Fabrication → 503 | baseline start 2018-05-19 17:46 → 2018-05-15 14:00; baseline finish 2018-05-19 21:46 → 2018-05-15 16:00 |
| 512 | Barrel-Pre Bend Cut Off | 2018-06-06 21:46 → 2018-06-05 16:00 (-1d) | 2018-06-07 07:16 → 2018-06-05 18:00 (-2d) | 1.5h → 2h | 142.78d → 110.19d |  | baseline start 2018-05-19 21:46 → 2018-05-15 16:00; baseline finish 2018-05-21 07:16 → 2018-05-15 18:00 |
| 513 | Barrel -Pre Ls Ep | 2018-06-07 07:16 → 2018-06-05 18:00 (-2d) | 2018-06-07 09:46 → 2018-06-05 18:30 (-2d) | 2.5h → 0.5h | 142.78d → 110.19d |  | baseline start 2018-05-21 07:16 → 2018-05-15 18:00; baseline finish 2018-05-21 09:46 → 2018-05-15 18:30 |
| 514 | Barrel-Rolling | 2018-06-07 09:46 → 2018-06-05 18:30 (-2d) | 2018-06-07 13:46 → 2018-06-05 21:30 (-2d) | 4h → 3h | 142.78d → 110.19d |  | baseline start 2018-05-21 09:46 → 2018-05-15 18:30; baseline finish 2018-05-21 13:46 → 2018-05-15 21:30 |
| 515 | **Barrel Shell Ls Fit Up** | 2018-06-07 13:46 → 2018-06-05 21:30 (-2d) | 2018-06-07 18:16 → 2018-06-06 07:30 (-1d) | 0.56d → 0.25d | 142.78d → 110.19d |  | baseline start 2018-05-21 13:46 → 2018-05-15 21:30; baseline finish 2018-05-21 18:16 → 2018-05-16 07:30 |
| 516 | Barrel-Ls Correction | 2018-06-07 13:46 → 2018-06-05 21:30 (-2d) | 2018-06-07 16:16 → 2018-06-06 06:30 (-1d) | 2.5h → 1h | 142.78d → 110.19d |  | baseline start 2018-05-21 13:46 → 2018-05-15 21:30; baseline finish 2018-05-21 16:16 → 2018-05-16 06:30 |
| 517 | Barrel-Ls Fit Up | 2018-06-07 16:16 → 2018-06-06 06:30 (-1d) | 2018-06-07 18:16 → 2018-06-06 07:30 (-1d) | 2h → 1h | 142.78d → 110.19d |  | baseline start 2018-05-21 16:16 → 2018-05-16 06:30; baseline finish 2018-05-21 18:16 → 2018-05-16 07:30 |
| 518 | **Barrel Shell Ls Welding** | 2018-06-07 18:16 → 2018-06-06 07:30 (-1d) | 2018-06-08 16:16 → 2018-06-07 07:00 (-1d) | 1.75d → 1.94d | 142.78d → 110.19d |  | baseline start 2018-05-21 18:16 → 2018-05-16 07:30; baseline finish 2018-05-22 16:16 → 2018-05-17 07:00 |
| 519 | Barrel-Ls Weld Arrangement | 2018-06-07 18:16 → 2018-06-06 07:30 (-1d) | 2018-06-07 21:16 → 2018-06-06 08:30 (-1d) | 3h → 1h | 142.78d → 110.19d |  | baseline start 2018-05-21 18:16 → 2018-05-16 07:30; baseline finish 2018-05-21 21:16 → 2018-05-16 08:30 |
| 520 | Barrel-Ls Welding- Top Side | 2018-06-07 21:16 → 2018-06-06 08:30 (-1d) | 2018-06-08 08:16 → 2018-06-06 13:15 (-2d) | 3h → 4.75h | 142.78d → 110.19d |  | baseline start 2018-05-21 21:16 → 2018-05-16 08:30; baseline finish 2018-05-22 08:16 → 2018-05-16 13:15 |
| 521 | Barrel-Ls Welding- Back Chip | 2018-06-08 08:16 → 2018-06-06 13:15 (-2d) | 2018-06-08 10:16 → 2018-06-06 14:15 (-2d) | 2h → 1h | 142.78d → 110.19d |  | baseline start 2018-05-22 08:16 → 2018-05-16 13:15; baseline finish 2018-05-22 10:16 → 2018-05-16 14:15 |
| 523 | Barrel-Ls Innner Flush Grind | 2018-06-08 10:16 → 2018-06-06 19:00 (-2d) | 2018-06-08 12:16 → 2018-06-06 20:00 (-2d) | 2h → 1h | 142.78d → 110.19d | 521 → 522 | baseline start 2018-05-22 10:16 → 2018-05-16 19:00; baseline finish 2018-05-22 12:16 → 2018-05-16 20:00 |
| 524 | Barrel Re Rolling | 2018-06-08 12:16 → 2018-06-06 20:00 (-2d) | 2018-06-08 16:16 → 2018-06-07 07:00 (-1d) | 4h → 3h | 142.78d → 110.19d |  | baseline start 2018-05-22 12:16 → 2018-05-16 20:00; baseline finish 2018-05-22 16:16 → 2018-05-17 07:00 |
| 525 | **Barrel Ls Welding Rt** | 2018-06-08 16:16 → 2018-06-07 07:00 (-1d) | 2018-06-11 08:16 → 2018-06-07 15:00 (-4d) |  | 142.78d → 110.19d |  | baseline start 2018-05-22 16:16 → 2018-05-17 07:00; baseline finish 2018-05-23 08:16 → 2018-05-17 15:00 |
| 526 | Bar Ls Welding Rt | 2018-06-08 16:16 → 2018-06-07 07:00 (-1d) | 2018-06-11 08:16 → 2018-06-07 15:00 (-4d) |  | 142.78d → 110.19d |  | baseline start 2018-05-22 16:16 → 2018-05-17 07:00; baseline finish 2018-05-23 08:16 → 2018-05-17 15:00 |
| 527 | **Barrel Shell Cs Flg 1 Fit Up** | 2018-06-11 08:16 → 2018-06-07 15:00 (-4d) | 2018-06-11 15:16 → 2018-06-07 17:30 (-4d) | 0.88d → 0.31d | 142.78d → 110.19d |  | baseline start 2018-05-23 08:16 → 2018-05-17 15:00; baseline finish 2018-05-23 15:16 → 2018-05-17 17:30 |
| 528 | Barrel Cir Ep Correction | 2018-06-11 08:16 → 2018-06-07 15:00 (-4d) | 2018-06-11 09:16 → 2018-06-07 15:30 (-4d) | 1h → 0.5h | 142.78d → 110.19d | 526 → 525 | baseline start 2018-05-23 08:16 → 2018-05-17 15:00; baseline finish 2018-05-23 09:16 → 2018-05-17 15:30 |
| 529 | Barrel Cs Fit Up Flg1 | 2018-06-11 09:16 → 2018-06-07 15:30 (-4d) | 2018-06-11 12:16 → 2018-06-07 16:30 (-4d) | 3h → 1h | 142.78d → 110.19d |  | baseline start 2018-05-23 09:16 → 2018-05-17 15:30; baseline finish 2018-05-23 12:16 → 2018-05-17 16:30 |
| 530 | Barrel Cs Tack Dp Check Flg1 | 2018-06-11 12:16 → 2018-06-07 16:30 (-4d) | 2018-06-11 15:16 → 2018-06-07 17:30 (-4d) | 3h → 1h | 142.78d → 110.19d |  | baseline start 2018-05-23 12:16 → 2018-05-17 16:30; baseline finish 2018-05-23 15:16 → 2018-05-17 17:30 |
| 532 | Barrel Cs Welding Transfere | 2018-06-11 15:16 → 2018-06-07 17:30 (-4d) | 2018-06-11 18:16 → 2018-06-07 18:30 (-4d) | 3h → 1h | 142.78d → 110.19d |  | baseline start 2018-05-23 15:16 → 2018-05-17 17:30; baseline finish 2018-05-23 18:16 → 2018-05-17 18:30 |
| 533 | Barrel Cs Welding Outer Flg1 | 2018-06-11 18:16 → 2018-06-07 18:30 (-4d) | 2018-06-12 09:16 → 2018-06-08 07:15 (-4d) | 7h → 4.75h | 142.78d → 110.19d |  | baseline start 2018-05-23 18:16 → 2018-05-17 18:30; baseline finish 2018-05-24 09:16 → 2018-05-18 07:15 |
| 534 | Barrel Cs Welding Back Chip Flg1 | 2018-06-12 09:16 → 2018-06-08 07:15 (-4d) | 2018-06-12 12:16 → 2018-06-08 08:15 (-4d) | 3h → 1h | 142.78d → 110.19d |  | baseline start 2018-05-24 09:16 → 2018-05-18 07:15; baseline finish 2018-05-24 12:16 → 2018-05-18 08:15 |
| 536 | Barrel Cs Flush Grinding Flg1 | 2018-06-12 14:16 → 2018-06-08 13:00 (-4d) | 2018-06-12 16:16 → 2018-06-08 14:00 (-4d) | 2h → 1h | 142.78d → 110.19d | Barrel Cs Inner Welding Flg 1 → 535 | baseline start 2018-05-24 14:16 → 2018-05-18 13:00; baseline finish 2018-05-24 16:16 → 2018-05-18 14:00 |
| 537 | **Barrel Cs Fit Up With Dish** | 2018-06-12 16:16 → 2018-06-08 14:00 (-4d) | 2018-06-13 08:46 → 2018-06-08 18:30 (-5d) | 1.06d → 0.56d | 142.78d → 110.19d | Barrel Sh Cs Flg 1 Welding → none | baseline start 2018-05-24 16:16 → 2018-05-18 14:00; baseline finish 2018-05-25 08:46 → 2018-05-18 18:30 |
| 538 | Barrel Length Cutting | 2018-06-12 16:16 → 2018-06-08 14:00 (-4d) | 2018-06-12 17:46 → 2018-06-08 16:00 (-4d) | 1.5h → 2h | 142.78d → 110.19d | Barrel Sh Cs Flg 1 Welding → 531 | baseline start 2018-05-24 16:16 → 2018-05-18 14:00; baseline finish 2018-05-24 17:46 → 2018-05-18 16:00 |
| 539 | Barrel Ep | 2018-06-12 17:46 → 2018-06-08 16:00 (-4d) | 2018-06-12 18:46 → 2018-06-08 16:30 (-4d) | 1h → 0.5h | 142.78d → 110.19d |  | baseline start 2018-05-24 17:46 → 2018-05-18 16:00; baseline finish 2018-05-24 18:46 → 2018-05-18 16:30 |
| 540 | Barrel Cs Fit Up Dish | 2018-06-12 18:46 → 2018-06-08 16:30 (-4d) | 2018-06-12 21:46 → 2018-06-08 17:30 (-4d) | 3h → 1h | 142.78d → 110.19d |  | baseline start 2018-05-24 18:46 → 2018-05-18 16:30; baseline finish 2018-05-24 21:46 → 2018-05-18 17:30 |
| 541 | Barrel Cs Tack Dp Check Dish | 2018-06-12 21:46 → 2018-06-08 17:30 (-4d) | 2018-06-13 08:46 → 2018-06-08 18:30 (-5d) | 3h → 1h | 142.78d → 110.19d |  | baseline start 2018-05-24 21:46 → 2018-05-18 17:30; baseline finish 2018-05-25 08:46 → 2018-05-18 18:30 |
| 542 | **Barrel Cs Welding With Dish** | 2018-06-13 08:46 → 2018-06-08 18:30 (-5d) | 2018-06-14 14:46 → 2018-06-11 17:00 (-3d) | 2.75d → 1.81d | 142.78d → 110.19d | 537 → none | baseline start 2018-05-25 08:46 → 2018-05-18 18:30; baseline finish 2018-05-28 14:46 → 2018-05-19 17:00 |
| 543 | Barrel Cs Welding Transfere Dish | 2018-06-13 08:46 → 2018-06-08 18:30 (-5d) | 2018-06-13 11:46 → 2018-06-08 19:30 (-5d) | 3h → 1h | 142.78d → 110.19d |  | baseline start 2018-05-25 08:46 → 2018-05-18 18:30; baseline finish 2018-05-25 11:46 → 2018-05-18 19:30 |
| 544 | Barrel Cs Welding Outer Dish | 2018-06-13 11:46 → 2018-06-08 19:30 (-5d) | 2018-06-13 18:46 → 2018-06-11 09:15 (-2d) | 7h → 5.75h | 142.78d → 110.19d |  | baseline start 2018-05-25 11:46 → 2018-05-18 19:30; baseline finish 2018-05-25 18:46 → 2018-05-19 09:15 |
| 545 | Barrel Cs Welding Back Chip Dish | 2018-06-13 18:46 → 2018-06-11 09:15 (-2d) | 2018-06-13 21:46 → 2018-06-11 10:15 (-2d) | 3h → 1h | 142.78d → 110.19d |  | baseline start 2018-05-25 18:46 → 2018-05-19 09:15; baseline finish 2018-05-25 21:46 → 2018-05-19 10:15 |
| 546 | Barrel Cs Inner Welding Dish | 2018-06-13 21:46 → 2018-06-11 10:15 (-2d) | 2018-06-14 12:46 → 2018-06-11 16:00 (-3d) | 7h → 5.75h | 142.78d → 110.19d |  | baseline start 2018-05-25 21:46 → 2018-05-19 10:15; baseline finish 2018-05-28 12:46 → 2018-05-19 16:00 |
| 547 | Barrel Cs Flush Grinding Dish | 2018-06-14 12:46 → 2018-06-11 16:00 (-3d) | 2018-06-14 14:46 → 2018-06-11 17:00 (-3d) | 2h → 1h | 142.78d → 110.19d |  | baseline start 2018-05-28 12:46 → 2018-05-19 16:00; baseline finish 2018-05-28 14:46 → 2018-05-19 17:00 |
| 549 | Barrel Cs Welding Rt | 2018-06-14 14:46 → 2018-06-11 17:00 (-3d) | 2018-06-15 06:46 → 2018-06-12 09:00 (-3d) |  | 142.78d → 110.19d |  | baseline start 2018-05-28 14:46 → 2018-05-19 17:00; baseline finish 2018-05-29 06:46 → 2018-05-21 09:00 |
| 550 | **Barrel Noz Oreination Marking** | 2018-06-15 06:46 → 2018-06-12 09:00 (-3d) | 2018-06-15 12:46 → 2018-06-12 11:00 (-3d) | 0.75d → 0.25d | 142.78d → 110.19d | Barrel Cs Flg 1 & Dish Welding Rt → none | baseline start 2018-05-29 06:46 → 2018-05-21 09:00; baseline finish 2018-05-29 12:46 → 2018-05-21 11:00 |
| 553 | **Barrel Nozzle Oppening** | 2018-06-15 12:46 → 2018-06-12 11:00 (-3d) | 2018-06-15 16:46 → 2018-06-12 12:00 (-3d) | 0.5d → 0.12d | 142.78d → 110.19d | 550 → none | baseline start 2018-05-29 12:46 → 2018-05-21 11:00; baseline finish 2018-05-29 16:46 → 2018-05-21 12:00 |
| 556 | **Barrel Noz Edge Preparation** | 2018-06-15 16:46 → 2018-06-12 12:00 (-3d) | 2018-06-15 19:46 → 2018-06-12 13:00 (-3d) | 0.38d → 0.12d | 142.78d → 110.19d | 553 → none | baseline start 2018-05-29 16:46 → 2018-05-21 12:00; baseline finish 2018-05-29 19:46 → 2018-05-21 13:00 |
| 559 | **Barrel Nozzzle Fit Up** | 2018-06-15 19:46 → 2018-06-12 13:00 (-3d) | 2018-06-15 21:46 → 2018-06-12 15:00 (-3d) |  | 142.78d → 110.19d | 556 → none | baseline start 2018-05-29 19:46 → 2018-05-21 13:00; baseline finish 2018-05-29 21:46 → 2018-05-21 15:00 |
| 562 | **Barrel Noz Fit Up Inspection** | 2018-06-16 08:30 → 2018-06-12 15:00 (-4d) | 2018-06-16 10:00 → 2018-06-12 16:00 (-4d) | 0.19d → 0.12d | 142.44d → 110.19d | 559 → none | baseline start 2018-05-30 08:30 → 2018-05-21 15:00; baseline finish 2018-05-30 10:00 → 2018-05-21 16:00 |
| 565 | **Barrel Nozzle Welding** | 2018-06-16 10:00 → 2018-06-12 16:00 (-4d) | 2018-06-18 16:45 → 2018-06-12 18:30 (-6d) | 2.84d → 0.31d | 142.56d → 110.5d | 562 → none | baseline start 2018-05-30 10:00 → 2018-05-21 16:00; baseline finish 2018-05-31 16:45 → 2018-05-21 18:30 |
| 566 | Barrel Noz Welding Arrangement | 2018-06-16 10:00 → 2018-06-12 16:00 (-4d) | 2018-06-16 11:30 → 2018-06-12 16:30 (-4d) | 1.5h → 0.5h | 142.56d → 110.5d |  | baseline start 2018-05-30 10:00 → 2018-05-21 16:00; baseline finish 2018-05-30 11:30 → 2018-05-21 16:30 |
| 569 | Barrel Noz Root Dp | 2018-06-16 14:30 → 2018-06-12 17:30 (-4d) | 2018-06-16 16:30 → 2018-06-12 17:30 (-4d) | 2h → 0h | 142.56d → 110.5d | Barrel-Noz Welding-N4 → 568 | baseline start 2018-05-30 14:30 → 2018-05-21 17:30; baseline finish 2018-05-30 16:30 → 2018-05-21 17:30 |
| 572 | **Barrel Noz Inner Weld Flush Grind** | 2018-06-18 16:45 → 2018-06-12 18:30 (-6d) | 2018-06-18 21:45 → 2018-06-13 08:30 (-5d) | 0.62d → 0.75d | 142.56d → 110.5d | 565 → none | baseline start 2018-05-31 16:45 → 2018-05-21 18:30; baseline finish 2018-05-31 21:45 → 2018-05-22 08:30 |
| 573 | Barrel All Welding Dressup & Dp | 2018-06-18 16:45 → 2018-06-12 18:30 (-6d) | 2018-06-18 20:45 → 2018-06-12 21:30 (-6d) | 4h → 3h | 142.56d → 110.5d |  | baseline start 2018-05-31 16:45 → 2018-05-21 18:30; baseline finish 2018-05-31 20:45 → 2018-05-21 21:30 |
| 574 | Barrel-Barrel Nde Clearence | 2018-06-18 20:45 → 2018-06-12 21:30 (-6d) | 2018-06-18 21:45 → 2018-06-13 08:30 (-5d) | 1h → 3h | 142.56d → 110.5d |  | baseline start 2018-05-31 20:45 → 2018-05-21 21:30; baseline finish 2018-05-31 21:45 → 2018-05-22 08:30 |
| 577 | Fl Head Dish Pl Issue | 2018-07-25 17:01 → 2018-07-06 09:00 (-19d) | 2018-07-27 17:01 → 2018-07-06 13:00 (-21d) | 4d → 4h | 58.59d → 46.62d | Floating Head Dish-Sa 516 Gr60 → 41 | resources Forging Non-Std (Cost) [0.1%]; Plate (Cost) [0.1%]; Store → Plate (Cost) [0.1%]; Store; baseline start 2018-07-25 17:01 → 2018-07-06 09:00; baseline finish 2018-07-27 17:01 → 2018-07-06 13:00 |
| 578 | Fl Head Pl Marking | 2018-07-27 17:01 → 2018-07-06 13:00 (-21d) | 2018-07-27 18:31 → 2018-07-06 14:00 (-21d) | 1.5h → 1h | 58.59d → 46.62d |  | baseline start 2018-07-27 17:01 → 2018-07-06 13:00; baseline finish 2018-07-27 18:31 → 2018-07-06 14:00 |
| 579 | Fl Head Pl Stamping | 2018-07-27 18:31 → 2018-07-06 14:00 (-21d) | 2018-07-27 20:31 → 2018-07-06 16:00 (-21d) |  | 58.59d → 46.62d |  | baseline start 2018-07-27 18:31 → 2018-07-06 14:00; baseline finish 2018-07-27 20:31 → 2018-07-06 16:00 |
| 580 | Fl Head Pl Cutting | 2018-07-27 20:31 → 2018-07-06 16:00 (-21d) | 2018-07-30 06:01 → 2018-07-06 18:00 (-24d) | 1.5h → 2h | 58.59d → 46.62d |  | baseline start 2018-07-27 20:31 → 2018-07-06 16:00; baseline finish 2018-07-30 06:01 → 2018-07-06 18:00 |
| 581 | Fl Head Pl Grinding | 2018-07-30 06:01 → 2018-07-06 18:00 (-24d) | 2018-07-30 09:01 → 2018-07-06 20:00 (-24d) | 3h → 2h | 58.59d → 46.62d |  | baseline start 2018-07-30 06:01 → 2018-07-06 18:00; baseline finish 2018-07-30 09:01 → 2018-07-06 20:00 |
| 582 | **Fl Head Formig** | 2018-07-30 09:01 → 2018-07-07 08:30 (-23d) | 2018-08-04 17:01 → 2018-07-17 11:30 (-18d) | 11d → 7.38d | 58.59d → 23.06d | Floating Head Dish Forming → none | baseline start 2018-07-30 09:01 → 2018-07-07 08:30; baseline finish 2018-08-04 17:01 → 2018-07-17 11:30 |
| 583 | Fl Head Forming | 2018-07-30 09:01 → 2018-07-07 08:30 (-23d) | 2018-08-04 09:01 → 2018-07-16 17:30 (-19d) | 10d → 7d | 58.59d → 23.06d | Floating Head Dish Forming → 576 | baseline start 2018-07-30 09:01 → 2018-07-07 08:30; baseline finish 2018-08-04 09:01 → 2018-07-16 17:30 |
| 584 | Fl Head Profile Check | 2018-08-04 09:01 → 2018-07-17 08:30 (-18d) | 2018-08-04 17:01 → 2018-07-17 11:30 (-18d) | 1d → 3h | 58.59d → 23.06d |  | baseline start 2018-08-04 09:01 → 2018-07-17 08:30; baseline finish 2018-08-04 17:01 → 2018-07-17 11:30 |
| 585 | **Fl Head Cutting** | 2018-08-04 17:01 → 2018-07-17 11:30 (-18d) | 2018-08-06 07:01 → 2018-07-17 14:30 (-20d) | 0.75d → 0.25d | 58.59d → 23.06d | 582 → none | baseline start 2018-08-04 17:01 → 2018-07-17 11:30; baseline finish 2018-08-06 07:01 → 2018-07-17 14:30 |
| 586 | Fl Head Marking | 2018-08-04 17:01 → 2018-07-17 11:30 (-18d) | 2018-08-04 21:01 → 2018-07-17 12:30 (-18d) | 4h → 1h | 58.59d → 23.06d |  | baseline start 2018-08-04 17:01 → 2018-07-17 11:30; baseline finish 2018-08-04 21:01 → 2018-07-17 12:30 |
| 587 | Fl Head Cutting | 2018-08-04 21:01 → 2018-07-17 13:30 (-18d) | 2018-08-06 07:01 → 2018-07-17 14:30 (-20d) | 2h → 1h | 58.59d → 23.06d |  | baseline start 2018-08-04 21:01 → 2018-07-17 13:30; baseline finish 2018-08-06 07:01 → 2018-07-17 14:30 |
| 588 | **Fl Head Ep** | 2018-08-06 07:01 → 2018-07-17 14:30 (-20d) | 2018-08-06 11:01 → 2018-07-17 16:30 (-20d) | 0.5d → 0.25d | 58.59d → 46.06d | 585 → none | baseline start 2018-08-06 07:01 → 2018-07-17 14:30; baseline finish 2018-08-06 11:01 → 2018-07-17 16:30 |
| 589 | Fl Head Grinding | 2018-08-06 07:01 → 2018-07-17 14:30 (-20d) | 2018-08-06 11:01 → 2018-07-17 16:30 (-20d) | 4h → 2h | 58.59d → 46.06d |  | baseline start 2018-08-06 07:01 → 2018-07-17 14:30; baseline finish 2018-08-06 11:01 → 2018-07-17 16:30 |
| 590 | **Fl Head Fit Up** | 2018-08-06 11:01 → 2018-06-21 09:00 (-46d) | 2018-08-06 15:01 → 2018-06-21 13:00 (-46d) |  | 58.59d → 62.5d | 588 → none | baseline start 2018-08-06 11:01 → 2018-06-21 09:00; baseline finish 2018-08-06 15:01 → 2018-06-21 13:00 |
| 591 | Fl Head Fit Up | 2018-08-06 11:01 → 2018-06-21 09:00 (-46d) | 2018-08-06 15:01 → 2018-06-21 13:00 (-46d) |  | 58.59d → 62.5d | 588 → 40 | baseline start 2018-08-06 11:01 → 2018-06-21 09:00; baseline finish 2018-08-06 15:01 → 2018-06-21 13:00 |
| 592 | **Fl Head Welding** | 2018-08-06 15:01 → 2018-06-21 13:00 (-46d) | 2018-08-09 09:01 → 2018-06-22 22:00 (-48d) | 5.25d → 3.12d | 58.59d → 62.5d | 590 → none | baseline start 2018-08-06 15:01 → 2018-06-21 13:00; baseline finish 2018-08-09 09:01 → 2018-06-22 22:00 |
| 593 | Fl Head Welding | 2018-08-06 15:01 → 2018-06-21 13:00 (-46d) | 2018-08-07 17:01 → 2018-06-21 21:00 (-47d) | 18h → 8h | 58.59d → 62.5d | 590 → 591 | resources Helper; SMAW Welder → Helper; Forging Non-Std (Cost) [0.1%]; SMAW Welder; baseline start 2018-08-06 15:01 → 2018-06-21 13:00; baseline finish 2018-08-07 17:01 → 2018-06-21 21:00 |
| 594 | Fl Head Pp Plate Fit Up | 2018-08-07 17:01 → 2018-06-21 21:00 (-47d) | 2018-08-08 06:01 → 2018-06-22 08:00 (-47d) | 5h → 3h | 58.59d → 62.5d |  | baseline start 2018-08-07 17:01 → 2018-06-21 21:00; baseline finish 2018-08-08 06:01 → 2018-06-22 08:00 |
| 595 | Fl Head Pp Pl Welding | 2018-08-08 06:01 → 2018-06-22 08:00 (-47d) | 2018-08-08 16:01 → 2018-06-22 16:00 (-47d) | 10h → 8h | 58.59d → 62.5d |  | baseline start 2018-08-08 06:01 → 2018-06-22 08:00; baseline finish 2018-08-08 16:01 → 2018-06-22 16:00 |
| 596 | Fl Head Pp Pl Level Grinding | 2018-08-08 16:01 → 2018-06-22 16:00 (-47d) | 2018-08-09 07:01 → 2018-06-22 19:00 (-48d) | 7h → 3h | 58.59d → 62.5d |  | baseline start 2018-08-08 16:01 → 2018-06-22 16:00; baseline finish 2018-08-09 07:01 → 2018-06-22 19:00 |
| 597 | Fl Head Inspection | 2018-08-09 07:01 → 2018-06-22 19:00 (-48d) | 2018-08-09 09:01 → 2018-06-22 22:00 (-48d) | 2h → 3h | 58.59d → 62.5d |  | baseline start 2018-08-09 07:01 → 2018-06-22 19:00; baseline finish 2018-08-09 09:01 → 2018-06-22 22:00 |
| 598 | **Fl Head Sr & Machining** | 2018-08-09 09:01 → 2018-06-25 08:30 (-45d) | 2018-08-09 21:31 → 2018-07-06 15:30 (-34d) | 1.56d → 10.75d | 58.59d → 31.19d | 592 → none | baseline start 2018-08-09 09:01 → 2018-06-25 08:30; baseline finish 2018-08-09 21:31 → 2018-07-06 15:30 |

| ID | Task | Start | Finish | Duration | Total float | Predecessors | Other |
| --- | --- | --- | --- | --- | --- | --- | --- |
| 599 | Fl Head Sr | 2018-08-09 09:01 → 2018-06-25 08:30 (-45d) | 2018-08-09 12:01 → 2018-06-30 17:30 (-40d) | 3h → 6d | 58.59d → 31.19d |  | baseline start 2018-08-09 09:01 → 2018-06-25 08:30; baseline finish 2018-08-09 12:01 → 2018-06-30 17:30 |
| 600 | Fl Head Final Machining | 2018-08-09 12:01 → 2018-07-02 08:30 (-38d) | 2018-08-09 16:01 → 2018-07-05 17:30 (-35d) | 4h → 4d | 58.59d → 31.19d |  | baseline start 2018-08-09 12:01 → 2018-07-02 08:30; baseline finish 2018-08-09 16:01 → 2018-07-05 17:30 |
| 601 | Fl Head Hole Marking | 2018-08-09 16:01 → 2018-07-06 08:30 (-34d) | 2018-08-09 16:31 → 2018-07-06 09:30 (-34d) | 0.5h → 1h | 58.59d → 31.19d |  | baseline start 2018-08-09 16:01 → 2018-07-06 08:30; baseline finish 2018-08-09 16:31 → 2018-07-06 09:30 |
| 602 | Fl Head Hole Drilling | 2018-08-09 16:31 → 2018-07-06 09:30 (-34d) | 2018-08-09 20:31 → 2018-07-06 11:30 (-34d) | 4h → 2h | 58.59d → 31.19d |  | baseline start 2018-08-09 16:31 → 2018-07-06 09:30; baseline finish 2018-08-09 20:31 → 2018-07-06 11:30 |
| 603 | Fl Head Final Inspection | 2018-08-09 20:31 → 2018-07-06 11:30 (-34d) | 2018-08-09 21:31 → 2018-07-06 15:30 (-34d) | 1h → 3h | 58.59d → 31.19d |  | baseline start 2018-08-09 20:31 → 2018-07-06 11:30; baseline finish 2018-08-09 21:31 → 2018-07-06 15:30 |
| 604 | **Tube Bundle Fabrication** | 2018-07-27 21:31 → 2018-08-16 17:00 (+20d) | 2018-08-17 16:06 → 2018-09-29 17:45 (+43d) | 14.82d → 68.09d |  |  | baseline start 2018-07-27 21:31 → 2018-08-16 17:00; baseline finish 2018-08-17 16:06 → 2018-09-29 17:45 |
| 605 | **Tube Bundle Assy** | 2018-07-27 21:31 → 2018-08-16 17:00 (+20d) | 2018-07-30 15:01 → 2018-08-17 17:00 (+18d) | 1.19d → 2d |  | Tube Sheet Drilling 1 Off 2, Tube Sheet Drilling 2 Off 2 → none | baseline start 2018-07-27 21:31 → 2018-08-16 17:00; baseline finish 2018-07-30 15:01 → 2018-08-17 17:00 |
| 606 | Frame Set Up & Tube Sht Set Up | 2018-07-27 21:31 → 2018-08-16 17:00 (+20d) | 2018-07-30 07:01 → 2018-08-17 13:00 (+18d) | 1.5h → 12h |  | Tube Sheet Drilling 1 Off 2, Tube Sheet Drilling 2 Off 2 → 575, 70, 205, 48 | baseline start 2018-07-27 21:31 → 2018-08-16 17:00; baseline finish 2018-07-30 07:01 → 2018-08-17 13:00 |
| 608 | **Tube Insert** | 2018-07-30 15:01 → 2018-08-17 17:00 (+18d) | 2018-08-01 11:01 → 2018-08-24 13:30 (+23d) | 3.5d → 11.56d |  | 605 → none | baseline start 2018-07-30 15:01 → 2018-08-17 17:00; baseline finish 2018-08-01 11:01 → 2018-08-24 13:30 |
| 609 | Tube Insert | 2018-07-30 15:01 → 2018-08-17 17:00 (+18d) | 2018-08-01 11:01 → 2018-08-23 17:30 (+22d) | 28h → 80.5h |  |  | baseline start 2018-07-30 15:01 → 2018-08-17 17:00; baseline finish 2018-08-01 11:01 → 2018-08-23 17:30 |
| 612 | **Sliding Strip Fit Up Welding** | 2018-08-01 11:01 → 2018-08-24 13:30 (+23d) | 2018-08-04 06:01 → 2018-08-28 11:30 (+24d) | 5.38d → 3.75d |  | 608 → none | baseline start 2018-08-01 11:01 → 2018-08-24 13:30; baseline finish 2018-08-04 06:01 → 2018-08-28 11:30 |
| 613 | Sealing Strip Fit Up | 2018-08-01 11:01 → 2018-08-24 13:30 (+23d) | 2018-08-01 18:01 → 2018-08-27 13:30 (+26d) | 7h → 16h |  |  | baseline start 2018-08-01 11:01 → 2018-08-24 13:30; baseline finish 2018-08-01 18:01 → 2018-08-27 13:30 |
| 614 | Sliding Strip Welding | 2018-08-01 18:01 → 2018-08-27 13:30 (+26d) | 2018-08-02 20:01 → 2018-08-27 17:30 (+25d) | 18h → 4h |  |  | baseline start 2018-08-01 18:01 → 2018-08-27 13:30; baseline finish 2018-08-02 20:01 → 2018-08-27 17:30 |
| 615 | Seal/Slid Trip Weld Grind | 2018-08-02 20:01 → 2018-08-27 17:30 (+25d) | 2018-08-04 06:01 → 2018-08-28 11:30 (+24d) | 18h → 10h |  |  | baseline start 2018-08-02 20:01 → 2018-08-27 17:30; baseline finish 2018-08-04 06:01 → 2018-08-28 11:30 |
| 616 | **Tube Bundle Insert** | 2018-08-04 06:01 → 2018-08-28 11:30 (+24d) | 2018-08-06 15:31 → 2018-08-29 19:30 (+23d) | 3.19d → 3d |  | 612 → none | baseline start 2018-08-04 06:01 → 2018-08-28 11:30; baseline finish 2018-08-06 15:31 → 2018-08-29 19:30 |
| 617 | Tube Bundle Insert In Shell | 2018-08-04 06:01 → 2018-08-28 11:30 (+24d) | 2018-08-04 14:01 → 2018-08-29 11:30 (+25d) | 8h → 16h |  |  | resources Helper [500%]; Fitter [300%] → Helper [800%]; Fitter [300%]; baseline start 2018-08-04 06:01 → 2018-08-28 11:30; baseline finish 2018-08-04 14:01 → 2018-08-29 11:30 |
| 618 | Fl Head Tube Sht Fixing | 2018-08-04 14:01 → 2018-08-29 11:30 (+25d) | 2018-08-06 08:01 → 2018-08-29 15:30 (+23d) | 10h → 4h |  |  | baseline start 2018-08-04 14:01 → 2018-08-29 11:30; baseline finish 2018-08-06 08:01 → 2018-08-29 15:30 |
| 619 | Test Flg & Gland Assy | 2018-08-06 08:01 → 2018-08-29 15:30 (+23d) | 2018-08-06 15:31 → 2018-08-29 19:30 (+23d) | 7.5h → 4h |  |  | resources Helper [300%]; Fitter [200%] → Helper [600%]; Fitter [300%]; baseline start 2018-08-06 08:01 → 2018-08-29 15:30; baseline finish 2018-08-06 15:31 → 2018-08-29 19:30 |
| 620 | **Tube Expansion In Grooves** | 2018-08-06 15:31 → 2018-08-29 19:30 (+23d) | 2018-08-08 09:26 → 2018-09-05 19:45 (+28d) | 3.24d → 12.03d |  | 616 → none | baseline start 2018-08-06 15:31 → 2018-08-29 19:30; baseline finish 2018-08-08 09:26 → 2018-09-05 19:45 |
| 623 | Tube Trimming Fl Side | 2018-08-07 10:46 → 2018-08-31 19:30 (+24d) | 2018-08-07 18:46 → 2018-09-04 19:45 (+28d) | 8h → 48.25h |  | Tube Exp - Fl Side - 1 Stage → 622 | baseline start 2018-08-07 10:46 → 2018-08-31 19:30; baseline finish 2018-08-07 18:46 → 2018-09-04 19:45 |
| 625 | **Tube Exp- Pnuematic Test** | 2018-08-08 09:26 → 2018-09-05 19:45 (+28d) | 2018-08-08 19:06 → 2018-09-07 07:45 (+30d) | 1.21d → 2.5d |  | 620 → none | baseline start 2018-08-08 09:26 → 2018-09-05 19:45; baseline finish 2018-08-08 19:06 → 2018-09-07 07:45 |
| 626 | Tube Exp Pnuematic Test | 2018-08-08 09:26 → 2018-09-05 19:45 (+28d) | 2018-08-08 16:06 → 2018-09-06 15:45 (+29d) | 6.67h → 12h |  |  | baseline start 2018-08-08 09:26 → 2018-09-05 19:45; baseline finish 2018-08-08 16:06 → 2018-09-06 15:45 |
| 627 | Pnuematic Test Tpi Witness | 2018-08-08 16:06 → 2018-09-06 15:45 (+29d) | 2018-08-08 17:06 → 2018-09-06 18:45 (+29d) | 1h → 3h |  |  | baseline start 2018-08-08 16:06 → 2018-09-06 15:45; baseline finish 2018-08-08 17:06 → 2018-09-06 18:45 |
| 628 | Cleaning | 2018-08-08 17:06 → 2018-09-06 18:45 (+29d) | 2018-08-08 19:06 → 2018-09-07 07:45 (+30d) | 2h → 5h |  |  | baseline start 2018-08-08 17:06 → 2018-09-06 18:45; baseline finish 2018-08-08 19:06 → 2018-09-07 07:45 |
| 629 | **Tube Tube Sheet Welding- Ft Side** | 2018-08-08 19:06 → 2018-09-07 07:45 (+30d) | 2018-08-14 11:06 → 2018-09-19 12:45 (+36d) | 7d → 16.62d |  | 625 → none | baseline start 2018-08-08 19:06 → 2018-09-07 07:45; baseline finish 2018-08-14 11:06 → 2018-09-19 12:45 |
| 630 | Tube Welding - St Side Root | 2018-08-08 19:06 → 2018-09-07 07:45 (+30d) | 2018-08-10 06:06 → 2018-09-11 16:15 (+32d) | 19h → 40.5h |  |  | baseline start 2018-08-08 19:06 → 2018-09-07 07:45; baseline finish 2018-08-10 06:06 → 2018-09-11 16:15 |
| 631 | Tube Welding - St Side Root Dp | 2018-08-10 06:06 → 2018-09-11 16:15 (+32d) | 2018-08-10 15:06 → 2018-09-11 20:15 (+32d) | 9h → 4h |  |  | baseline start 2018-08-10 06:06 → 2018-09-11 16:15; baseline finish 2018-08-10 15:06 → 2018-09-11 20:15 |
| 632 | Tube Welding - St Side Final Weld | 2018-08-10 15:06 → 2018-09-11 20:15 (+32d) | 2018-08-13 18:06 → 2018-09-18 20:45 (+36d) | 19h → 80.5h |  |  | baseline start 2018-08-10 15:06 → 2018-09-11 20:15; baseline finish 2018-08-13 18:06 → 2018-09-18 20:45 |
| 633 | Tube Welding - St Side Final Dp | 2018-08-13 18:06 → 2018-09-18 20:45 (+36d) | 2018-08-14 11:06 → 2018-09-19 12:45 (+36d) | 9h → 8h |  |  | baseline start 2018-08-13 18:06 → 2018-09-18 20:45; baseline finish 2018-08-14 11:06 → 2018-09-19 12:45 |
| 634 | **Tube To Tube Sheet Welding - Fl Head Side** | 2018-08-14 11:06 → 2018-09-19 12:45 (+36d) | 2018-08-17 16:06 → 2018-09-29 17:45 (+43d) | 4.62d → 16.62d |  | 629 → none | baseline start 2018-08-14 11:06 → 2018-09-19 12:45; baseline finish 2018-08-17 16:06 → 2018-09-29 17:45 |
| 635 | Tube Welding - Flh Side Root | 2018-08-14 11:06 → 2018-09-19 12:45 (+36d) | 2018-08-16 14:06 → 2018-09-21 21:15 (+36d) | 19h → 40.5h | 2.25d → 0d |  | baseline start 2018-08-14 11:06 → 2018-09-19 12:45; baseline finish 2018-08-16 14:06 → 2018-09-21 21:15 |
| 636 | Tube Welding - Flh Side Root Dp | 2018-08-14 11:06 → 2018-09-21 21:15 (+38d) | 2018-08-14 20:06 → 2018-09-24 09:15 (+41d) | 9h → 4h |  | 629 → 635 | baseline start 2018-08-14 11:06 → 2018-09-21 21:15; baseline finish 2018-08-14 20:06 → 2018-09-24 09:15 |
| 637 | Tube Welding - Flh Side Final Weld | 2018-08-14 20:06 → 2018-09-24 09:15 (+41d) | 2018-08-17 07:06 → 2018-09-29 09:45 (+43d) | 19h → 80.5h |  |  | baseline start 2018-08-14 20:06 → 2018-09-24 09:15; baseline finish 2018-08-17 07:06 → 2018-09-29 09:45 |
| 638 | Tube Welding - Flh Side Final Dp | 2018-08-17 07:06 → 2018-09-29 09:45 (+43d) | 2018-08-17 16:06 → 2018-09-29 17:45 (+43d) | 9h → 8h |  |  | baseline start 2018-08-17 07:06 → 2018-09-29 09:45; baseline finish 2018-08-17 16:06 → 2018-09-29 17:45 |
| 640 | **Shell Side Hydro** | 2018-08-17 16:06 → 2018-07-03 13:15 (-45d) | 2018-08-21 11:26 → 2018-07-04 17:15 (-48d) | 5.42d → 2.5d | 0d → 77.91d |  | baseline start 2018-08-17 16:06 → 2018-06-20 19:00; baseline finish 2018-08-21 11:26 → 2018-06-22 07:00 |
| 641 | Shell Side Hydro | 2018-08-18 17:06 → 2018-07-03 13:15 (-46d) | 2018-08-20 18:26 → 2018-07-04 09:15 (-47d) | 17.33h → 12h | 0d → 77.91d | Shell Side Water Filling → 265 | baseline start 2018-08-18 17:06 → 2018-06-20 19:00; baseline finish 2018-08-20 18:26 → 2018-06-21 15:00 |
| 642 | Shell Side Tpi Witness | 2018-08-20 18:26 → 2018-07-04 09:15 (-47d) | 2018-08-20 19:26 → 2018-07-04 13:15 (-47d) | 1h → 4h | 0d → 77.91d |  | baseline start 2018-08-20 18:26 → 2018-06-21 15:00; baseline finish 2018-08-20 19:26 → 2018-06-21 19:00 |
| 643 | De Watering & Dismantle Of Gland | 2018-08-20 19:26 → 2018-07-04 13:15 (-47d) | 2018-08-21 11:26 → 2018-07-04 17:15 (-48d) | 8h → 4h | 0d → 77.91d |  | baseline start 2018-08-20 19:26 → 2018-06-21 19:00; baseline finish 2018-08-21 11:26 → 2018-06-22 07:00 |
| 654 | **Painting** | 2018-09-07 10:16 → 2018-07-05 08:14 (-64d) | 2018-09-12 10:16 → 2018-07-06 16:14 (-68d) | 6d → 3d | 10d → 77.91d | Nitorgen Purging → none | baseline start 2018-09-07 10:16 → 2018-06-22 13:59; baseline finish 2018-09-12 10:16 → 2018-06-25 21:59 |
| 659 | Store Handover | 2018-09-07 10:16 → 2018-07-06 16:14 (-63d) | 2018-09-10 10:16 → 2018-07-07 16:14 (-65d) |  | 0d → 38.91d | Hydro Testing → 654 | baseline start 2018-09-07 10:16 → 2018-06-26 08:30; baseline finish 2018-09-10 10:16 → 2018-06-26 17:30 |
| 660 | Transport Equipment to Delivery Location | 2018-09-10 10:16 → 2018-07-13 16:14 (-59d) | 2018-09-17 10:16 → 2018-07-20 16:14 (-59d) |  | 0d → 38.91d | 659 → 659FS+5d | resources Helper; Store; SC Transport (Cost) [0.1%]; Foreman [50%] → none; baseline start 2018-09-10 10:16 → 2018-07-03 08:30; baseline finish 2018-09-17 10:16 → 2018-07-07 17:30 |
| 661 | Final Documentation Preperation & Review | 2018-09-07 10:16 → 2018-07-20 16:14 (-49d) | 2018-09-15 10:16 → 2018-08-08 16:14 (-38d) | 5d → 15d | 1.75d → 38.91d | Hydro Testing → 660 | baseline start 2018-09-07 10:16 → 2018-07-09 08:30; baseline finish 2018-09-15 10:16 → 2018-07-26 17:30 |
| 662 | Final Documentation Submission | 2018-09-15 10:16 → 2018-08-08 16:14 (-38d) | 2018-09-15 12:16 → 2018-08-09 09:14 (-37d) |  | 1.75d → 38.91d |  | resources QC Engineer → Marketing; baseline start 2018-09-15 10:16 → 2018-07-27 08:30; baseline finish 2018-09-15 12:16 → 2018-07-27 10:30 |
| 663 | Warranty guarantee Submission | 2018-09-15 12:16 → 2018-07-20 16:14 (-57d) | 2018-09-17 12:16 → 2018-07-31 16:14 (-48d) | 1d → 8d | 1.75d → 46.16d | 662 → 660 | resources Finance → Marketing; Finance; baseline start 2018-09-15 12:16 → 2018-07-09 08:30; baseline finish 2018-09-17 12:16 → 2018-07-18 17:30 |
| 664 | Invoice Submission | 2018-09-17 10:16 → 2018-07-20 16:14 (-59d) | 2018-09-19 10:16 → 2018-07-23 16:14 (-58d) |  | 0d → 52.16d |  | resources PM → Marketing; baseline start 2018-09-17 10:16 → 2018-07-09 08:30; baseline finish 2018-09-19 10:16 → 2018-07-10 17:30 |
