# 4221-2403

How a schedule from MS Project changed from version to version. A marks actual dates.

## Version 1 (saved 2018-05-24, file 4221-2403.mpp)

Note of the change: third commit

| ID | WBS | Task | Duration | Start | Finish | Predecessors | Complete | Total float | Constraint |
| --- | --- | --- | --- | --- | --- | --- | --- | --- | --- |
| 1 |  | Drawing Approval | 1d | 2018-05-21 08:30 | 2018-05-21 17:30 |  |  | 0d | start no earlier than 2018-05-21 08:00 |
| 2 | 2 | **Preliminary Details For Enquiry** | 72d | 2017-11-02 08:30 A | 2018-02-02 17:30 A |  | 100% |  |  |
| 3 |  | Tubes SA 179 | 3d | 2017-11-02 08:30 A | 2017-11-04 17:30 A |  | 100% |  |  |
| 4 |  | Forgings SA 266 Gr.4 | 2d | 2018-02-01 08:30 A | 2018-02-02 17:30 A |  | 100% |  |  |
| 5 | 3 | **PR Issue** | 126d | 2017-12-21 08:30 A | 2018-06-01 17:30 |  | 3% | 103d |  |
| 6 |  | Plates | 7d | 2018-05-22 08:30 | 2018-05-30 17:30 | 1 |  | 0d |  |
| 7 |  | Pipes | 7d | 2018-05-22 08:30 | 2018-05-30 17:30 | 1 |  | 29.12d |  |
| 8 |  | Rods | 9d | 2018-05-22 08:30 | 2018-06-01 17:30 | 1 |  | 103d |  |
| 9 |  | Tubes | 2d | 2017-12-21 08:30 A | 2017-12-22 17:30 A | 3 | 100% |  |  |
| 10 |  | Forgings(std,Non-std,Blank) | 4d | 2018-05-22 08:30 | 2018-05-25 17:30 | 1 |  | 20.62d |  |
| 11 |  | 180 Deg return radius bend | 7d | 2018-05-22 08:30 | 2018-05-30 17:30 | 1 |  | 42.62d |  |
| 12 |  | Gaskets | 7d | 2018-05-22 08:30 | 2018-05-30 17:30 | 1 |  | 24.75d |  |
| 13 |  | Cosumbales | 7d | 2018-05-22 08:30 | 2018-05-30 17:30 | 1 |  | 54.75d |  |
| 14 |  | Fastners | 7d | 2018-05-22 08:30 | 2018-05-30 17:30 | 1 |  | 24.88d |  |
| 15 |  | Paint | 7d | 2018-05-22 08:30 | 2018-05-30 17:30 | 1 |  | 24.75d |  |
| 16 |  | N2 Purgings | 7d | 2018-05-22 08:30 | 2018-05-30 17:30 | 1 |  | 105d |  |
| 17 | 4 | **Material Ordering** | 121d | 2018-01-05 08:30 A | 2018-06-11 17:30 |  | 3% | 103d |  |
| 18 |  | Plates | 7d | 2018-05-31 08:30 | 2018-06-07 17:30 | 6 |  | 0d |  |
| 19 |  | Pipes | 7d | 2018-05-31 08:30 | 2018-06-07 17:30 | 7 |  | 29.12d |  |
| 20 |  | Rods | 7d | 2018-06-02 08:30 | 2018-06-11 17:30 | 8 |  | 103d |  |
| 21 |  | Tubes | 2d | 2018-01-05 08:30 A | 2018-01-06 17:30 A | 9 | 100% |  |  |
| 22 |  | Forgings(std,Non-std,Blank) | 7d | 2018-05-28 08:30 | 2018-06-04 17:30 | 10 |  | 20.62d |  |
| 23 |  | 180 Deg return radius bend | 7d | 2018-05-31 08:30 | 2018-06-07 17:30 | 11 |  | 42.62d |  |
| 24 |  | Gaskets | 7d | 2018-05-31 08:30 | 2018-06-07 17:30 | 12 |  | 24.75d |  |
| 25 |  | Cosumbales | 7d | 2018-05-31 08:30 | 2018-06-07 17:30 | 13 |  | 54.75d |  |
| 26 |  | Fastners | 7d | 2018-05-31 08:30 | 2018-06-07 17:30 | 14 |  | 24.88d |  |
| 27 |  | Paint | 7d | 2018-05-31 08:30 | 2018-06-07 17:30 | 15 |  | 24.75d |  |
| 28 |  | N2 Purgings | 7d | 2018-05-31 08:30 | 2018-06-07 17:30 | 16 |  | 105d |  |
| 29 | 5 | **Material Receipt- Double Pipe Exchanger(171-EE-2403)** | 35.25d | 2018-08-04 08:30 | 2018-09-20 10:30 |  |  | 15d |  |
| 30 |  | Inner Pipe SA 106Gr.B - 4 Nos | 3h | 2018-08-04 08:30 | 2018-08-04 11:30 | 19FS+45d |  | 32.62d |  |
| 31 |  | Pipe SA 106 Gr.B- 3 NOS | 2h | 2018-08-04 08:30 | 2018-08-04 10:30 | 19FS+45d |  | 59.75d |  |
| 32 |  | Outer Pipe SA 106 Gr.B-4 NOS | 2h | 2018-08-04 08:30 | 2018-08-04 10:30 | 19FS+45d |  | 32.75d |  |
| 33 |  | Cap for Outer Pipe SA 234 GR WPB | 2h | 2018-08-04 08:30 | 2018-08-04 10:30 | 19FS+45d |  | 48.75d |  |
| 34 |  | Inner Pipe Flange SA 105 - 14 NOS | 3h | 2018-08-21 08:30 | 2018-08-21 11:30 | 22FS+60d |  | 20.62d |  |
| 35 |  | Flange for S1 SA 105- 1 NOS | 1h | 2018-08-21 08:30 | 2018-08-21 09:30 | 22FS+60d |  | 42.38d |  |
| 36 |  | Flange for S2 SA 105- 1 NOS | 1h | 2018-08-21 08:30 | 2018-08-21 09:30 | 22FS+60d |  | 42.38d |  |
| 37 |  | Flange for S3- S8 SA 105- 6 NOS | 3h | 2018-08-21 08:30 | 2018-08-21 11:30 | 22FS+60d |  | 42.12d |  |
| 38 |  | 180 Deg return radius bend | 3h | 2018-08-24 08:30 | 2018-08-24 11:30 | 23FS+60d |  | 42.62d |  |
| 39 |  | Nozzle Pipe SA 106 Gr.B- 8 NOS | 3h | 2018-09-06 08:30 | 2018-09-06 11:30 | 19FS+70d |  | 29.12d |  |
| 40 |  | Saddle plate(12T,16T,10T)- IS 2062 Gr.B | 2h | 2018-08-24 08:30 | 2018-08-24 10:30 | 18FS+60d |  | 0d |  |
| 41 |  | CS plate(12T,10T,6T)_ SA 516 Gr.60 | 1h | 2018-08-24 08:30 | 2018-08-24 09:30 | 18FS+60d |  | 21.88d |  |
| 42 |  | Lifting lug plate (12T)- SA 516 Gr.70 | 2h | 2018-08-24 08:30 | 2018-08-24 10:30 | 18FS+60d |  | 6.75d |  |
| 43 |  | Gaskets | 2h | 2018-09-20 08:30 | 2018-09-20 10:30 | 24FS+80d |  | 24.75d |  |
| 44 |  | Consumables | 2h | 2018-08-10 08:30 | 2018-08-10 10:30 | 25FS+50d |  | 54.75d |  |
| 45 |  | Fastners | 1h | 2018-09-20 08:30 | 2018-09-20 09:30 | 26FS+80d |  | 24.88d |  |
| 46 |  | Paint | 2h | 2018-09-20 08:30 | 2018-09-20 10:30 | 27FS+80d |  | 24.75d |  |
| 47 | 6 | **Fabrication Double pipe Exchanger(171-EE-2403)** | 94.75d | 2018-08-21 11:30 | 2018-10-23 17:30 |  |  | 0d |  |
| 48 | 6.1 | **Nozzle Fabrication** | 10.5d | 2018-09-06 11:30 | 2018-09-14 15:30 |  |  | 58.12d |  |
| 49 |  | Nozzle Pipe Receipt | 1h | 2018-09-06 11:30 | 2018-09-06 12:30 | 39, 35, 36, 37 |  | 58.12d |  |
| 50 | 6.1.2 | **Nozzle Prep** | 7.88d | 2018-09-06 12:30 | 2018-09-12 11:30 |  |  | 58.12d |  |
| 51 |  | Nozzle Pipe Marking | 4h | 2018-09-06 12:30 | 2018-09-06 16:30 | 49 |  | 58.12d |  |
| 52 |  | Nozzle Pipe Stamping | 1h | 2018-09-07 08:30 | 2018-09-07 09:30 | 51FS+1d |  | 58.12d |  |
| 53 |  | Nozzle Pipe Cutting | 5h | 2018-09-07 09:30 | 2018-09-07 14:30 | 52 |  | 58.12d |  |
| 54 |  | Nozzle Pipe EP | 5h | 2018-09-07 14:30 | 2018-09-07 19:30 | 53 |  | 58.12d |  |
| 55 |  | Nozzle Flange +Pipe Fitup | 6h | 2018-09-07 19:30 | 2018-09-10 09:30 | 54 |  | 58.12d |  |
| 56 |  | Nozzle Flange +Pipe Fitup Inspection | 3h | 2018-09-10 09:30 | 2018-09-10 12:30 | 55 |  | 58.12d |  |
| 57 |  | Nozzle Flange +Pipe Root Tig Welding | 14h | 2018-09-10 12:30 | 2018-09-11 10:30 | 56 |  | 58.25d |  |
| 58 |  | Nozzle Flange +Pipe Filler Pass Welding | 14h | 2018-09-11 10:30 | 2018-09-12 08:30 | 57 |  | 58.25d |  |
| 59 |  | DP Check | 3h | 2018-09-12 08:30 | 2018-09-12 11:30 | 58 |  | 58.25d |  |
| 60 | 6.1.3 | **Stiffner** | 1.5d | 2018-09-12 11:30 | 2018-09-14 07:30 |  |  | 58.25d |  |
| 61 |  | Stiffner Marking | 3h | 2018-09-12 11:30 | 2018-09-12 14:30 | 41, 59 |  | 58.25d |  |
| 62 |  | Cutting | 4h | 2018-09-12 14:30 | 2018-09-12 18:30 | 61 |  | 58.25d |  |
| 63 |  | Grinding | 5h | 2018-09-12 18:30 | 2018-09-14 07:30 | 62 |  | 58.25d |  |
| 64 |  | Radiography | 1d | 2018-09-14 07:30 | 2018-09-14 15:30 | 63 |  | 58.25d |  |
| 65 | 6.2 | **Saddle Fabrication(RHS)** | 10.88d | 2018-09-14 10:30 | 2018-09-20 17:30 |  |  | 0d |  |
| 66 |  | Plate Receipt | 3h | 2018-09-14 10:30 | 2018-09-14 13:30 | 40FS+30d |  | 0d |  |
| 67 |  | Saddle Pl Marking | 4h | 2018-09-14 13:30 | 2018-09-14 17:30 | 66 |  | 0d |  |
| 68 |  | Saddle Pl Mkg Inspection | 2h | 2018-09-14 17:30 | 2018-09-14 19:30 | 67 |  | 0d |  |
| 69 |  | Saddle Pl Mkg Cutting | 6h | 2018-09-14 19:30 | 2018-09-15 09:30 | 68 |  | 0d |  |
| 70 |  | Grinding | 8h | 2018-09-15 09:30 | 2018-09-15 17:30 | 69 |  | 0d |  |

| ID | WBS | Task | Duration | Start | Finish | Predecessors | Total float |
| --- | --- | --- | --- | --- | --- | --- | --- |
| 71 |  | Saddle Base Hole Marking | 1h | 2018-09-15 17:30 | 2018-09-15 18:30 | 70 | 0d |
| 72 |  | Saddle Base Hole Drilling | 4h | 2018-09-15 18:30 | 2018-09-17 06:30 | 71 | 0d |
| 73 |  | Saddle Pad Forming | 1d | 2018-09-17 06:30 | 2018-09-17 14:30 | 72 | 0d |
| 74 |  | Saddle Fitup | 1d | 2018-09-17 14:30 | 2018-09-18 06:30 | 73 | 0d |
| 75 |  | Saddle Fitup Inspection | 8h | 2018-09-18 06:30 | 2018-09-18 14:30 | 74 | 0d |
| 76 |  | Saddle Welding | 15h | 2018-09-18 14:30 | 2018-09-19 13:30 | 75 | 0d |
| 77 |  | Saddle Profile Grinding | 6h | 2018-09-19 13:30 | 2018-09-19 19:30 | 76 | 0d |
| 78 |  | DP Check | 6h | 2018-09-19 19:30 | 2018-09-20 09:30 | 77 | 0d |
| 79 |  | Radiography | 1d | 2018-09-20 09:30 | 2018-09-20 17:30 | 78 | 0d |
| 80 | 6.3 | **Saddle Fabrication(LHS)** | 10.88d | 2018-09-14 10:30 | 2018-09-20 17:30 |  | 2.62d |
| 81 |  | Plate Receipt | 3h | 2018-09-14 10:30 | 2018-09-14 13:30 | 40FS+30d | 2.62d |
| 82 |  | Saddle Pl Marking | 4h | 2018-09-14 13:30 | 2018-09-14 17:30 | 81 | 2.62d |
| 83 |  | Saddle Pl Mkg Inspection | 2h | 2018-09-14 17:30 | 2018-09-14 19:30 | 82 | 2.62d |
| 84 |  | Saddle Pl Mkg Cutting | 6h | 2018-09-14 19:30 | 2018-09-15 09:30 | 83 | 2.62d |
| 85 |  | Grinding | 8h | 2018-09-15 09:30 | 2018-09-15 17:30 | 84 | 2.62d |
| 86 |  | Saddle Base Hole Marking | 1h | 2018-09-15 17:30 | 2018-09-15 18:30 | 85 | 2.62d |
| 87 |  | Saddle Base Hole Drilling | 4h | 2018-09-15 18:30 | 2018-09-17 06:30 | 86 | 2.62d |
| 88 |  | Saddle Pad Forming | 1d | 2018-09-17 06:30 | 2018-09-17 14:30 | 87 | 2.62d |
| 89 |  | Saddle Fitup | 1d | 2018-09-17 14:30 | 2018-09-18 06:30 | 88 | 2.62d |
| 90 |  | Saddle Fitup Inspection | 8h | 2018-09-18 06:30 | 2018-09-18 14:30 | 89 | 2.62d |
| 91 |  | Saddle Welding | 15h | 2018-09-18 14:30 | 2018-09-19 13:30 | 90 | 2.62d |
| 92 |  | Saddle Profile Grinding | 6h | 2018-09-19 13:30 | 2018-09-19 19:30 | 91 | 2.62d |
| 93 |  | DP Check | 6h | 2018-09-19 19:30 | 2018-09-20 09:30 | 92 | 2.62d |
| 94 |  | Radiography | 1d | 2018-09-20 09:30 | 2018-09-20 17:30 | 93 | 2.62d |
| 95 | 6.4 | **Other Components** | 32d | 2018-08-24 19:30 | 2018-09-15 19:30 |  | 41.88d |
| 96 | 6.4.1 | **Lifting Lug** | 3.12d | 2018-09-14 10:30 | 2018-09-15 19:30 |  | 13d |
| 97 |  | Lifting Lug Marking (8 Nos) | 2h | 2018-09-14 10:30 | 2018-09-14 12:30 | 42FS+30d | 13d |
| 98 |  | Lifting Lug Cutting | 3h | 2018-09-14 12:30 | 2018-09-14 15:30 | 97 | 13d |
| 99 |  | Lifting Lug Pad Marking | 2h | 2018-09-14 15:30 | 2018-09-14 17:30 | 98, 41 | 13d |
| 100 |  | Lifting Lug Pad Cutting | 4h | 2018-09-14 17:30 | 2018-09-14 21:30 | 99 | 13d |
| 101 |  | Lifting Lug Pad Grinding | 6h | 2018-09-14 21:30 | 2018-09-15 11:30 | 100 | 13d |
| 102 |  | Lifting Lug Pad Forming | 8h | 2018-09-15 11:30 | 2018-09-15 19:30 | 101 | 13d |
| 103 | 6.4.2 | **Insulation Cleat** | 1d | 2018-09-14 09:30 | 2018-09-14 17:30 |  | 58d |
| 104 |  | Insulation Cleat Marking | 1h | 2018-09-14 09:30 | 2018-09-14 10:30 | 41FS+30d | 58d |
| 105 |  | Insulation Cleat Cutting | 2h | 2018-09-14 10:30 | 2018-09-14 12:30 | 104 | 58d |
| 106 |  | Insulation Cleat Grinding | 3h | 2018-09-14 12:30 | 2018-09-14 15:30 | 105 | 58d |
| 107 |  | Insulation Cleat Drilling | 2h | 2018-09-14 15:30 | 2018-09-14 17:30 | 106 | 58d |
| 108 | 6.4.3 | **Bend with flange fabrication** | 2.62d | 2018-08-24 19:30 | 2018-08-28 08:30 |  | 85.12d |
| 109 |  | Bottom 180 Deg return radius bend with flange fit up | 2h | 2018-08-24 19:30 | 2018-08-24 21:30 | 38FS+1d, 34FS+1d | 85.12d |
| 110 |  | welding | 4h | 2018-08-24 21:30 | 2018-08-27 09:30 | 109 | 85.12d |
| 111 |  | Dp check | 1h | 2018-08-27 09:30 | 2018-08-27 10:30 | 110 | 85.12d |
| 112 |  | Middle 180 Deg return radius bend with flange fit up | 2h | 2018-08-27 10:30 | 2018-08-27 12:30 | 111 | 85.12d |
| 113 |  | welding | 4h | 2018-08-27 12:30 | 2018-08-27 16:30 | 112 | 85.12d |
| 114 |  | Dp check | 1h | 2018-08-27 16:30 | 2018-08-27 17:30 | 113 | 85.12d |
| 115 |  | Top 180 Deg return radius bend with flange fit up | 2h | 2018-08-27 17:30 | 2018-08-27 19:30 | 114 | 85.12d |
| 116 |  | welding | 4h | 2018-08-27 19:30 | 2018-08-28 07:30 | 115 | 85.12d |
| 117 |  | Dp check | 1h | 2018-08-28 07:30 | 2018-08-28 08:30 | 116 | 85.12d |
| 118 | 6.5 | **Shell fabrication** | 53.62d | 2018-08-21 11:30 | 2018-09-26 08:30 |  | 20d |
| 119 |  | Marking | 1h | 2018-08-21 11:30 | 2018-08-21 12:30 | 30, 32, 34 | 61.38d |
| 120 |  | stamping | 4h | 2018-08-21 12:30 | 2018-08-21 16:30 | 119 | 61.38d |
| 121 |  | Inner Shell Pipe edge preparation | 4h | 2018-08-22 08:30 | 2018-08-22 12:30 | 120FS+1d | 61.38d |
| 122 |  | Outer shell Pipe edge preparation | 4h | 2018-08-22 12:30 | 2018-08-22 16:30 | 121 | 61.38d |
| 123 |  | Pipe Cap marking & cutting | 2h | 2018-08-22 16:30 | 2018-08-22 18:30 | 33, 122 | 70.75d |
| 124 |  | Inner pipe outer pipe insertion | 2h | 2018-08-22 16:30 | 2018-08-22 18:30 | 121, 122 | 61.38d |
| 125 |  | Pipe cap fitup with inner and outer pipe | 2h | 2018-08-22 18:30 | 2018-08-22 20:30 | 124 | 61.38d |
| 126 |  | Fitup inspection | 2h | 2018-08-23 08:30 | 2018-08-23 10:30 | 125 | 60.88d |
| 127 |  | welding | 4h | 2018-08-23 10:30 | 2018-08-23 14:30 | 126 | 60.88d |
| 128 |  | Inner pipe with flange fitup(RHS) | 2h | 2018-08-23 14:30 | 2018-08-23 16:30 | 127 | 60.88d |
| 129 |  | welding | 4h | 2018-08-23 16:30 | 2018-08-23 20:30 | 128 | 60.88d |
| 130 |  | Inner pipe with flange fitup(LHS) | 2h | 2018-08-23 20:30 | 2018-08-24 06:30 | 129 | 60.88d |
| 131 |  | welding | 4h | 2018-08-24 06:30 | 2018-08-24 10:30 | 130 | 60.88d |
| 132 |  | Outer pipe with saddle fit up(RHS) | 3h | 2018-09-20 17:30 | 2018-09-20 20:30 | 65, 131 | 20d |
| 133 |  | Fitup inspection | 14h | 2018-09-20 20:30 | 2018-09-21 18:30 | 132 | 20d |
| 134 |  | welding | 4h | 2018-09-21 18:30 | 2018-09-24 06:30 | 133 | 20d |
| 135 |  | Outer pipe with saddle fit up(LHS) | 3h | 2018-09-24 06:30 | 2018-09-24 09:30 | 80, 134 | 20d |
| 136 |  | Fitup inspection | 2h | 2018-09-24 09:30 | 2018-09-24 11:30 | 135 | 20d |
| 137 |  | welding | 4h | 2018-09-24 11:30 | 2018-09-24 15:30 | 136 | 20d |
| 138 |  | RF pad forming | 3h | 2018-09-24 15:30 | 2018-09-24 18:30 | 41, 137 | 22d |
| 139 |  | RF pad fit up with outer pipe | 2h | 2018-09-24 18:30 | 2018-09-24 20:30 | 138, 137 | 22d |
| 140 |  | Welding | 4h | 2018-09-24 20:30 | 2018-09-25 08:30 | 139 | 22d |

| ID | WBS | Task | Duration | Start | Finish | Predecessors | Total float |
| --- | --- | --- | --- | --- | --- | --- | --- |
| 141 |  | Outer pipe with nozzle fit up | 3h | 2018-09-24 15:30 | 2018-09-24 18:30 | 137 | 20d |
| 142 |  | Outer pipe with nozzle welding | 5h | 2018-09-24 18:30 | 2018-09-25 07:30 | 141 | 20d |
| 143 |  | Insulation cleat fit up | 2h | 2018-09-25 07:30 | 2018-09-25 09:30 | 142 | 20d |
| 144 |  | welding | 2h | 2018-09-25 09:30 | 2018-09-25 11:30 | 143 | 20d |
| 145 |  | Lifting Lug fit up | 2h | 2018-09-25 11:30 | 2018-09-25 13:30 | 96, 144 | 20d |
| 146 |  | welding | 3h | 2018-09-25 13:30 | 2018-09-25 16:30 | 145 | 20d |
| 147 |  | Radiography | 1d | 2018-09-25 16:30 | 2018-09-26 08:30 | 146 | 20d |
| 148 | 6.6 | **Shell fabrication** | 53.62d | 2018-08-21 11:30 | 2018-09-26 08:30 |  | 20d |
| 149 |  | Marking | 1h | 2018-08-21 11:30 | 2018-08-21 12:30 | 30, 32, 34 | 61.38d |
| 150 |  | stamping | 4h | 2018-08-21 12:30 | 2018-08-21 16:30 | 149 | 61.38d |
| 151 |  | Inner Shell Pipe edge preparation | 4h | 2018-08-22 08:30 | 2018-08-22 12:30 | 150FS+1d | 61.38d |
| 152 |  | Outer shell Pipe edge preparation | 4h | 2018-08-22 12:30 | 2018-08-22 16:30 | 151 | 61.38d |
| 153 |  | Pipe Cap marking & cutting | 2h | 2018-08-22 16:30 | 2018-08-22 18:30 | 33, 152 | 70.75d |
| 154 |  | Inner pipe outer pipe insertion | 2h | 2018-08-22 16:30 | 2018-08-22 18:30 | 151, 152 | 61.38d |
| 155 |  | Pipe cap fitup with inner and outer pipe | 2h | 2018-08-22 18:30 | 2018-08-22 20:30 | 154 | 61.38d |
| 156 |  | Fitup inspection | 2h | 2018-08-23 08:30 | 2018-08-23 10:30 | 155 | 60.88d |
| 157 |  | welding | 4h | 2018-08-23 10:30 | 2018-08-23 14:30 | 156 | 60.88d |
| 158 |  | Inner pipe with flange fitup(RHS) | 2h | 2018-08-23 14:30 | 2018-08-23 16:30 | 157 | 60.88d |
| 159 |  | welding | 4h | 2018-08-23 16:30 | 2018-08-23 20:30 | 158 | 60.88d |
| 160 |  | Inner pipe with flange fitup(LHS) | 2h | 2018-08-23 20:30 | 2018-08-24 06:30 | 159 | 60.88d |
| 161 |  | welding | 4h | 2018-08-24 06:30 | 2018-08-24 10:30 | 160 | 60.88d |
| 162 |  | Outer pipe with saddle fit up(RHS) | 3h | 2018-09-20 17:30 | 2018-09-20 20:30 | 161, 65 | 20d |
| 163 |  | Fitup inspection | 14h | 2018-09-20 20:30 | 2018-09-21 18:30 | 162 | 20d |
| 164 |  | welding | 4h | 2018-09-21 18:30 | 2018-09-24 06:30 | 163 | 20d |
| 165 |  | Outer pipe with saddle fit up(LHS) | 3h | 2018-09-24 06:30 | 2018-09-24 09:30 | 164, 80 | 20d |
| 166 |  | Fitup inspection | 2h | 2018-09-24 09:30 | 2018-09-24 11:30 | 165 | 20d |
| 167 |  | welding | 4h | 2018-09-24 11:30 | 2018-09-24 15:30 | 166 | 20d |
| 168 |  | RF pad forming | 3h | 2018-09-24 15:30 | 2018-09-24 18:30 | 41, 167 | 22d |
| 169 |  | RF pad fit up with outer pipe | 2h | 2018-09-24 18:30 | 2018-09-24 20:30 | 167, 168 | 22d |
| 170 |  | Welding | 4h | 2018-09-24 20:30 | 2018-09-25 08:30 | 169 | 22d |
| 171 |  | Outer pipe with nozzle fit up | 3h | 2018-09-24 15:30 | 2018-09-24 18:30 | 167 | 20d |
| 172 |  | Outer pipe with nozzle welding | 5h | 2018-09-24 18:30 | 2018-09-25 07:30 | 171 | 20d |
| 173 |  | Insulation cleat fit up | 2h | 2018-09-25 07:30 | 2018-09-25 09:30 | 172 | 20d |
| 174 |  | welding | 2h | 2018-09-25 09:30 | 2018-09-25 11:30 | 173 | 20d |
| 175 |  | Lifting Lug fit up | 2h | 2018-09-25 11:30 | 2018-09-25 13:30 | 96, 174 | 20d |
| 176 |  | welding | 3h | 2018-09-25 13:30 | 2018-09-25 16:30 | 175 | 20d |
| 177 |  | Radiography | 1d | 2018-09-25 16:30 | 2018-09-26 08:30 | 176 | 20d |
| 178 | 6.7 | **Shell fabrication** | 53.38d | 2018-08-21 11:30 | 2018-09-26 06:30 |  | 20.25d |
| 179 |  | Marking | 1h | 2018-08-21 11:30 | 2018-08-21 12:30 | 30, 32, 34 | 61.38d |
| 180 |  | stamping | 4h | 2018-08-21 12:30 | 2018-08-21 16:30 | 179 | 61.38d |
| 181 |  | Inner Shell Pipe edge preparation | 4h | 2018-08-22 08:30 | 2018-08-22 12:30 | 180FS+1d | 61.38d |
| 182 |  | Outer shell Pipe edge preparation | 4h | 2018-08-22 12:30 | 2018-08-22 16:30 | 181 | 61.38d |
| 183 |  | Pipe Cap marking & cutting | 2h | 2018-08-22 16:30 | 2018-08-22 18:30 | 33, 182 | 70.75d |
| 184 |  | Inner pipe outer pipe insertion | 2h | 2018-08-22 16:30 | 2018-08-22 18:30 | 181, 182 | 61.38d |
| 185 |  | Pipe cap fitup with inner and outer pipe | 2h | 2018-08-22 18:30 | 2018-08-22 20:30 | 184 | 61.38d |
| 186 |  | Fitup inspection | 2h | 2018-08-23 08:30 | 2018-08-23 10:30 | 185 | 60.88d |
| 187 |  | welding | 4h | 2018-08-23 10:30 | 2018-08-23 14:30 | 186 | 61d |
| 188 |  | Inner pipe with flange fitup(RHS) | 2h | 2018-08-23 14:30 | 2018-08-23 16:30 | 187 | 61d |
| 189 |  | welding | 4h | 2018-08-23 16:30 | 2018-08-23 20:30 | 188 | 61d |
| 190 |  | Inner pipe with flange fitup(LHS) | 2h | 2018-08-23 20:30 | 2018-08-24 06:30 | 189 | 61d |
| 191 |  | welding | 4h | 2018-08-24 06:30 | 2018-08-24 10:30 | 190 | 61d |
| 192 |  | Outer pipe with saddle fit up(RHS) | 3h | 2018-09-20 17:30 | 2018-09-20 20:30 | 191, 65 | 20.12d |
| 193 |  | Fitup inspection | 14h | 2018-09-20 20:30 | 2018-09-21 18:30 | 192 | 20.12d |
| 194 |  | welding | 4h | 2018-09-21 18:30 | 2018-09-24 06:30 | 193 | 20.12d |
| 195 |  | Outer pipe with saddle fit up(LHS) | 3h | 2018-09-24 06:30 | 2018-09-24 09:30 | 194, 80 | 20.12d |
| 196 |  | Fitup inspection | 2h | 2018-09-24 09:30 | 2018-09-24 11:30 | 195 | 20.12d |
| 197 |  | welding | 4h | 2018-09-24 11:30 | 2018-09-24 15:30 | 196 | 20.25d |
| 198 |  | RF pad forming | 3h | 2018-09-24 15:30 | 2018-09-24 18:30 | 41, 197 | 22d |
| 199 |  | RF pad fit up with outer pipe | 2h | 2018-09-24 18:30 | 2018-09-24 20:30 | 197, 198 | 22d |
| 200 |  | Welding | 4h | 2018-09-24 20:30 | 2018-09-25 08:30 | 199 | 22d |
| 201 |  | Outer pipe with nozzle fit up | 3h | 2018-09-24 15:30 | 2018-09-24 18:30 | 197 | 20.25d |
| 202 |  | Outer pipe with nozzle welding | 5h | 2018-09-24 18:30 | 2018-09-25 07:30 | 201 | 20.25d |
| 203 |  | Insulation cleat fit up | 2h | 2018-09-25 07:30 | 2018-09-25 09:30 | 202 | 20.25d |
| 204 |  | welding | 2h | 2018-09-25 09:30 | 2018-09-25 11:30 | 203 | 21.62d |
| 205 |  | Lifting Lug fit up | 2h | 2018-09-25 09:30 | 2018-09-25 11:30 | 96, 203 | 20.25d |
| 206 |  | welding | 3h | 2018-09-25 11:30 | 2018-09-25 14:30 | 205 | 20.25d |
| 207 |  | Radiography | 1d | 2018-09-25 14:30 | 2018-09-26 06:30 | 206 | 20.25d |
| 208 | 6.8 | **Shell fabrication** | 73.62d | 2018-08-21 11:30 | 2018-10-09 08:30 |  | 0d |
| 209 |  | Marking | 1h | 2018-08-21 11:30 | 2018-08-21 12:30 | 30, 32, 34 | 41.38d |
| 210 |  | stamping | 4h | 2018-08-21 12:30 | 2018-08-21 16:30 | 209 | 41.38d |

| ID | WBS | Task | Duration | Start | Finish | Predecessors | Total float |
| --- | --- | --- | --- | --- | --- | --- | --- |
| 211 |  | Inner Shell Pipe edge preparation | 4h | 2018-08-22 08:30 | 2018-08-22 12:30 | 210FS+1d | 41.38d |
| 212 |  | Outer shell Pipe edge preparation | 4h | 2018-08-22 12:30 | 2018-08-22 16:30 | 211 | 41.38d |
| 213 |  | Pipe Cap marking & cutting | 2h | 2018-08-22 16:30 | 2018-08-22 18:30 | 33, 212 | 70.75d |
| 214 |  | Inner pipe outer pipe insertion | 2h | 2018-08-22 16:30 | 2018-08-22 18:30 | 211, 212 | 41.38d |
| 215 |  | Pipe cap fitup with inner and outer pipe | 2h | 2018-08-22 18:30 | 2018-08-22 20:30 | 214 | 41.38d |
| 216 |  | Fitup inspection | 2h | 2018-08-23 08:30 | 2018-08-23 10:30 | 215 | 40.88d |
| 217 |  | welding | 4h | 2018-08-23 10:30 | 2018-08-23 14:30 | 216 | 40.88d |
| 218 |  | Inner pipe with flange fitup(RHS) | 2h | 2018-08-23 14:30 | 2018-08-23 16:30 | 217 | 40.88d |
| 219 |  | welding | 4h | 2018-08-23 16:30 | 2018-08-23 20:30 | 218 | 40.88d |
| 220 |  | Inner pipe with flange fitup(LHS) | 2h | 2018-08-23 20:30 | 2018-08-24 06:30 | 219 | 40.88d |
| 221 |  | welding | 4h | 2018-08-24 06:30 | 2018-08-24 10:30 | 220 | 40.88d |
| 222 |  | Outer pipe with saddle fit up(RHS) | 3h | 2018-09-20 17:30 | 2018-09-20 20:30 | 221, 65 | 0d |
| 223 |  | Fitup inspection | 14h | 2018-09-20 20:30 | 2018-09-21 18:30 | 222 | 0d |
| 224 |  | welding | 4h | 2018-09-21 18:30 | 2018-09-24 06:30 | 223 | 0d |
| 225 |  | Outer pipe with saddle fit up(LHS) | 3h | 2018-09-24 06:30 | 2018-09-24 09:30 | 224, 80 | 0d |
| 226 |  | Fitup inspection | 2h | 2018-09-24 09:30 | 2018-09-24 11:30 | 225 | 0d |
| 227 |  | welding | 4h | 2018-09-24 11:30 | 2018-09-24 15:30 | 226 | 0d |
| 228 |  | RF pad forming | 3h | 2018-09-24 15:30 | 2018-09-24 18:30 | 41, 227 | 22d |
| 229 |  | RF pad fit up with outer pipe | 2h | 2018-09-24 18:30 | 2018-09-24 20:30 | 227, 228 | 22d |
| 230 |  | Welding | 4h | 2018-09-24 20:30 | 2018-09-25 08:30 | 229 | 22d |
| 231 |  | Outer pipe with nozzle fit up | 3h | 2018-09-24 15:30 | 2018-09-24 18:30 | 227 | 0d |
| 232 |  | Outer pipe with nozzle welding | 5h | 2018-09-24 18:30 | 2018-09-25 07:30 | 231 | 0d |
| 233 |  | Insulation cleat fit up | 2h | 2018-09-25 07:30 | 2018-09-25 09:30 | 232 | 0d |
| 234 |  | welding | 2h | 2018-09-25 09:30 | 2018-09-25 11:30 | 233 | 0d |
| 235 |  | Lifting Lug fit up | 2h | 2018-09-25 11:30 | 2018-09-25 13:30 | 96, 234 | 0d |
| 236 |  | welding | 3h | 2018-09-25 13:30 | 2018-09-25 16:30 | 235 | 0d |
| 237 |  | Dummy Activity | 10d | 2018-09-25 16:30 | 2018-10-08 16:30 | 236 | 0d |
| 238 |  | Radiography | 1d | 2018-10-08 16:30 | 2018-10-09 08:30 | 237 | 0d |
| 239 | 6.9 | **Final assembly & Testing** | 20.12d | 2018-10-09 16:30 | 2018-10-23 17:30 |  | 0d |
| 240 |  | Saddle assembly | 2d | 2018-10-09 16:30 | 2018-10-10 16:30 | 118FS+1d, 148FS+1d, 178FS+1d, 208FS+1d | 0d |
| 241 |  | U bend assembly with shell | 2d | 2018-10-10 16:30 | 2018-10-11 16:30 | 240 | 0d |
| 242 |  | Hydro test preparation | 1d | 2018-10-16 08:30 | 2018-10-16 16:30 | 241FS+5d | 0d |
| 243 |  | Hydro test | 2d | 2018-10-16 16:30 | 2018-10-17 16:30 | 242 | 0d |
| 244 |  | Testing inspection | 9h | 2018-10-17 16:30 | 2018-10-19 09:30 | 243 | 0d |
| 245 |  | water drying | 5h | 2018-10-19 09:30 | 2018-10-19 14:30 | 244 | 6.38d |
| 246 |  | Pickling and pasivation | 3d | 2018-10-19 09:30 | 2018-10-20 17:30 | 244 | 0d |
| 247 |  | Primer painting | 2d | 2018-10-20 17:30 | 2018-10-22 17:30 | 246 | 0d |
| 248 |  | Finish painting | 1d | 2018-10-23 09:30 | 2018-10-23 17:30 | 247FS+1d | 0d |

## Version 2 (saved 2018-05-24, file 4221-7001.mpp)

Note of the change: third commit

Last finish 2018-10-23 → 2018-10-20 (-3d). Complete tasks 4 → 18.

Added:

| ID | Task | Duration | Start | Finish | Predecessors | Resources |
| --- | --- | --- | --- | --- | --- | --- |
| 1 | **Project Initiation** | 4.12d | 2017-10-04 08:30 A | 2017-10-09 09:30 A |  |  |
| 2 | PO Receipt | 1d | 2017-10-04 08:30 A | 2017-10-04 17:30 A |  | Marketing |
| 3 | Work Order | 1d | 2017-10-05 08:30 A | 2017-10-05 17:30 A | 2 | Marketing |
| 4 | CRM | 9h | 2017-10-07 08:30 A | 2017-10-09 09:30 A | 3FS+1d | PMO Head; PPC Engineer; QC Engineer; Purchase Engineer; PM; Finance |
| 5 | **Design** | 177d | 2017-10-06 08:30 A | 2018-05-22 17:30 |  |  |
| 6 | Document Review | 68d | 2017-10-06 08:30 A | 2018-01-01 17:30 A | 3 | Design Engineer |
| 7 | Design | 2d | 2018-01-02 08:30 A | 2018-01-03 17:30 A | 6 | Design Engineer |
| 8 | Drafting | 9d | 2018-01-04 08:30 A | 2018-01-16 17:30 A | 7 | Draftman |
| 9 | DCI Creation | 65.75d | 2017-10-25 08:30 A | 2018-01-17 15:30 A | 8 | Design Engineer |
| 10 | DCI Approval | 64.5d | 2018-01-12 08:30 A | 2018-04-06 12:30 A | 9FS+61d | Design Engineer |
| 11 | Draftman Review | 1d | 2018-01-16 08:30 A | 2018-01-16 17:30 A | 10 | Draftman |
| 12 | Design Engineer Review | 1.25d | 2018-01-17 08:30 A | 2018-01-18 10:30 A | 11 | Design Engineer |
| 13 | Design Head Review | 2d | 2018-01-18 08:30 A | 2018-01-19 17:30 A | 12 | Design Engineer |
| 14 | Drawing Review meeting | 1d | 2018-01-20 08:30 A | 2018-01-20 17:30 A | 13 | PPC Engineer; Purchase Engineer; PM; PMO Head; QC Engineer; Design Engineer |
| 15 | Nozzle load clearnce | 1d | 2018-01-16 08:30 A | 2018-01-16 17:30 A | 11SS | Client |
| 16 | Drawing Submission to client | 6d | 2018-01-18 08:30 A | 2018-01-24 17:30 A | 14 | Design Engineer |
| 18 | QAP submission | 5d | 2018-05-23 08:30 | 2018-05-29 17:30 | 5 | QC Engineer |
| 19 | **PBG** | 13d | 2018-05-23 08:30 | 2018-06-07 17:30 |  |  |
| 20 | PBG Submission | 3d | 2018-05-23 08:30 | 2018-05-25 17:30 | 17 | Finance |
| 21 | PBG Approval | 5d | 2018-06-02 08:30 | 2018-06-07 17:30 | 20FS+5d | Client; Finance |
| 49 | **Materail Receipt - Double Pipe Exchanger (170-EE-7001)** | 60.25d | 2018-07-31 08:30 | 2018-10-19 10:30 |  |  |
| 50 | Inner Pipe SA 312 TP 316 - 4 Nos | 3h | 2018-08-06 08:30 | 2018-08-06 11:30 | 39FS+45d | Helper; Store; Pipe (Cost) [0.1%]; Crane |
| 51 | Pipe SA 312 TP 316 - 6 Nos | 3h | 2018-08-06 08:30 | 2018-08-06 11:30 | 39FS+45d | Store; Pipe (Cost) [0.1%]; Helper |
| 52 | Outer Pipe SA 312 TP 316 - 4 Nos | 3h | 2018-08-06 08:30 | 2018-08-06 11:30 | 39FS+45d | Helper; Store; Pipe (Cost) [0.1%]; Crane |
| 53 | Cap for outer pipe SA 403 Gr.316 - 8 Nos | 2h | 2018-08-06 08:30 | 2018-08-06 10:30 | 39FS+45d | Store; Helper |
| 55 | Inner Pipe FLG SA 182 F 316 - 14 Nos | 3h | 2018-09-04 08:30 | 2018-09-04 11:30 | 42FS+70d | Helper; Store; Forging Std (Cost) [0.1%]; Crane |
| 56 | Std flanges (S1,S2,S3) SA 182 F 316 - 8 Nos | 2h | 2018-09-04 08:30 | 2018-09-04 10:30 | 42FS+70d | Store; Forging Std (Cost) [0.1%]; Helper |
| 57 | Nozzle Pipe SA 312 TP 316 - 8 Nos | 2h | 2018-08-06 08:30 | 2018-08-06 10:30 | 38FS+45d | Store; Pipe (Cost) [0.1%]; Helper |
| 58 | Stiffner SA 240 Gr.316 - 14 Nos | 2h | 2018-08-06 08:30 | 2018-08-06 10:30 | 38FS+45d | Store; Plate (Cost) [0.1%]; Helper |
| 59 | Saddle plate(16T,10T,12T) IS 2062 GR.B | 2h | 2018-08-27 08:30 | 2018-08-27 10:30 | 38FS+60d | Helper; Store; Plate (Cost) [0.1%]; Crane |
| 60 | SS plates(6T,10T) SA 240 GR.316 | 2h | 2018-08-27 08:30 | 2018-08-27 10:30 | 38FS+60d | Helper; Store; Plate (Cost) [0.1%]; Crane |
| 61 | CS plates (12T) SA 516 GR.70 | 1h | 2018-08-27 08:30 | 2018-08-27 09:30 | 38FS+60d | Helper; Store; Plate (Cost) [0.1%]; Crane |
| 62 | Cosumables | 2h | 2018-08-06 08:30 | 2018-08-06 10:30 | 45FS+45d | Store; Helper |
| 66 | **Fabrication Double Pipe Exchanger(170-EE-7001)** | 113d | 2018-08-06 10:30 | 2018-10-20 18:30 |  |  |

Removed: 29 Material Receipt- Double Pipe Exchanger(171-EE-2403); 30 Inner Pipe SA 106Gr.B - 4 Nos; 31 Pipe SA 106 Gr.B- 3 NOS; 32 Outer Pipe SA 106 Gr.B-4 NOS; 33 Cap for Outer Pipe SA 234 GR WPB; 34 Inner Pipe Flange SA 105 - 14 NOS; 35 Flange for S1 SA 105- 1 NOS; 36 Flange for S2 SA 105- 1 NOS; 37 Flange for S3- S8 SA 105- 6 NOS; 39 Nozzle Pipe SA 106 Gr.B- 8 NOS; 40 Saddle plate(12T,16T,10T)- IS 2062 Gr.B; 41 CS plate(12T,10T,6T)_ SA 516 Gr.60; 42 Lifting lug plate (12T)- SA 516 Gr.70; 44 Consumables; 47 Fabrication Double pipe Exchanger(171-EE-2403); 138 RF pad forming; 139 RF pad fit up with outer pipe; 140 Welding; 168 RF pad forming; 169 RF pad fit up with outer pipe; 170 Welding; 198 RF pad forming; 199 RF pad fit up with outer pipe; 200 Welding; 228 RF pad forming; 229 RF pad fit up with outer pipe; 230 Welding; 237 Dummy Activity

Changed:

| ID | Task | Start | Finish | Duration | Total float | Predecessors | Other |
| --- | --- | --- | --- | --- | --- | --- | --- |
| 17 | Drawing Approval | 2018-05-21 08:30 → 2018-05-22 08:30 (+1d) | 2018-05-21 17:30 → 2018-05-22 17:30 (+1d) |  | 0d → 1.88d | none → 16FS+90d | constraint start no earlier than 2018-05-21 08:00 → none; baseline start 2018-04-27 08:00 → 2018-04-27 08:30 |
| 23 | Tubes SA 179 |  |  |  |  | none → 3FS+20d |  |
| 24 | Forgings SA 266 Gr.4 |  |  |  |  | none → 3FS+90d |  |
| 25 | **PR Issue** |  | 2018-06-01 17:30 → 2018-06-02 17:30 (+1d) | 126d → 127d | 103d → 102d |  |  |
| 26 | Plates | 2018-05-22 08:30 → 2018-05-23 08:30 (+1d) | 2018-05-30 17:30 → 2018-05-31 17:30 (+1d) |  | 0d → 28.94d |  |  |
| 27 | Pipes | 2018-05-22 08:30 → 2018-05-23 08:30 (+1d) | 2018-05-30 17:30 → 2018-05-31 17:30 (+1d) |  | 29.12d → 47.25d |  |  |
| 28 | Rods | 2018-05-22 08:30 → 2018-05-23 08:30 (+1d) | 2018-06-01 17:30 → 2018-06-02 17:30 (+1d) |  | 103d → 102d |  |  |
| 30 | Forgings(std,Non-std,Blank) | 2018-05-22 08:30 → 2018-05-23 08:30 (+1d) | 2018-05-25 17:30 → 2018-05-28 17:30 (+3d) |  | 20.62d → 27.5d |  |  |
| 31 | 180 Deg return radius bend | 2018-05-22 08:30 → 2018-05-23 08:30 (+1d) | 2018-05-30 17:30 → 2018-05-31 17:30 (+1d) |  | 42.62d → 61.62d |  |  |
| 32 | Gaskets | 2018-05-22 08:30 → 2018-05-23 08:30 (+1d) | 2018-05-30 17:30 → 2018-05-31 17:30 (+1d) |  | 24.75d → 18.12d |  |  |
| 33 | Cosumbales | 2018-05-22 08:30 → 2018-05-23 08:30 (+1d) | 2018-05-30 17:30 → 2018-05-31 17:30 (+1d) |  | 54.75d → 58.75d |  |  |
| 34 | Fastners | 2018-05-22 08:30 → 2018-05-23 08:30 (+1d) | 2018-05-30 17:30 → 2018-05-31 17:30 (+1d) |  | 24.88d → 18.12d |  |  |
| 35 | Paint | 2018-05-22 08:30 → 2018-05-23 08:30 (+1d) | 2018-05-30 17:30 → 2018-05-31 17:30 (+1d) |  | 24.75d → 1.88d |  |  |
| 36 | N2 Purgings | 2018-05-22 08:30 → 2018-05-23 08:30 (+1d) | 2018-05-30 17:30 → 2018-05-31 17:30 (+1d) |  | 105d → 104d |  |  |
| 37 | **Material Ordering** |  | 2018-06-11 17:30 → 2018-06-12 17:30 (+1d) | 121d → 122d | 103d → 102d |  |  |
| 38 | Plates | 2018-05-31 08:30 → 2018-06-01 08:30 (+1d) | 2018-06-07 17:30 → 2018-06-08 17:30 (+1d) |  | 0d → 28.94d |  |  |
| 39 | Pipes | 2018-05-31 08:30 → 2018-06-01 08:30 (+1d) | 2018-06-07 17:30 → 2018-06-08 17:30 (+1d) |  | 29.12d → 47.25d |  |  |
| 40 | Rods | 2018-06-02 08:30 → 2018-06-04 08:30 (+2d) | 2018-06-11 17:30 → 2018-06-12 17:30 (+1d) |  | 103d → 102d |  |  |
| 42 | Forgings(std,Non-std,Blank) | 2018-05-28 08:30 → 2018-05-29 08:30 (+1d) | 2018-06-04 17:30 → 2018-06-05 17:30 (+1d) |  | 20.62d → 27.5d |  |  |
| 43 | 180 Deg return radius bend | 2018-05-31 08:30 → 2018-06-01 08:30 (+1d) | 2018-06-07 17:30 → 2018-06-08 17:30 (+1d) |  | 42.62d → 61.62d |  |  |
| 44 | Gaskets | 2018-05-31 08:30 → 2018-06-01 08:30 (+1d) | 2018-06-07 17:30 → 2018-06-08 17:30 (+1d) |  | 24.75d → 18.12d |  |  |
| 45 | Cosumbales | 2018-05-31 08:30 → 2018-06-01 08:30 (+1d) | 2018-06-07 17:30 → 2018-06-08 17:30 (+1d) |  | 54.75d → 58.75d |  |  |
| 46 | Fastners | 2018-05-31 08:30 → 2018-06-01 08:30 (+1d) | 2018-06-07 17:30 → 2018-06-08 17:30 (+1d) |  | 24.88d → 18.12d |  |  |
| 47 | Paint | 2018-05-31 08:30 → 2018-06-01 08:30 (+1d) | 2018-06-07 17:30 → 2018-06-08 17:30 (+1d) |  | 24.75d → 1.88d |  |  |
| 48 | N2 Purgings | 2018-05-31 08:30 → 2018-06-01 08:30 (+1d) | 2018-06-07 17:30 → 2018-06-08 17:30 (+1d) |  | 105d → 104d |  |  |
| 54 | 180 Deg return radius bend | 2018-08-24 08:30 → 2018-07-31 08:30 (-24d) | 2018-08-24 11:30 → 2018-07-31 11:30 (-24d) |  | 42.62d → 61.62d | 43FS+60d → 43FS+40d | baseline start 2018-08-02 08:30 → 2018-07-07 08:30; baseline finish 2018-08-02 11:30 → 2018-07-07 11:30 |
| 63 | Gaskets | 2018-09-20 08:30 → 2018-09-21 08:30 (+1d) | 2018-09-20 10:30 → 2018-09-21 10:30 (+1d) |  | 24.75d → 18.12d |  |  |
| 64 | Fastners | 2018-09-20 08:30 → 2018-09-21 08:30 (+1d) | 2018-09-20 09:30 → 2018-09-21 10:30 (+1d) | 1h → 2h | 24.88d → 18.12d |  | baseline finish 2018-08-29 09:30 → 2018-08-29 10:30 |
| 65 | Paint | 2018-09-20 08:30 → 2018-10-19 08:30 (+29d) | 2018-09-20 10:30 → 2018-10-19 10:30 (+29d) |  | 24.75d → 1.88d | 47FS+80d → 47FS+100d | baseline start 2018-08-29 08:30 → 2018-09-25 08:30; baseline finish 2018-08-29 10:30 → 2018-09-25 10:30 |
| 67 | **Nozzle Fabrication** | 2018-09-06 11:30 → 2018-08-06 11:30 (-31d) | 2018-09-14 15:30 → 2018-08-28 14:30 (-17d) | 10.5d → 32.38d | 58.12d → 84.38d |  | baseline start 2018-08-16 11:30 → 2018-07-13 11:30; baseline finish 2018-08-22 15:30 → 2018-08-03 14:30 |
| 68 | Nozzle Pipe Receipt | 2018-09-06 11:30 → 2018-08-06 11:30 (-31d) | 2018-09-06 12:30 → 2018-08-06 12:30 (-31d) |  | 58.12d → 108.25d | Nozzle Pipe SA 106 Gr.B- 8 NOS, Flange for S1 SA 105- 1 NOS, Flange for S2 SA 105- 1 NOS, Flange for S3- S8 SA 105- 6 NOS → 57, 51 | baseline start 2018-08-16 11:30 → 2018-07-13 11:30; baseline finish 2018-08-16 12:30 → 2018-07-13 12:30 |
| 69 | **Nozzle Prep** | 2018-09-06 12:30 → 2018-08-06 12:30 (-31d) | 2018-09-12 11:30 → 2018-08-10 15:30 (-33d) | 7.88d → 8.38d | 58.12d → 108.25d |  | baseline start 2018-08-16 12:30 → 2018-07-13 12:30; baseline finish 2018-08-21 11:30 → 2018-07-19 15:30 |
| 70 | Nozzle Pipe Marking | 2018-09-06 12:30 → 2018-08-06 12:30 (-31d) | 2018-09-06 16:30 → 2018-08-06 16:30 (-31d) |  | 58.12d → 108.25d |  | baseline start 2018-08-16 12:30 → 2018-07-13 12:30; baseline finish 2018-08-16 16:30 → 2018-07-13 16:30 |
| 71 | Nozzle Pipe Stamping | 2018-09-07 08:30 → 2018-08-07 08:30 (-31d) | 2018-09-07 09:30 → 2018-08-07 11:30 (-31d) | 1h → 3h | 58.12d → 108.25d |  | baseline start 2018-08-17 08:30 → 2018-07-16 08:30; baseline finish 2018-08-17 09:30 → 2018-07-16 11:30 |
| 72 | Nozzle Pipe Cutting | 2018-09-07 09:30 → 2018-08-07 11:30 (-31d) | 2018-09-07 14:30 → 2018-08-07 16:30 (-31d) |  | 58.12d → 108.25d |  | baseline start 2018-08-17 09:30 → 2018-07-16 11:30; baseline finish 2018-08-17 14:30 → 2018-07-16 16:30 |
| 73 | Nozzle Pipe EP | 2018-09-07 14:30 → 2018-08-07 16:30 (-31d) | 2018-09-07 19:30 → 2018-08-08 06:30 (-30d) | 5h → 6h | 58.12d → 108.25d |  | baseline start 2018-08-17 14:30 → 2018-07-16 16:30; baseline finish 2018-08-17 19:30 → 2018-07-17 06:30 |
| 74 | Nozzle Flange +Pipe Fitup | 2018-09-07 19:30 → 2018-08-08 06:30 (-30d) | 2018-09-10 09:30 → 2018-08-08 11:30 (-33d) | 6h → 5h | 58.12d → 108.25d |  | resources Helper; SMAW Welder; SMAW Welding Machine; Fitter → Helper; TIG Welding Machine; Fitter; baseline start 2018-08-17 19:30 → 2018-07-17 06:30; baseline finish 2018-08-18 09:30 → 2018-07-17 11:30 |
| 75 | Nozzle Flange +Pipe Fitup Inspection | 2018-09-10 09:30 → 2018-08-08 11:30 (-33d) | 2018-09-10 12:30 → 2018-08-09 09:30 (-32d) | 3h → 14h | 58.12d → 108.25d |  | baseline start 2018-08-18 09:30 → 2018-07-17 11:30; baseline finish 2018-08-18 12:30 → 2018-07-18 09:30 |
| 76 | Nozzle Flange +Pipe Root Tig Welding | 2018-09-10 12:30 → 2018-08-09 09:30 (-32d) | 2018-09-11 10:30 → 2018-08-09 19:30 (-33d) | 14h → 10h | 58.25d → 108.25d |  | baseline start 2018-08-18 12:30 → 2018-07-18 09:30; baseline finish 2018-08-20 10:30 → 2018-07-18 19:30 |
| 77 | Nozzle Flange +Pipe Filler Pass Welding | 2018-09-11 10:30 → 2018-08-09 19:30 (-33d) | 2018-09-12 08:30 → 2018-08-10 13:30 (-33d) | 14h → 10h | 58.25d → 108.25d |  | baseline start 2018-08-20 10:30 → 2018-07-18 19:30; baseline finish 2018-08-21 08:30 → 2018-07-19 13:30 |
| 78 | DP Check | 2018-09-12 08:30 → 2018-08-10 13:30 (-33d) | 2018-09-12 11:30 → 2018-08-10 15:30 (-33d) | 3h → 2h | 58.25d → 108.25d |  | baseline start 2018-08-21 08:30 → 2018-07-19 13:30; baseline finish 2018-08-21 11:30 → 2018-07-19 15:30 |
| 79 | **Stiffner** | 2018-09-12 11:30 → 2018-08-27 10:30 (-16d) | 2018-09-14 07:30 → 2018-08-28 06:30 (-17d) |  | 58.25d → 84.38d |  | baseline start 2018-08-21 11:30 → 2018-08-02 10:30; baseline finish 2018-08-22 07:30 → 2018-08-03 06:30 |
| 80 | Stiffner Marking | 2018-09-12 11:30 → 2018-08-27 10:30 (-16d) | 2018-09-12 14:30 → 2018-08-27 13:30 (-16d) |  | 58.25d → 84.38d | CS plate(12T,10T,6T)_ SA 516 Gr.60, 78 → 60 | baseline start 2018-08-21 11:30 → 2018-08-02 10:30; baseline finish 2018-08-21 14:30 → 2018-08-02 13:30 |
| 81 | Cutting | 2018-09-12 14:30 → 2018-08-27 13:30 (-16d) | 2018-09-12 18:30 → 2018-08-27 17:30 (-16d) |  | 58.25d → 84.38d |  | baseline start 2018-08-21 14:30 → 2018-08-02 13:30; baseline finish 2018-08-21 18:30 → 2018-08-02 17:30 |
| 82 | Grinding | 2018-09-12 18:30 → 2018-08-27 17:30 (-16d) | 2018-09-14 07:30 → 2018-08-28 06:30 (-17d) |  | 58.25d → 84.38d |  | baseline start 2018-08-21 18:30 → 2018-08-02 17:30; baseline finish 2018-08-22 07:30 → 2018-08-03 06:30 |
| 83 | Radiography | 2018-09-14 07:30 → 2018-08-28 06:30 (-17d) | 2018-09-14 15:30 → 2018-08-28 14:30 (-17d) |  | 58.25d → 84.38d |  | baseline start 2018-08-22 07:30 → 2018-08-03 06:30; baseline finish 2018-08-22 15:30 → 2018-08-03 14:30 |
| 84 | **Saddle Fabrication(RHS)** | 2018-09-14 10:30 → 2018-08-27 10:30 (-18d) | 2018-09-20 17:30 → 2018-09-03 13:00 (-17d) | 10.88d → 12.31d | 0d → 57.94d |  | baseline start 2018-08-22 10:30 → 2018-08-02 10:30; baseline finish 2018-08-29 17:30 → 2018-08-09 13:00 |
| 85 | Plate Receipt | 2018-09-14 10:30 → 2018-08-27 10:30 (-18d) | 2018-09-14 13:30 → 2018-08-27 14:30 (-18d) | 3h → 4h | 0d → 57.94d | Saddle plate(12T,16T,10T)- IS 2062 Gr.BFS+30d → 59 | baseline start 2018-08-22 10:30 → 2018-08-02 10:30; baseline finish 2018-08-22 13:30 → 2018-08-02 14:30 |
| 86 | Saddle Pl Marking | 2018-09-14 13:30 → 2018-08-27 14:30 (-18d) | 2018-09-14 17:30 → 2018-08-27 19:30 (-18d) | 4h → 5h | 0d → 57.94d |  | baseline start 2018-08-22 13:30 → 2018-08-02 14:30; baseline finish 2018-08-22 17:30 → 2018-08-02 19:30 |
| 87 | Saddle Pl Mkg Inspection | 2018-09-14 17:30 → 2018-08-27 19:30 (-18d) | 2018-09-14 19:30 → 2018-08-28 06:30 (-17d) | 2h → 3h | 0d → 57.94d |  | baseline start 2018-08-22 17:30 → 2018-08-02 19:30; baseline finish 2018-08-22 19:30 → 2018-08-03 06:30 |
| 88 | Saddle Pl Mkg Cutting | 2018-09-14 19:30 → 2018-08-28 06:30 (-17d) | 2018-09-15 09:30 → 2018-08-28 14:30 (-18d) | 6h → 1d | 0d → 57.94d |  | baseline start 2018-08-22 19:30 → 2018-08-03 06:30; baseline finish 2018-08-23 09:30 → 2018-08-03 14:30 |
| 89 | Grinding | 2018-09-15 09:30 → 2018-08-28 14:30 (-18d) | 2018-09-15 17:30 → 2018-08-29 10:30 (-17d) | 8h → 12h | 0d → 57.94d |  | baseline start 2018-08-23 09:30 → 2018-08-03 14:30; baseline finish 2018-08-23 17:30 → 2018-08-04 10:30 |
| 90 | Saddle Base Hole Marking | 2018-09-15 17:30 → 2018-08-29 10:30 (-17d) | 2018-09-15 18:30 → 2018-08-29 11:30 (-17d) |  | 0d → 57.94d |  | baseline start 2018-08-23 17:30 → 2018-08-04 10:30; baseline finish 2018-08-23 18:30 → 2018-08-04 11:30 |
| 91 | Saddle Base Hole Drilling | 2018-09-15 18:30 → 2018-08-29 11:30 (-17d) | 2018-09-17 06:30 → 2018-08-29 15:30 (-19d) |  | 0d → 57.94d |  | baseline start 2018-08-23 18:30 → 2018-08-04 11:30; baseline finish 2018-08-24 06:30 → 2018-08-04 15:30 |
| 92 | Saddle Pad Forming | 2018-09-17 06:30 → 2018-08-29 15:30 (-19d) | 2018-09-17 14:30 → 2018-08-30 07:30 (-18d) |  | 0d → 57.94d |  | baseline start 2018-08-24 06:30 → 2018-08-04 15:30; baseline finish 2018-08-24 14:30 → 2018-08-06 07:30 |
| 93 | Saddle Fitup | 2018-09-17 14:30 → 2018-08-30 07:30 (-18d) | 2018-09-18 06:30 → 2018-08-30 15:30 (-19d) |  | 0d → 57.94d |  | baseline start 2018-08-24 14:30 → 2018-08-06 07:30; baseline finish 2018-08-27 06:30 → 2018-08-06 15:30 |
| 94 | Saddle Fitup Inspection | 2018-09-18 06:30 → 2018-08-30 15:30 (-19d) | 2018-09-18 14:30 → 2018-08-31 09:00 (-18d) | 8h → 9.5h | 0d → 57.94d |  | baseline start 2018-08-27 06:30 → 2018-08-06 15:30; baseline finish 2018-08-27 14:30 → 2018-08-07 09:00 |
| 95 | Saddle Welding | 2018-09-18 14:30 → 2018-08-31 09:00 (-18d) | 2018-09-19 13:30 → 2018-09-01 09:00 (-18d) | 15h → 2d | 0d → 57.94d |  | baseline start 2018-08-27 14:30 → 2018-08-07 09:00; baseline finish 2018-08-28 13:30 → 2018-08-08 09:00 |
| 96 | Saddle Profile Grinding | 2018-09-19 13:30 → 2018-09-01 09:00 (-18d) | 2018-09-19 19:30 → 2018-09-01 15:00 (-18d) |  | 0d → 57.94d |  | baseline start 2018-08-28 13:30 → 2018-08-08 09:00; baseline finish 2018-08-28 19:30 → 2018-08-08 15:00 |
| 97 | DP Check | 2018-09-19 19:30 → 2018-09-01 15:00 (-18d) | 2018-09-20 09:30 → 2018-09-01 21:00 (-19d) |  | 0d → 57.94d |  | baseline start 2018-08-28 19:30 → 2018-08-08 15:00; baseline finish 2018-08-29 09:30 → 2018-08-08 21:00 |
| 98 | Radiography | 2018-09-20 09:30 → 2018-09-01 21:00 (-19d) | 2018-09-20 17:30 → 2018-09-03 13:00 (-17d) |  | 0d → 57.94d |  | baseline start 2018-08-29 09:30 → 2018-08-08 21:00; baseline finish 2018-08-29 17:30 → 2018-08-09 13:00 |
| 99 | **Saddle Fabrication(LHS)** | 2018-09-14 10:30 → 2018-08-27 10:30 (-18d) | 2018-09-20 17:30 → 2018-09-03 13:00 (-17d) | 10.88d → 12.31d | 2.62d → 59.94d |  | baseline start 2018-08-22 10:30 → 2018-08-02 10:30; baseline finish 2018-08-29 17:30 → 2018-08-09 13:00 |
| 100 | Plate Receipt | 2018-09-14 10:30 → 2018-08-27 10:30 (-18d) | 2018-09-14 13:30 → 2018-08-27 14:30 (-18d) | 3h → 4h | 2.62d → 71.75d | Saddle plate(12T,16T,10T)- IS 2062 Gr.BFS+30d → 59 | baseline start 2018-08-22 10:30 → 2018-08-02 10:30; baseline finish 2018-08-22 13:30 → 2018-08-02 14:30 |
| 101 | Saddle Pl Marking | 2018-09-14 13:30 → 2018-08-27 14:30 (-18d) | 2018-09-14 17:30 → 2018-08-27 19:30 (-18d) | 4h → 5h | 2.62d → 71.12d | 100 → 85 | baseline start 2018-08-22 13:30 → 2018-08-02 14:30; baseline finish 2018-08-22 17:30 → 2018-08-02 19:30 |
| 102 | Saddle Pl Mkg Inspection | 2018-09-14 17:30 → 2018-08-27 19:30 (-18d) | 2018-09-14 19:30 → 2018-08-28 06:30 (-17d) | 2h → 3h | 2.62d → 70.75d | 101 → 86 | baseline start 2018-08-22 17:30 → 2018-08-02 19:30; baseline finish 2018-08-22 19:30 → 2018-08-03 06:30 |
| 103 | Saddle Pl Mkg Cutting | 2018-09-14 19:30 → 2018-08-28 06:30 (-17d) | 2018-09-15 09:30 → 2018-08-28 14:30 (-18d) | 6h → 1d | 2.62d → 69.75d | 102 → 87 | baseline start 2018-08-22 19:30 → 2018-08-03 06:30; baseline finish 2018-08-23 09:30 → 2018-08-03 14:30 |
| 104 | Grinding | 2018-09-15 09:30 → 2018-08-28 14:30 (-18d) | 2018-09-15 17:30 → 2018-08-29 10:30 (-17d) | 8h → 12h | 2.62d → 68.25d | 103 → 88 | baseline start 2018-08-23 09:30 → 2018-08-03 14:30; baseline finish 2018-08-23 17:30 → 2018-08-04 10:30 |
| 105 | Saddle Base Hole Marking | 2018-09-15 17:30 → 2018-08-29 10:30 (-17d) | 2018-09-15 18:30 → 2018-08-29 11:30 (-17d) |  | 2.62d → 68.12d | 104 → 89 | baseline start 2018-08-23 17:30 → 2018-08-04 10:30; baseline finish 2018-08-23 18:30 → 2018-08-04 11:30 |
| 106 | Saddle Base Hole Drilling | 2018-09-15 18:30 → 2018-08-29 11:30 (-17d) | 2018-09-17 06:30 → 2018-08-29 15:30 (-19d) |  | 2.62d → 67.62d | 105 → 90 | baseline start 2018-08-23 18:30 → 2018-08-04 11:30; baseline finish 2018-08-24 06:30 → 2018-08-04 15:30 |
| 107 | Saddle Pad Forming | 2018-09-17 06:30 → 2018-08-29 15:30 (-19d) | 2018-09-17 14:30 → 2018-08-30 07:30 (-18d) |  | 2.62d → 66.62d | 106 → 91 | baseline start 2018-08-24 06:30 → 2018-08-04 15:30; baseline finish 2018-08-24 14:30 → 2018-08-06 07:30 |

| ID | Task | Start | Finish | Duration | Total float | Predecessors | Other |
| --- | --- | --- | --- | --- | --- | --- | --- |
| 108 | Saddle Fitup | 2018-09-17 14:30 → 2018-08-30 07:30 (-18d) | 2018-09-18 06:30 → 2018-08-30 15:30 (-19d) |  | 2.62d → 65.62d | 107 → 92 | baseline start 2018-08-24 14:30 → 2018-08-06 07:30; baseline finish 2018-08-27 06:30 → 2018-08-06 15:30 |
| 109 | Saddle Fitup Inspection | 2018-09-18 06:30 → 2018-08-30 15:30 (-19d) | 2018-09-18 14:30 → 2018-08-31 09:00 (-18d) | 8h → 9.5h | 2.62d → 64.44d | 108 → 93 | baseline start 2018-08-27 06:30 → 2018-08-06 15:30; baseline finish 2018-08-27 14:30 → 2018-08-07 09:00 |
| 110 | Saddle Welding | 2018-09-18 14:30 → 2018-08-31 09:00 (-18d) | 2018-09-19 13:30 → 2018-09-01 09:00 (-18d) | 15h → 2d | 2.62d → 62.44d | 109 → 94 | baseline start 2018-08-27 14:30 → 2018-08-07 09:00; baseline finish 2018-08-28 13:30 → 2018-08-08 09:00 |
| 111 | Saddle Profile Grinding | 2018-09-19 13:30 → 2018-09-01 09:00 (-18d) | 2018-09-19 19:30 → 2018-09-01 15:00 (-18d) |  | 2.62d → 61.69d | 110 → 95 | baseline start 2018-08-28 13:30 → 2018-08-08 09:00; baseline finish 2018-08-28 19:30 → 2018-08-08 15:00 |
| 112 | DP Check | 2018-09-19 19:30 → 2018-09-01 15:00 (-18d) | 2018-09-20 09:30 → 2018-09-01 21:00 (-19d) |  | 2.62d → 59.94d | 111 → 96 | baseline start 2018-08-28 19:30 → 2018-08-08 15:00; baseline finish 2018-08-29 09:30 → 2018-08-08 21:00 |
| 113 | Radiography | 2018-09-20 09:30 → 2018-09-01 21:00 (-19d) | 2018-09-20 17:30 → 2018-09-03 13:00 (-17d) |  | 2.62d → 59.94d |  | baseline start 2018-08-29 09:30 → 2018-08-08 21:00; baseline finish 2018-08-29 17:30 → 2018-08-09 13:00 |
| 114 | **Other Components** | 2018-08-24 19:30 → 2018-08-27 09:30 (+3d) | 2018-09-15 19:30 → 2018-09-06 08:30 (-9d) | 32d → 17.88d | 41.88d → 69.12d |  | baseline start 2018-08-02 19:30 → 2018-08-02 09:30; baseline finish 2018-08-23 19:30 → 2018-08-14 08:30 |
| 115 | **Lifting Lug** | 2018-09-14 10:30 → 2018-08-27 09:30 (-18d) | 2018-09-15 19:30 → 2018-08-28 18:30 (-18d) |  | 13d → 70.5d |  | baseline start 2018-08-22 10:30 → 2018-08-02 09:30; baseline finish 2018-08-23 19:30 → 2018-08-03 18:30 |
| 116 | Lifting Lug Marking (8 Nos) | 2018-09-14 10:30 → 2018-08-27 09:30 (-18d) | 2018-09-14 12:30 → 2018-08-27 11:30 (-18d) |  | 13d → 70.5d | Lifting lug plate (12T)- SA 516 Gr.70FS+30d → 61 | baseline start 2018-08-22 10:30 → 2018-08-02 09:30; baseline finish 2018-08-22 12:30 → 2018-08-02 11:30 |
| 117 | Lifting Lug Cutting | 2018-09-14 12:30 → 2018-08-27 11:30 (-18d) | 2018-09-14 15:30 → 2018-08-27 14:30 (-18d) |  | 13d → 70.5d |  | baseline start 2018-08-22 12:30 → 2018-08-02 11:30; baseline finish 2018-08-22 15:30 → 2018-08-02 14:30 |
| 118 | Lifting Lug Pad Marking | 2018-09-14 15:30 → 2018-08-27 14:30 (-18d) | 2018-09-14 17:30 → 2018-08-27 16:30 (-18d) |  | 13d → 70.5d | 117, CS plate(12T,10T,6T)_ SA 516 Gr.60 → 117, 60 | baseline start 2018-08-22 15:30 → 2018-08-02 14:30; baseline finish 2018-08-22 17:30 → 2018-08-02 16:30 |
| 119 | Lifting Lug Pad Cutting | 2018-09-14 17:30 → 2018-08-27 16:30 (-18d) | 2018-09-14 21:30 → 2018-08-27 20:30 (-18d) |  | 13d → 70.5d |  | baseline start 2018-08-22 17:30 → 2018-08-02 16:30; baseline finish 2018-08-22 21:30 → 2018-08-02 20:30 |
| 120 | Lifting Lug Pad Grinding | 2018-09-14 21:30 → 2018-08-27 20:30 (-18d) | 2018-09-15 11:30 → 2018-08-28 10:30 (-18d) |  | 13d → 70.5d |  | baseline start 2018-08-22 21:30 → 2018-08-02 20:30; baseline finish 2018-08-23 11:30 → 2018-08-03 10:30 |
| 121 | Lifting Lug Pad Forming | 2018-09-15 11:30 → 2018-08-28 10:30 (-18d) | 2018-09-15 19:30 → 2018-08-28 18:30 (-18d) |  | 13d → 70.5d |  | baseline start 2018-08-23 11:30 → 2018-08-03 10:30; baseline finish 2018-08-23 19:30 → 2018-08-03 18:30 |
| 122 | **Insulation Cleat** | 2018-09-14 09:30 → 2018-08-28 10:30 (-17d) | 2018-09-14 17:30 → 2018-08-28 17:30 (-17d) | 1d → 0.88d | 58d → 84d |  | baseline start 2018-08-22 09:30 → 2018-08-03 10:30; baseline finish 2018-08-22 17:30 → 2018-08-03 17:30 |
| 123 | Insulation Cleat Marking | 2018-09-14 09:30 → 2018-08-28 10:30 (-17d) | 2018-09-14 10:30 → 2018-08-28 11:30 (-17d) |  | 58d → 84d | CS plate(12T,10T,6T)_ SA 516 Gr.60FS+30d → 60FS+2d | baseline start 2018-08-22 09:30 → 2018-08-03 10:30; baseline finish 2018-08-22 10:30 → 2018-08-03 11:30 |
| 124 | Insulation Cleat Cutting | 2018-09-14 10:30 → 2018-08-28 11:30 (-17d) | 2018-09-14 12:30 → 2018-08-28 13:30 (-17d) |  | 58d → 84d |  | baseline start 2018-08-22 10:30 → 2018-08-03 11:30; baseline finish 2018-08-22 12:30 → 2018-08-03 13:30 |
| 125 | Insulation Cleat Grinding | 2018-09-14 12:30 → 2018-08-28 13:30 (-17d) | 2018-09-14 15:30 → 2018-08-28 15:30 (-17d) | 3h → 2h | 58d → 84d |  | baseline start 2018-08-22 12:30 → 2018-08-03 13:30; baseline finish 2018-08-22 15:30 → 2018-08-03 15:30 |
| 126 | Insulation Cleat Drilling | 2018-09-14 15:30 → 2018-08-28 15:30 (-17d) | 2018-09-14 17:30 → 2018-08-28 17:30 (-17d) |  | 58d → 84d |  | baseline start 2018-08-22 15:30 → 2018-08-03 15:30; baseline finish 2018-08-22 17:30 → 2018-08-03 17:30 |
| 127 | **Bend with flange fabrication** | 2018-08-24 19:30 → 2018-09-04 19:30 (+11d) | 2018-08-28 08:30 → 2018-09-06 08:30 (+9d) |  | 85.12d → 69.12d |  | baseline start 2018-08-02 19:30 → 2018-08-10 19:30; baseline finish 2018-08-04 08:30 → 2018-08-14 08:30 |
| 128 | Bottom 180 Deg return radius bend with flange fit up | 2018-08-24 19:30 → 2018-09-04 19:30 (+11d) | 2018-08-24 21:30 → 2018-09-04 21:30 (+11d) |  | 85.12d → 69.12d | 54FS+1d, Inner Pipe Flange SA 105 - 14 NOSFS+1d → 54FS+1d, 55FS+1d | baseline start 2018-08-02 19:30 → 2018-08-10 19:30; baseline finish 2018-08-02 21:30 → 2018-08-10 21:30 |
| 129 | welding | 2018-08-24 21:30 → 2018-09-04 21:30 (+11d) | 2018-08-27 09:30 → 2018-09-05 09:30 (+9d) |  | 85.12d → 69.12d |  | baseline start 2018-08-02 21:30 → 2018-08-10 21:30; baseline finish 2018-08-03 09:30 → 2018-08-13 09:30 |
| 130 | Dp check | 2018-08-27 09:30 → 2018-09-05 09:30 (+9d) | 2018-08-27 10:30 → 2018-09-05 10:30 (+9d) |  | 85.12d → 69.12d |  | baseline start 2018-08-03 09:30 → 2018-08-13 09:30; baseline finish 2018-08-03 10:30 → 2018-08-13 10:30 |
| 131 | Middle 180 Deg return radius bend with flange fit up | 2018-08-27 10:30 → 2018-09-05 10:30 (+9d) | 2018-08-27 12:30 → 2018-09-05 12:30 (+9d) |  | 85.12d → 69.12d |  | baseline start 2018-08-03 10:30 → 2018-08-13 10:30; baseline finish 2018-08-03 12:30 → 2018-08-13 12:30 |
| 132 | welding | 2018-08-27 12:30 → 2018-09-05 12:30 (+9d) | 2018-08-27 16:30 → 2018-09-05 16:30 (+9d) |  | 85.12d → 69.12d |  | baseline start 2018-08-03 12:30 → 2018-08-13 12:30; baseline finish 2018-08-03 16:30 → 2018-08-13 16:30 |
| 133 | Dp check | 2018-08-27 16:30 → 2018-09-05 16:30 (+9d) | 2018-08-27 17:30 → 2018-09-05 17:30 (+9d) |  | 85.12d → 69.12d |  | baseline start 2018-08-03 16:30 → 2018-08-13 16:30; baseline finish 2018-08-03 17:30 → 2018-08-13 17:30 |
| 134 | Top 180 Deg return radius bend with flange fit up | 2018-08-27 17:30 → 2018-09-05 17:30 (+9d) | 2018-08-27 19:30 → 2018-09-05 19:30 (+9d) |  | 85.12d → 69.12d |  | baseline start 2018-08-03 17:30 → 2018-08-13 17:30; baseline finish 2018-08-03 19:30 → 2018-08-13 19:30 |
| 135 | welding | 2018-08-27 19:30 → 2018-09-05 19:30 (+9d) | 2018-08-28 07:30 → 2018-09-06 07:30 (+9d) |  | 85.12d → 69.12d |  | baseline start 2018-08-03 19:30 → 2018-08-13 19:30; baseline finish 2018-08-04 07:30 → 2018-08-14 07:30 |
| 136 | Dp check | 2018-08-28 07:30 → 2018-09-06 07:30 (+9d) | 2018-08-28 08:30 → 2018-09-06 08:30 (+9d) |  | 85.12d → 69.12d |  | baseline start 2018-08-04 07:30 → 2018-08-14 07:30; baseline finish 2018-08-04 08:30 → 2018-08-14 08:30 |
| 137 | **Shell fabrication** | 2018-08-21 11:30 → 2018-08-06 10:30 (-15d) | 2018-09-26 08:30 → 2018-09-07 12:30 (-19d) | 53.62d → 50.25d | 20d → 54.88d |  | baseline start 2018-07-30 11:30 → 2018-07-13 10:30; baseline finish 2018-09-03 08:30 → 2018-08-16 12:30 |
| 138 | Marking | 2018-08-21 11:30 → 2018-08-06 11:30 (-15d) | 2018-08-21 12:30 → 2018-08-06 12:30 (-15d) |  | 61.38d → 94.38d | Inner Pipe SA 106Gr.B - 4 Nos, Outer Pipe SA 106 Gr.B-4 NOS, Inner Pipe Flange SA 105 - 14 NOS → 50, 52 | resources Helper; Forging Std (Cost) [0.1%]; Pipe (Cost) [0.1%]; Fitter → Helper; Pipe (Cost) [0.1%]; Forging Std (Cost) [0.1%]; Fitter; baseline start 2018-07-30 11:30 → 2018-07-13 11:30; baseline finish 2018-07-30 12:30 → 2018-07-13 12:30 |
| 139 | stamping | 2018-08-21 12:30 → 2018-08-06 12:30 (-15d) | 2018-08-21 16:30 → 2018-08-06 15:30 (-15d) | 4h → 3h | 61.38d → 94.38d |  | baseline start 2018-07-30 12:30 → 2018-07-13 12:30; baseline finish 2018-07-30 16:30 → 2018-07-13 15:30 |
| 140 | Inner Shell Pipe edge preparation | 2018-08-22 08:30 → 2018-08-07 07:30 (-15d) | 2018-08-22 12:30 → 2018-08-07 11:30 (-15d) |  | 61.38d → 94.88d |  | baseline start 2018-07-31 08:30 → 2018-07-16 07:30; baseline finish 2018-07-31 12:30 → 2018-07-16 11:30 |
| 141 | Outer shell Pipe edge preparation | 2018-08-22 12:30 → 2018-08-07 11:30 (-15d) | 2018-08-22 16:30 → 2018-08-07 15:30 (-15d) |  | 61.38d → 94.88d |  | baseline start 2018-07-31 12:30 → 2018-07-16 11:30; baseline finish 2018-07-31 16:30 → 2018-07-16 15:30 |
| 142 | Pipe Cap marking & cutting | 2018-08-22 16:30 → 2018-08-06 10:30 (-16d) | 2018-08-22 18:30 → 2018-08-06 12:30 (-16d) |  | 70.75d → 104.88d | Cap for Outer Pipe SA 234 GR WPB, 141 → 53 | baseline start 2018-07-31 16:30 → 2018-07-13 10:30; baseline finish 2018-07-31 18:30 → 2018-07-13 12:30 |
| 143 | Inner pipe outer pipe insertion | 2018-08-22 16:30 → 2018-08-07 15:30 (-15d) | 2018-08-22 18:30 → 2018-08-07 17:30 (-15d) |  | 61.38d → 94.88d |  | baseline start 2018-07-31 16:30 → 2018-07-16 15:30; baseline finish 2018-07-31 18:30 → 2018-07-16 17:30 |
| 144 | Pipe cap fitup with inner and outer pipe | 2018-08-22 18:30 → 2018-08-07 17:30 (-15d) | 2018-08-22 20:30 → 2018-08-07 19:30 (-15d) |  | 61.38d → 94.88d |  | baseline start 2018-07-31 18:30 → 2018-07-16 17:30; baseline finish 2018-07-31 20:30 → 2018-07-16 19:30 |
| 145 | Fitup inspection | 2018-08-23 08:30 → 2018-08-08 08:30 (-15d) | 2018-08-23 10:30 → 2018-08-08 10:30 (-15d) |  | 60.88d → 94.25d |  | baseline start 2018-08-01 08:30 → 2018-07-17 08:30; baseline finish 2018-08-01 10:30 → 2018-07-17 10:30 |
| 146 | welding | 2018-08-23 10:30 → 2018-08-08 10:30 (-15d) | 2018-08-23 14:30 → 2018-08-08 14:30 (-15d) |  | 60.88d → 94.25d |  | baseline start 2018-08-01 10:30 → 2018-07-17 10:30; baseline finish 2018-08-01 14:30 → 2018-07-17 14:30 |
| 147 | Inner pipe with flange fitup(RHS) | 2018-08-23 14:30 → 2018-09-04 11:30 (+12d) | 2018-08-23 16:30 → 2018-09-04 13:30 (+12d) |  | 60.88d → 54.62d | 146 → 146, 55 | baseline start 2018-08-01 14:30 → 2018-08-10 11:30; baseline finish 2018-08-01 16:30 → 2018-08-10 13:30 |
| 148 | welding | 2018-08-23 16:30 → 2018-09-04 13:30 (+12d) | 2018-08-23 20:30 → 2018-09-04 17:30 (+12d) |  | 60.88d → 54.62d |  | baseline start 2018-08-01 16:30 → 2018-08-10 13:30; baseline finish 2018-08-01 20:30 → 2018-08-10 17:30 |
| 149 | Inner pipe with flange fitup(LHS) | 2018-08-23 20:30 → 2018-09-04 17:30 (+12d) | 2018-08-24 06:30 → 2018-09-04 19:30 (+11d) |  | 60.88d → 54.62d |  | baseline start 2018-08-01 20:30 → 2018-08-10 17:30; baseline finish 2018-08-02 06:30 → 2018-08-10 19:30 |
| 150 | welding | 2018-08-24 06:30 → 2018-09-04 19:30 (+11d) | 2018-08-24 10:30 → 2018-09-05 07:30 (+12d) |  | 60.88d → 54.62d |  | baseline start 2018-08-02 06:30 → 2018-08-10 19:30; baseline finish 2018-08-02 10:30 → 2018-08-13 07:30 |
| 151 | Outer pipe with saddle fit up(RHS) | 2018-09-20 17:30 → 2018-09-05 07:30 (-15d) | 2018-09-20 20:30 → 2018-09-05 10:30 (-15d) |  | 20d → 54.62d |  | baseline start 2018-08-29 17:30 → 2018-08-13 07:30; baseline finish 2018-08-29 20:30 → 2018-08-13 10:30 |
| 152 | Fitup inspection | 2018-09-20 20:30 → 2018-09-05 10:30 (-15d) | 2018-09-21 18:30 → 2018-09-05 19:30 (-16d) | 14h → 9h | 20d → 54.62d |  | baseline start 2018-08-29 20:30 → 2018-08-13 10:30; baseline finish 2018-08-30 18:30 → 2018-08-13 19:30 |
| 153 | welding | 2018-09-21 18:30 → 2018-09-05 19:30 (-16d) | 2018-09-24 06:30 → 2018-09-06 07:30 (-18d) |  | 20d → 54.62d |  | baseline start 2018-08-30 18:30 → 2018-08-13 19:30; baseline finish 2018-08-31 06:30 → 2018-08-14 07:30 |
| 154 | Outer pipe with saddle fit up(LHS) | 2018-09-24 06:30 → 2018-09-06 07:30 (-18d) | 2018-09-24 09:30 → 2018-09-06 10:30 (-18d) |  | 20d → 54.62d |  | baseline start 2018-08-31 06:30 → 2018-08-14 07:30; baseline finish 2018-08-31 09:30 → 2018-08-14 10:30 |
| 155 | Fitup inspection | 2018-09-24 09:30 → 2018-09-06 10:30 (-18d) | 2018-09-24 11:30 → 2018-09-06 12:30 (-18d) |  | 20d → 54.62d |  | baseline start 2018-08-31 09:30 → 2018-08-14 10:30; baseline finish 2018-08-31 11:30 → 2018-08-14 12:30 |
| 156 | welding | 2018-09-24 11:30 → 2018-09-06 12:30 (-18d) | 2018-09-24 15:30 → 2018-09-06 16:30 (-18d) |  | 20d → 54.88d |  | baseline start 2018-08-31 11:30 → 2018-08-14 12:30; baseline finish 2018-08-31 15:30 → 2018-08-14 16:30 |
| 157 | Outer pipe with nozzle fit up | 2018-09-24 15:30 → 2018-09-06 16:30 (-18d) | 2018-09-24 18:30 → 2018-09-06 19:30 (-18d) |  | 20d → 54.88d |  | baseline start 2018-08-31 15:30 → 2018-08-14 16:30; baseline finish 2018-08-31 18:30 → 2018-08-14 19:30 |
| 158 | Outer pipe with nozzle welding | 2018-09-24 18:30 → 2018-09-06 19:30 (-18d) | 2018-09-25 07:30 → 2018-09-07 08:30 (-18d) |  | 20d → 54.88d |  | baseline start 2018-08-31 18:30 → 2018-08-14 19:30; baseline finish 2018-09-01 07:30 → 2018-08-16 08:30 |
| 159 | Insulation cleat fit up | 2018-09-25 07:30 → 2018-09-07 08:30 (-18d) | 2018-09-25 09:30 → 2018-09-07 10:30 (-18d) |  | 20d → 54.88d |  | baseline start 2018-09-01 07:30 → 2018-08-16 08:30; baseline finish 2018-09-01 09:30 → 2018-08-16 10:30 |
| 160 | welding | 2018-09-25 09:30 → 2018-09-07 10:30 (-18d) | 2018-09-25 11:30 → 2018-09-07 12:30 (-18d) |  | 20d → 54.88d |  | baseline start 2018-09-01 09:30 → 2018-08-16 10:30; baseline finish 2018-09-01 11:30 → 2018-08-16 12:30 |
| 161 | Lifting Lug fit up | 2018-09-25 11:30 → 2018-08-28 18:30 (-28d) | 2018-09-25 13:30 → 2018-08-28 20:30 (-28d) |  | 20d → 70.5d | 115, 160 → 115 | baseline start 2018-09-01 11:30 → 2018-08-03 18:30; baseline finish 2018-09-01 13:30 → 2018-08-03 20:30 |
| 162 | welding | 2018-09-25 13:30 → 2018-08-28 20:30 (-28d) | 2018-09-25 16:30 → 2018-08-29 07:30 (-27d) |  | 20d → 70.5d |  | baseline start 2018-09-01 13:30 → 2018-08-03 20:30; baseline finish 2018-09-01 16:30 → 2018-08-04 07:30 |
| 163 | Radiography | 2018-09-25 16:30 → 2018-08-29 07:30 (-27d) | 2018-09-26 08:30 → 2018-08-29 15:30 (-28d) |  | 20d → 70.5d |  | baseline start 2018-09-01 16:30 → 2018-08-04 07:30; baseline finish 2018-09-03 08:30 → 2018-08-04 15:30 |
| 164 | **Shell fabrication** | 2018-08-21 11:30 → 2018-08-06 10:30 (-15d) | 2018-09-26 08:30 → 2018-09-07 12:30 (-19d) | 53.62d → 50.25d | 20d → 54.88d |  | baseline start 2018-07-30 11:30 → 2018-07-13 10:30; baseline finish 2018-09-03 08:30 → 2018-08-16 12:30 |
| 165 | Marking | 2018-08-21 11:30 → 2018-08-06 11:30 (-15d) | 2018-08-21 12:30 → 2018-08-06 12:30 (-15d) |  | 61.38d → 94.38d | Inner Pipe SA 106Gr.B - 4 Nos, Outer Pipe SA 106 Gr.B-4 NOS, Inner Pipe Flange SA 105 - 14 NOS → 50, 52 | baseline start 2018-07-30 11:30 → 2018-07-13 11:30; baseline finish 2018-07-30 12:30 → 2018-07-13 12:30 |
| 166 | stamping | 2018-08-21 12:30 → 2018-08-06 12:30 (-15d) | 2018-08-21 16:30 → 2018-08-06 15:30 (-15d) | 4h → 3h | 61.38d → 94.38d |  | baseline start 2018-07-30 12:30 → 2018-07-13 12:30; baseline finish 2018-07-30 16:30 → 2018-07-13 15:30 |
| 167 | Inner Shell Pipe edge preparation | 2018-08-22 08:30 → 2018-08-07 07:30 (-15d) | 2018-08-22 12:30 → 2018-08-07 11:30 (-15d) |  | 61.38d → 94.88d |  | baseline start 2018-07-31 08:30 → 2018-07-16 07:30; baseline finish 2018-07-31 12:30 → 2018-07-16 11:30 |
| 168 | Outer shell Pipe edge preparation | 2018-08-22 12:30 → 2018-08-07 11:30 (-15d) | 2018-08-22 16:30 → 2018-08-07 15:30 (-15d) |  | 61.38d → 94.88d |  | baseline start 2018-07-31 12:30 → 2018-07-16 11:30; baseline finish 2018-07-31 16:30 → 2018-07-16 15:30 |
| 169 | Pipe Cap marking & cutting | 2018-08-22 16:30 → 2018-08-06 10:30 (-16d) | 2018-08-22 18:30 → 2018-08-06 12:30 (-16d) |  | 70.75d → 104.88d | Cap for Outer Pipe SA 234 GR WPB, 168 → 53 | baseline start 2018-07-31 16:30 → 2018-07-13 10:30; baseline finish 2018-07-31 18:30 → 2018-07-13 12:30 |
| 170 | Inner pipe outer pipe insertion | 2018-08-22 16:30 → 2018-08-07 15:30 (-15d) | 2018-08-22 18:30 → 2018-08-07 17:30 (-15d) |  | 61.38d → 94.88d |  | baseline start 2018-07-31 16:30 → 2018-07-16 15:30; baseline finish 2018-07-31 18:30 → 2018-07-16 17:30 |
| 171 | Pipe cap fitup with inner and outer pipe | 2018-08-22 18:30 → 2018-08-07 17:30 (-15d) | 2018-08-22 20:30 → 2018-08-07 19:30 (-15d) |  | 61.38d → 94.88d |  | baseline start 2018-07-31 18:30 → 2018-07-16 17:30; baseline finish 2018-07-31 20:30 → 2018-07-16 19:30 |
| 172 | Fitup inspection | 2018-08-23 08:30 → 2018-08-08 08:30 (-15d) | 2018-08-23 10:30 → 2018-08-08 10:30 (-15d) |  | 60.88d → 94.25d |  | baseline start 2018-08-01 08:30 → 2018-07-17 08:30; baseline finish 2018-08-01 10:30 → 2018-07-17 10:30 |
| 173 | welding | 2018-08-23 10:30 → 2018-08-08 10:30 (-15d) | 2018-08-23 14:30 → 2018-08-08 14:30 (-15d) |  | 60.88d → 94.25d |  | baseline start 2018-08-01 10:30 → 2018-07-17 10:30; baseline finish 2018-08-01 14:30 → 2018-07-17 14:30 |
| 174 | Inner pipe with flange fitup(RHS) | 2018-08-23 14:30 → 2018-09-04 11:30 (+12d) | 2018-08-23 16:30 → 2018-09-04 13:30 (+12d) |  | 60.88d → 54.62d | 173 → 173, 55 | baseline start 2018-08-01 14:30 → 2018-08-10 11:30; baseline finish 2018-08-01 16:30 → 2018-08-10 13:30 |
| 175 | welding | 2018-08-23 16:30 → 2018-09-04 13:30 (+12d) | 2018-08-23 20:30 → 2018-09-04 17:30 (+12d) |  | 60.88d → 54.62d |  | baseline start 2018-08-01 16:30 → 2018-08-10 13:30; baseline finish 2018-08-01 20:30 → 2018-08-10 17:30 |
| 176 | Inner pipe with flange fitup(LHS) | 2018-08-23 20:30 → 2018-09-04 17:30 (+12d) | 2018-08-24 06:30 → 2018-09-04 19:30 (+11d) |  | 60.88d → 54.62d |  | baseline start 2018-08-01 20:30 → 2018-08-10 17:30; baseline finish 2018-08-02 06:30 → 2018-08-10 19:30 |
| 177 | welding | 2018-08-24 06:30 → 2018-09-04 19:30 (+11d) | 2018-08-24 10:30 → 2018-09-05 07:30 (+12d) |  | 60.88d → 54.62d |  | baseline start 2018-08-02 06:30 → 2018-08-10 19:30; baseline finish 2018-08-02 10:30 → 2018-08-13 07:30 |

| ID | Task | Start | Finish | Duration | Total float | Predecessors | Other |
| --- | --- | --- | --- | --- | --- | --- | --- |
| 178 | Outer pipe with saddle fit up(RHS) | 2018-09-20 17:30 → 2018-09-05 07:30 (-15d) | 2018-09-20 20:30 → 2018-09-05 10:30 (-15d) |  | 20d → 54.62d |  | baseline start 2018-08-29 17:30 → 2018-08-13 07:30; baseline finish 2018-08-29 20:30 → 2018-08-13 10:30 |
| 179 | Fitup inspection | 2018-09-20 20:30 → 2018-09-05 10:30 (-15d) | 2018-09-21 18:30 → 2018-09-05 19:30 (-16d) | 14h → 9h | 20d → 54.62d |  | baseline start 2018-08-29 20:30 → 2018-08-13 10:30; baseline finish 2018-08-30 18:30 → 2018-08-13 19:30 |
| 180 | welding | 2018-09-21 18:30 → 2018-09-05 19:30 (-16d) | 2018-09-24 06:30 → 2018-09-06 07:30 (-18d) |  | 20d → 54.62d |  | baseline start 2018-08-30 18:30 → 2018-08-13 19:30; baseline finish 2018-08-31 06:30 → 2018-08-14 07:30 |
| 181 | Outer pipe with saddle fit up(LHS) | 2018-09-24 06:30 → 2018-09-06 07:30 (-18d) | 2018-09-24 09:30 → 2018-09-06 10:30 (-18d) |  | 20d → 54.62d |  | baseline start 2018-08-31 06:30 → 2018-08-14 07:30; baseline finish 2018-08-31 09:30 → 2018-08-14 10:30 |
| 182 | Fitup inspection | 2018-09-24 09:30 → 2018-09-06 10:30 (-18d) | 2018-09-24 11:30 → 2018-09-06 12:30 (-18d) |  | 20d → 54.62d |  | baseline start 2018-08-31 09:30 → 2018-08-14 10:30; baseline finish 2018-08-31 11:30 → 2018-08-14 12:30 |
| 183 | welding | 2018-09-24 11:30 → 2018-09-06 12:30 (-18d) | 2018-09-24 15:30 → 2018-09-06 16:30 (-18d) |  | 20d → 54.88d |  | baseline start 2018-08-31 11:30 → 2018-08-14 12:30; baseline finish 2018-08-31 15:30 → 2018-08-14 16:30 |
| 184 | Outer pipe with nozzle fit up | 2018-09-24 15:30 → 2018-09-06 16:30 (-18d) | 2018-09-24 18:30 → 2018-09-06 19:30 (-18d) |  | 20d → 54.88d |  | baseline start 2018-08-31 15:30 → 2018-08-14 16:30; baseline finish 2018-08-31 18:30 → 2018-08-14 19:30 |
| 185 | Outer pipe with nozzle welding | 2018-09-24 18:30 → 2018-09-06 19:30 (-18d) | 2018-09-25 07:30 → 2018-09-07 08:30 (-18d) |  | 20d → 54.88d |  | baseline start 2018-08-31 18:30 → 2018-08-14 19:30; baseline finish 2018-09-01 07:30 → 2018-08-16 08:30 |
| 186 | Insulation cleat fit up | 2018-09-25 07:30 → 2018-09-07 08:30 (-18d) | 2018-09-25 09:30 → 2018-09-07 10:30 (-18d) |  | 20d → 54.88d |  | baseline start 2018-09-01 07:30 → 2018-08-16 08:30; baseline finish 2018-09-01 09:30 → 2018-08-16 10:30 |
| 187 | welding | 2018-09-25 09:30 → 2018-09-07 10:30 (-18d) | 2018-09-25 11:30 → 2018-09-07 12:30 (-18d) |  | 20d → 54.88d |  | baseline start 2018-09-01 09:30 → 2018-08-16 10:30; baseline finish 2018-09-01 11:30 → 2018-08-16 12:30 |
| 188 | Lifting Lug fit up | 2018-09-25 11:30 → 2018-08-28 18:30 (-28d) | 2018-09-25 13:30 → 2018-08-28 20:30 (-28d) |  | 20d → 70.5d | 115, 187 → 115 | baseline start 2018-09-01 11:30 → 2018-08-03 18:30; baseline finish 2018-09-01 13:30 → 2018-08-03 20:30 |
| 189 | welding | 2018-09-25 13:30 → 2018-08-28 20:30 (-28d) | 2018-09-25 16:30 → 2018-08-29 07:30 (-27d) |  | 20d → 70.5d |  | baseline start 2018-09-01 13:30 → 2018-08-03 20:30; baseline finish 2018-09-01 16:30 → 2018-08-04 07:30 |
| 190 | Radiography | 2018-09-25 16:30 → 2018-08-29 07:30 (-27d) | 2018-09-26 08:30 → 2018-08-29 15:30 (-28d) |  | 20d → 70.5d |  | baseline start 2018-09-01 16:30 → 2018-08-04 07:30; baseline finish 2018-09-03 08:30 → 2018-08-04 15:30 |
| 191 | **Shell fabrication** | 2018-08-21 11:30 → 2018-08-06 10:30 (-15d) | 2018-09-26 06:30 → 2018-09-07 12:30 (-19d) | 53.38d → 50.25d | 20.25d → 54.88d |  | baseline start 2018-07-30 11:30 → 2018-07-13 10:30; baseline finish 2018-09-03 06:30 → 2018-08-16 12:30 |
| 192 | Marking | 2018-08-21 11:30 → 2018-08-06 11:30 (-15d) | 2018-08-21 12:30 → 2018-08-06 12:30 (-15d) |  | 61.38d → 94.38d | Inner Pipe SA 106Gr.B - 4 Nos, Outer Pipe SA 106 Gr.B-4 NOS, Inner Pipe Flange SA 105 - 14 NOS → 50, 52 | baseline start 2018-07-30 11:30 → 2018-07-13 11:30; baseline finish 2018-07-30 12:30 → 2018-07-13 12:30 |
| 193 | stamping | 2018-08-21 12:30 → 2018-08-06 12:30 (-15d) | 2018-08-21 16:30 → 2018-08-06 15:30 (-15d) | 4h → 3h | 61.38d → 94.38d |  | baseline start 2018-07-30 12:30 → 2018-07-13 12:30; baseline finish 2018-07-30 16:30 → 2018-07-13 15:30 |
| 194 | Inner Shell Pipe edge preparation | 2018-08-22 08:30 → 2018-08-07 07:30 (-15d) | 2018-08-22 12:30 → 2018-08-07 11:30 (-15d) |  | 61.38d → 94.88d |  | baseline start 2018-07-31 08:30 → 2018-07-16 07:30; baseline finish 2018-07-31 12:30 → 2018-07-16 11:30 |
| 195 | Outer shell Pipe edge preparation | 2018-08-22 12:30 → 2018-08-07 11:30 (-15d) | 2018-08-22 16:30 → 2018-08-07 15:30 (-15d) |  | 61.38d → 94.88d |  | baseline start 2018-07-31 12:30 → 2018-07-16 11:30; baseline finish 2018-07-31 16:30 → 2018-07-16 15:30 |
| 196 | Pipe Cap marking & cutting | 2018-08-22 16:30 → 2018-08-06 10:30 (-16d) | 2018-08-22 18:30 → 2018-08-06 12:30 (-16d) |  | 70.75d → 104.88d | Cap for Outer Pipe SA 234 GR WPB, 195 → 53 | baseline start 2018-07-31 16:30 → 2018-07-13 10:30; baseline finish 2018-07-31 18:30 → 2018-07-13 12:30 |
| 197 | Inner pipe outer pipe insertion | 2018-08-22 16:30 → 2018-08-07 15:30 (-15d) | 2018-08-22 18:30 → 2018-08-07 17:30 (-15d) |  | 61.38d → 94.88d |  | baseline start 2018-07-31 16:30 → 2018-07-16 15:30; baseline finish 2018-07-31 18:30 → 2018-07-16 17:30 |
| 198 | Pipe cap fitup with inner and outer pipe | 2018-08-22 18:30 → 2018-08-07 17:30 (-15d) | 2018-08-22 20:30 → 2018-08-07 19:30 (-15d) |  | 61.38d → 94.88d |  | baseline start 2018-07-31 18:30 → 2018-07-16 17:30; baseline finish 2018-07-31 20:30 → 2018-07-16 19:30 |
| 199 | Fitup inspection | 2018-08-23 08:30 → 2018-08-08 08:30 (-15d) | 2018-08-23 10:30 → 2018-08-08 10:30 (-15d) |  | 60.88d → 94.25d |  | baseline start 2018-08-01 08:30 → 2018-07-17 08:30; baseline finish 2018-08-01 10:30 → 2018-07-17 10:30 |
| 200 | welding | 2018-08-23 10:30 → 2018-08-08 10:30 (-15d) | 2018-08-23 14:30 → 2018-08-08 14:30 (-15d) |  | 61d → 94.25d |  | baseline start 2018-08-01 10:30 → 2018-07-17 10:30; baseline finish 2018-08-01 14:30 → 2018-07-17 14:30 |
| 201 | Inner pipe with flange fitup(RHS) | 2018-08-23 14:30 → 2018-09-04 11:30 (+12d) | 2018-08-23 16:30 → 2018-09-04 13:30 (+12d) |  | 61d → 54.62d | 200 → 200, 55 | baseline start 2018-08-01 14:30 → 2018-08-10 11:30; baseline finish 2018-08-01 16:30 → 2018-08-10 13:30 |
| 202 | welding | 2018-08-23 16:30 → 2018-09-04 13:30 (+12d) | 2018-08-23 20:30 → 2018-09-04 17:30 (+12d) |  | 61d → 54.62d |  | baseline start 2018-08-01 16:30 → 2018-08-10 13:30; baseline finish 2018-08-01 20:30 → 2018-08-10 17:30 |
| 203 | Inner pipe with flange fitup(LHS) | 2018-08-23 20:30 → 2018-09-04 17:30 (+12d) | 2018-08-24 06:30 → 2018-09-04 19:30 (+11d) |  | 61d → 54.62d |  | baseline start 2018-08-01 20:30 → 2018-08-10 17:30; baseline finish 2018-08-02 06:30 → 2018-08-10 19:30 |
| 204 | welding | 2018-08-24 06:30 → 2018-09-04 19:30 (+11d) | 2018-08-24 10:30 → 2018-09-05 07:30 (+12d) |  | 61d → 54.62d |  | baseline start 2018-08-02 06:30 → 2018-08-10 19:30; baseline finish 2018-08-02 10:30 → 2018-08-13 07:30 |
| 205 | Outer pipe with saddle fit up(RHS) | 2018-09-20 17:30 → 2018-09-05 07:30 (-15d) | 2018-09-20 20:30 → 2018-09-05 10:30 (-15d) |  | 20.12d → 54.62d |  | baseline start 2018-08-29 17:30 → 2018-08-13 07:30; baseline finish 2018-08-29 20:30 → 2018-08-13 10:30 |
| 206 | Fitup inspection | 2018-09-20 20:30 → 2018-09-05 10:30 (-15d) | 2018-09-21 18:30 → 2018-09-05 19:30 (-16d) | 14h → 9h | 20.12d → 54.62d |  | baseline start 2018-08-29 20:30 → 2018-08-13 10:30; baseline finish 2018-08-30 18:30 → 2018-08-13 19:30 |
| 207 | welding | 2018-09-21 18:30 → 2018-09-05 19:30 (-16d) | 2018-09-24 06:30 → 2018-09-06 07:30 (-18d) |  | 20.12d → 54.62d |  | baseline start 2018-08-30 18:30 → 2018-08-13 19:30; baseline finish 2018-08-31 06:30 → 2018-08-14 07:30 |
| 208 | Outer pipe with saddle fit up(LHS) | 2018-09-24 06:30 → 2018-09-06 07:30 (-18d) | 2018-09-24 09:30 → 2018-09-06 10:30 (-18d) |  | 20.12d → 54.62d |  | baseline start 2018-08-31 06:30 → 2018-08-14 07:30; baseline finish 2018-08-31 09:30 → 2018-08-14 10:30 |
| 209 | Fitup inspection | 2018-09-24 09:30 → 2018-09-06 10:30 (-18d) | 2018-09-24 11:30 → 2018-09-06 12:30 (-18d) |  | 20.12d → 54.62d |  | baseline start 2018-08-31 09:30 → 2018-08-14 10:30; baseline finish 2018-08-31 11:30 → 2018-08-14 12:30 |
| 210 | welding | 2018-09-24 11:30 → 2018-09-06 12:30 (-18d) | 2018-09-24 15:30 → 2018-09-06 16:30 (-18d) |  | 20.25d → 54.88d |  | baseline start 2018-08-31 11:30 → 2018-08-14 12:30; baseline finish 2018-08-31 15:30 → 2018-08-14 16:30 |
| 211 | Outer pipe with nozzle fit up | 2018-09-24 15:30 → 2018-09-06 16:30 (-18d) | 2018-09-24 18:30 → 2018-09-06 19:30 (-18d) |  | 20.25d → 54.88d |  | baseline start 2018-08-31 15:30 → 2018-08-14 16:30; baseline finish 2018-08-31 18:30 → 2018-08-14 19:30 |
| 212 | Outer pipe with nozzle welding | 2018-09-24 18:30 → 2018-09-06 19:30 (-18d) | 2018-09-25 07:30 → 2018-09-07 08:30 (-18d) |  | 20.25d → 54.88d |  | baseline start 2018-08-31 18:30 → 2018-08-14 19:30; baseline finish 2018-09-01 07:30 → 2018-08-16 08:30 |
| 213 | Insulation cleat fit up | 2018-09-25 07:30 → 2018-09-07 08:30 (-18d) | 2018-09-25 09:30 → 2018-09-07 10:30 (-18d) |  | 20.25d → 54.88d |  | baseline start 2018-09-01 07:30 → 2018-08-16 08:30; baseline finish 2018-09-01 09:30 → 2018-08-16 10:30 |
| 214 | welding | 2018-09-25 09:30 → 2018-09-07 10:30 (-18d) | 2018-09-25 11:30 → 2018-09-07 12:30 (-18d) |  | 21.62d → 54.88d |  | baseline start 2018-09-01 09:30 → 2018-08-16 10:30; baseline finish 2018-09-01 11:30 → 2018-08-16 12:30 |
| 215 | Lifting Lug fit up | 2018-09-25 09:30 → 2018-08-28 18:30 (-28d) | 2018-09-25 11:30 → 2018-08-28 20:30 (-28d) |  | 20.25d → 70.5d | 115, 213 → 115 | baseline start 2018-09-01 09:30 → 2018-08-03 18:30; baseline finish 2018-09-01 11:30 → 2018-08-03 20:30 |
| 216 | welding | 2018-09-25 11:30 → 2018-08-28 20:30 (-28d) | 2018-09-25 14:30 → 2018-08-29 07:30 (-27d) |  | 20.25d → 70.5d |  | baseline start 2018-09-01 11:30 → 2018-08-03 20:30; baseline finish 2018-09-01 14:30 → 2018-08-04 07:30 |
| 217 | Radiography | 2018-09-25 14:30 → 2018-08-29 07:30 (-27d) | 2018-09-26 06:30 → 2018-08-29 15:30 (-28d) |  | 20.25d → 70.5d |  | baseline start 2018-09-01 14:30 → 2018-08-04 07:30; baseline finish 2018-09-03 06:30 → 2018-08-04 15:30 |
| 218 | **Shell fabrication** | 2018-08-21 11:30 → 2018-08-06 10:30 (-15d) | 2018-10-09 08:30 → 2018-09-07 12:30 (-32d) | 73.62d → 50.25d | 0d → 54.88d |  | baseline start 2018-07-30 11:30 → 2018-07-13 10:30; baseline finish 2018-09-17 08:30 → 2018-08-16 12:30 |
| 219 | Marking | 2018-08-21 11:30 → 2018-08-06 11:30 (-15d) | 2018-08-21 12:30 → 2018-08-06 12:30 (-15d) |  | 41.38d → 94.38d | Inner Pipe SA 106Gr.B - 4 Nos, Outer Pipe SA 106 Gr.B-4 NOS, Inner Pipe Flange SA 105 - 14 NOS → 50, 52 | baseline start 2018-07-30 11:30 → 2018-07-13 11:30; baseline finish 2018-07-30 12:30 → 2018-07-13 12:30 |
| 220 | stamping | 2018-08-21 12:30 → 2018-08-06 12:30 (-15d) | 2018-08-21 16:30 → 2018-08-06 15:30 (-15d) | 4h → 3h | 41.38d → 94.38d |  | baseline start 2018-07-30 12:30 → 2018-07-13 12:30; baseline finish 2018-07-30 16:30 → 2018-07-13 15:30 |
| 221 | Inner Shell Pipe edge preparation | 2018-08-22 08:30 → 2018-08-07 07:30 (-15d) | 2018-08-22 12:30 → 2018-08-07 11:30 (-15d) |  | 41.38d → 94.88d |  | baseline start 2018-07-31 08:30 → 2018-07-16 07:30; baseline finish 2018-07-31 12:30 → 2018-07-16 11:30 |
| 222 | Outer shell Pipe edge preparation | 2018-08-22 12:30 → 2018-08-07 11:30 (-15d) | 2018-08-22 16:30 → 2018-08-07 15:30 (-15d) |  | 41.38d → 94.88d |  | baseline start 2018-07-31 12:30 → 2018-07-16 11:30; baseline finish 2018-07-31 16:30 → 2018-07-16 15:30 |
| 223 | Pipe Cap marking & cutting | 2018-08-22 16:30 → 2018-08-06 10:30 (-16d) | 2018-08-22 18:30 → 2018-08-06 12:30 (-16d) |  | 70.75d → 104.88d | Cap for Outer Pipe SA 234 GR WPB, 222 → 53 | baseline start 2018-07-31 16:30 → 2018-07-13 10:30; baseline finish 2018-07-31 18:30 → 2018-07-13 12:30 |
| 224 | Inner pipe outer pipe insertion | 2018-08-22 16:30 → 2018-08-07 15:30 (-15d) | 2018-08-22 18:30 → 2018-08-07 17:30 (-15d) |  | 41.38d → 94.88d |  | baseline start 2018-07-31 16:30 → 2018-07-16 15:30; baseline finish 2018-07-31 18:30 → 2018-07-16 17:30 |
| 225 | Pipe cap fitup with inner and outer pipe | 2018-08-22 18:30 → 2018-08-07 17:30 (-15d) | 2018-08-22 20:30 → 2018-08-07 19:30 (-15d) |  | 41.38d → 94.88d |  | baseline start 2018-07-31 18:30 → 2018-07-16 17:30; baseline finish 2018-07-31 20:30 → 2018-07-16 19:30 |
| 226 | Fitup inspection | 2018-08-23 08:30 → 2018-08-08 08:30 (-15d) | 2018-08-23 10:30 → 2018-08-08 10:30 (-15d) |  | 40.88d → 94.25d |  | baseline start 2018-08-01 08:30 → 2018-07-17 08:30; baseline finish 2018-08-01 10:30 → 2018-07-17 10:30 |
| 227 | welding | 2018-08-23 10:30 → 2018-08-08 10:30 (-15d) | 2018-08-23 14:30 → 2018-08-08 14:30 (-15d) |  | 40.88d → 94.25d |  | baseline start 2018-08-01 10:30 → 2018-07-17 10:30; baseline finish 2018-08-01 14:30 → 2018-07-17 14:30 |
| 228 | Inner pipe with flange fitup(RHS) | 2018-08-23 14:30 → 2018-09-04 11:30 (+12d) | 2018-08-23 16:30 → 2018-09-04 13:30 (+12d) |  | 40.88d → 54.62d | 227 → 227, 55 | baseline start 2018-08-01 14:30 → 2018-08-10 11:30; baseline finish 2018-08-01 16:30 → 2018-08-10 13:30 |
| 229 | welding | 2018-08-23 16:30 → 2018-09-04 13:30 (+12d) | 2018-08-23 20:30 → 2018-09-04 17:30 (+12d) |  | 40.88d → 54.62d |  | baseline start 2018-08-01 16:30 → 2018-08-10 13:30; baseline finish 2018-08-01 20:30 → 2018-08-10 17:30 |
| 230 | Inner pipe with flange fitup(LHS) | 2018-08-23 20:30 → 2018-09-04 17:30 (+12d) | 2018-08-24 06:30 → 2018-09-04 19:30 (+11d) |  | 40.88d → 54.62d |  | baseline start 2018-08-01 20:30 → 2018-08-10 17:30; baseline finish 2018-08-02 06:30 → 2018-08-10 19:30 |
| 231 | welding | 2018-08-24 06:30 → 2018-09-04 19:30 (+11d) | 2018-08-24 10:30 → 2018-09-05 07:30 (+12d) |  | 40.88d → 54.62d |  | baseline start 2018-08-02 06:30 → 2018-08-10 19:30; baseline finish 2018-08-02 10:30 → 2018-08-13 07:30 |
| 232 | Outer pipe with saddle fit up(RHS) | 2018-09-20 17:30 → 2018-09-05 07:30 (-15d) | 2018-09-20 20:30 → 2018-09-05 10:30 (-15d) |  | 0d → 54.62d |  | baseline start 2018-08-29 17:30 → 2018-08-13 07:30; baseline finish 2018-08-29 20:30 → 2018-08-13 10:30 |
| 233 | Fitup inspection | 2018-09-20 20:30 → 2018-09-05 10:30 (-15d) | 2018-09-21 18:30 → 2018-09-05 19:30 (-16d) | 14h → 9h | 0d → 54.62d |  | baseline start 2018-08-29 20:30 → 2018-08-13 10:30; baseline finish 2018-08-30 18:30 → 2018-08-13 19:30 |
| 234 | welding | 2018-09-21 18:30 → 2018-09-05 19:30 (-16d) | 2018-09-24 06:30 → 2018-09-06 07:30 (-18d) |  | 0d → 54.62d |  | baseline start 2018-08-30 18:30 → 2018-08-13 19:30; baseline finish 2018-08-31 06:30 → 2018-08-14 07:30 |
| 235 | Outer pipe with saddle fit up(LHS) | 2018-09-24 06:30 → 2018-09-06 07:30 (-18d) | 2018-09-24 09:30 → 2018-09-06 10:30 (-18d) |  | 0d → 54.62d |  | baseline start 2018-08-31 06:30 → 2018-08-14 07:30; baseline finish 2018-08-31 09:30 → 2018-08-14 10:30 |
| 236 | Fitup inspection | 2018-09-24 09:30 → 2018-09-06 10:30 (-18d) | 2018-09-24 11:30 → 2018-09-06 12:30 (-18d) |  | 0d → 54.62d |  | baseline start 2018-08-31 09:30 → 2018-08-14 10:30; baseline finish 2018-08-31 11:30 → 2018-08-14 12:30 |
| 237 | welding | 2018-09-24 11:30 → 2018-09-06 12:30 (-18d) | 2018-09-24 15:30 → 2018-09-06 16:30 (-18d) |  | 0d → 54.88d |  | baseline start 2018-08-31 11:30 → 2018-08-14 12:30; baseline finish 2018-08-31 15:30 → 2018-08-14 16:30 |
| 238 | Outer pipe with nozzle fit up | 2018-09-24 15:30 → 2018-09-06 16:30 (-18d) | 2018-09-24 18:30 → 2018-09-06 19:30 (-18d) |  | 0d → 54.88d |  | baseline start 2018-08-31 15:30 → 2018-08-14 16:30; baseline finish 2018-08-31 18:30 → 2018-08-14 19:30 |
| 239 | Outer pipe with nozzle welding | 2018-09-24 18:30 → 2018-09-06 19:30 (-18d) | 2018-09-25 07:30 → 2018-09-07 08:30 (-18d) |  | 0d → 54.88d |  | baseline start 2018-08-31 18:30 → 2018-08-14 19:30; baseline finish 2018-09-01 07:30 → 2018-08-16 08:30 |
| 240 | Insulation cleat fit up | 2018-09-25 07:30 → 2018-09-07 08:30 (-18d) | 2018-09-25 09:30 → 2018-09-07 10:30 (-18d) |  | 0d → 54.88d |  | baseline start 2018-09-01 07:30 → 2018-08-16 08:30; baseline finish 2018-09-01 09:30 → 2018-08-16 10:30 |
| 241 | welding | 2018-09-25 09:30 → 2018-09-07 10:30 (-18d) | 2018-09-25 11:30 → 2018-09-07 12:30 (-18d) |  | 0d → 54.88d |  | baseline start 2018-09-01 09:30 → 2018-08-16 10:30; baseline finish 2018-09-01 11:30 → 2018-08-16 12:30 |
| 242 | Lifting Lug fit up | 2018-09-25 11:30 → 2018-08-28 18:30 (-28d) | 2018-09-25 13:30 → 2018-08-28 20:30 (-28d) |  | 0d → 70.5d | 115, 241 → 115 | baseline start 2018-09-01 11:30 → 2018-08-03 18:30; baseline finish 2018-09-01 13:30 → 2018-08-03 20:30 |
| 243 | welding | 2018-09-25 13:30 → 2018-08-28 20:30 (-28d) | 2018-09-25 16:30 → 2018-08-29 07:30 (-27d) |  | 0d → 70.5d |  | baseline start 2018-09-01 13:30 → 2018-08-03 20:30; baseline finish 2018-09-01 16:30 → 2018-08-04 07:30 |
| 244 | Radiography | 2018-10-08 16:30 → 2018-08-29 07:30 (-40d) | 2018-10-09 08:30 → 2018-08-29 15:30 (-41d) |  | 0d → 70.5d | Dummy Activity → 243 | baseline start 2018-09-15 16:30 → 2018-08-04 07:30; baseline finish 2018-09-17 08:30 → 2018-08-04 15:30 |
| 245 | **Final assembly & Testing** | 2018-10-09 16:30 → 2018-09-21 10:30 (-18d) | 2018-10-23 17:30 → 2018-10-20 18:30 (-3d) | 20.12d → 43d | 0d → 3.88d |  | baseline start 2018-09-17 16:30 → 2018-08-29 10:30; baseline finish 2018-09-29 17:30 → 2018-09-26 18:30 |
| 246 | Saddle assembly | 2018-10-09 16:30 → 2018-09-21 10:30 (-18d) | 2018-10-10 16:30 → 2018-09-21 18:30 (-19d) | 2d → 1d | 0d → 36.12d | 137FS+1d, 164FS+1d, 191FS+1d, 218FS+1d → 137FS+1d, 164FS+1d, 191FS+1d, 218FS+1d, 63, 64 | baseline start 2018-09-17 16:30 → 2018-08-29 10:30; baseline finish 2018-09-18 16:30 → 2018-08-29 18:30 |
| 247 | U bend assembly with shell | 2018-10-10 16:30 → 2018-09-21 18:30 (-19d) | 2018-10-11 16:30 → 2018-09-24 10:30 (-17d) | 2d → 1d | 0d → 36.12d |  | baseline start 2018-09-18 16:30 → 2018-08-29 18:30; baseline finish 2018-09-19 16:30 → 2018-08-30 10:30 |

| ID | Task | Start | Finish | Duration | Total float | Predecessors | Other |
| --- | --- | --- | --- | --- | --- | --- | --- |
| 248 | Hydro test preparation | 2018-10-16 08:30 → 2018-09-24 10:30 (-22d) | 2018-10-16 16:30 → 2018-09-24 14:30 (-22d) | 1d → 4h | 0d → 36.12d | 247FS+5d → 247 | baseline start 2018-09-24 08:30 → 2018-08-30 10:30; baseline finish 2018-09-24 16:30 → 2018-08-30 14:30 |
| 249 | Hydro test | 2018-10-16 16:30 → 2018-09-24 14:30 (-22d) | 2018-10-17 16:30 → 2018-09-25 14:30 (-22d) |  | 0d → 36.12d |  | baseline start 2018-09-24 16:30 → 2018-08-30 14:30; baseline finish 2018-09-25 16:30 → 2018-08-31 14:30 |
| 250 | Testing inspection | 2018-10-17 16:30 → 2018-09-25 14:30 (-22d) | 2018-10-19 09:30 → 2018-09-25 20:30 (-24d) | 9h → 6h | 0d → 36.12d |  | baseline start 2018-09-25 16:30 → 2018-08-31 14:30; baseline finish 2018-09-26 09:30 → 2018-08-31 20:30 |
| 251 | water drying | 2018-10-19 09:30 → 2018-09-25 20:30 (-24d) | 2018-10-19 14:30 → 2018-09-26 09:30 (-23d) |  | 6.38d → 41d |  | baseline start 2018-09-26 09:30 → 2018-08-31 20:30; baseline finish 2018-09-26 14:30 → 2018-09-01 09:30 |
| 252 | Pickling and pasivation | 2018-10-19 09:30 → 2018-09-25 20:30 (-24d) | 2018-10-20 17:30 → 2018-09-26 20:30 (-24d) | 3d → 2d | 0d → 36.62d |  | baseline start 2018-09-26 09:30 → 2018-08-31 20:30; baseline finish 2018-09-27 17:30 → 2018-09-01 20:30 |
| 253 | Primer painting | 2018-10-20 17:30 → 2018-10-19 10:30 (-1d) | 2018-10-22 17:30 → 2018-10-19 18:30 (-3d) | 2d → 1d | 0d → 3.88d | 252 → 252, 65 | baseline start 2018-09-27 17:30 → 2018-09-25 10:30; baseline finish 2018-09-28 17:30 → 2018-09-25 18:30 |
| 254 | Finish painting | 2018-10-23 09:30 → 2018-10-20 10:30 (-3d) | 2018-10-23 17:30 → 2018-10-20 18:30 (-3d) |  | 0d → 3.88d |  | baseline start 2018-09-29 09:30 → 2018-09-26 10:30; baseline finish 2018-09-29 17:30 → 2018-09-26 18:30 |
