# 4216-BEML

How a schedule from MS Project changed from version to version. A marks actual dates.

## Version 1 (saved 2018-05-24, file 4216.mpp)

Note of the change: third commit

| ID | WBS | Task | Duration | Start | Finish | Predecessors | Complete | Total float | Constraint |
| --- | --- | --- | --- | --- | --- | --- | --- | --- | --- |
| 1 | 1 | **Project Initiation** | 3.38d | 2017-09-12 A | 2017-09-15 A |  | 100% |  |  |
| 2 |  | PO Receipt | 1d | 2017-09-12 A | 2017-09-12 A |  | 100% |  |  |
| 3 |  | Work Order | 1d | 2017-09-13 A | 2017-09-13 A | 2 | 100% |  |  |
| 4 |  | CRM | 3h | 2017-09-15 A | 2017-09-15 A | 3FS+1d | 100% |  |  |
| 5 | 2 | **4216-Material Receipt** | 0.38d | 2018-06-01 | 2018-06-01 |  |  | 0.75d |  |
| 6 |  | FIM - Ti Sheets | 3h | 2018-06-01 | 2018-06-01 | 4FS+199d |  | 0.75d |  |
| 7 | 3 | **Raw Material Inspection** | 0.38d | 2018-06-02 | 2018-06-02 |  |  | 0.5d |  |
| 8 |  | Raw Material Inspection (Plates) | 3h | 2018-06-02 | 2018-06-02 | 6 |  | 0.5d | start no earlier than 2018-06-02 |
| 9 | 4 | **4216-Fabrication Plan** | 7d | 2018-06-04 | 2018-06-07 |  |  | 0.62d |  |
| 10 |  | Plate Marking & prepunching | 1.5d | 2018-06-04 | 2018-06-05 | 8FS+2d |  | 0.62d |  |
| 11 |  | Plate Grinding Work | 1d | 2018-06-05 | 2018-06-05 | 10 |  | 0.62d |  |
| 12 |  | Shell Plate Pre Bending Work | 1d | 2018-06-05 | 2018-06-06 | 11 |  | 0.62d |  |
| 13 |  | Shell Rolling Work | 1.5d | 2018-06-06 | 2018-06-06 | 12 |  | 0.62d |  |
| 14 |  | Shell Fitup | 1d | 2018-06-06 | 2018-06-07 | 13 |  | 0.62d |  |
| 15 |  | Final Finishing | 1d | 2018-06-07 | 2018-06-07 | 14 |  | 0.62d |  |
| 16 | 5 | **Project Closure** | 7d | 2018-06-08 | 2018-06-16 |  |  | 0d |  |
| 17 |  | Material Handover to Store | 1d | 2018-06-08 | 2018-06-08 | 15 |  | 0d |  |
| 18 |  | Final Documentation | 2d | 2018-06-11 | 2018-06-12 | 17 |  | 0d |  |
| 19 |  | Invoice to Customer | 1d | 2018-06-13 | 2018-06-13 | 18 |  | 0d |  |
| 20 |  | Product Transportation to Site | 3d | 2018-06-14 | 2018-06-16 | 19 |  | 0d |  |

## Version 2 (saved 2018-05-24, file 4227.mpp)

Note of the change: third commit

Last finish 2018-06-16 → 2018-05-11 (-36d). Complete tasks 3 → 25.

Added:

| ID | Task | Duration | Start | Finish | Predecessors | Constraint | Resources |
| --- | --- | --- | --- | --- | --- | --- | --- |
| 5 | **4227-Material Receipt(2nd Lot)** | 1d | 2018-01-24 A | 2018-01-24 A |  |  |  |
| 9 | **4227-Fabrication Plan** | 30.75d | 2018-02-20 A | 2018-03-12 A |  |  |  |
| 10 | Plate Marking & cutting | 2d | 2018-02-20 A | 2018-02-21 A | 8FS+37d | start no earlier than 2018-02-20 | Fitter; Helper |
| 20 | Despatch | 4h | 2018-03-17 A | 2018-03-17 A | 19 | start no earlier than 2018-03-17 | Store |
| 22 | **4227-Material Receipt(3rd Lot)** | 52.25d | 2018-04-07 A | 2018-05-11 |  |  |  |
| 23 | FIM - Ti Sheets-20 NOS | 1d | 2018-04-07 A | 2018-04-07 A |  | start no earlier than 2018-04-07 | Crane; Helper; Store |
| 24 | **Raw Material Inspection** | 1d | 2018-04-07 A | 2018-04-09 A |  |  |  |
| 25 | Raw Material Inspection (Plates) | 1d | 2018-04-07 A | 2018-04-09 A | 23 |  | QC Engineer |
| 26 | **4227-Fabrication Plan** | 45d | 2018-04-10 A | 2018-05-09 A |  |  |  |
| 27 | Plate Marking & cutting | 2d | 2018-04-10 A | 2018-04-11 A | 25FS+2d |  | Fitter; Helper |
| 28 | Plate Grinding Work | 3d | 2018-04-12 A | 2018-04-13 A | 27FS+2d |  | Grinder; Grinding Machine |
| 29 | Shell Plate Pre Bending Work | 3d | 2018-04-13 A | 2018-04-17 A | 28 |  | Fitter; Helper |
| 30 | Shell Rolling Work | 15d | 2018-04-18 A | 2018-04-26 A | 29 | finish no earlier than 2018-04-27 | Fitter [200%]; Helper |
| 31 | Shell Fitup | 2d | 2018-04-28 A | 2018-04-30 A | 30 |  | Fitter; Helper; SMAW Welder; SMAW Welding Machine |
| 32 | Final Finishing | 1d | 2018-04-30 A | 2018-04-30 A | 31 |  | Grinder; Grinding Machine |
| 33 | Final inspection | 1d | 2018-05-08 A | 2018-05-09 A | 32FS+6d |  | Client |
| 34 | **Project Closure** | 2.38d | 2018-05-08 A | 2018-05-11 |  |  |  |
| 35 | Final Documentation | 1d | 2018-05-08 A | 2018-05-09 A | 33SS |  | QC Engineer |
| 36 | Material Handover to Store | 3h | 2018-05-10 | 2018-05-11 | 35FS+1d |  | Production Engineer |
| 37 | Invoice to Customer | 3h | 2018-05-10 | 2018-05-11 | 36SS |  | Finance |
| 38 | Despatch | 2h | 2018-05-10 | 2018-05-11 | 36SS |  | Store |

Removed: 5 4216-Material Receipt; 6 FIM - Ti Sheets; 10 Plate Marking & prepunching; 20 Product Transportation to Site

Changed:

| ID | Task | Start | Finish | Duration | Complete | Total float | Predecessors | Other |
| --- | --- | --- | --- | --- | --- | --- | --- | --- |
| 1 | **Project Initiation** | 2017-09-12 A → 2017-09-08 A (-4d) | 2017-09-15 A → 2017-09-13 A (-2d) | 3.38d → 7.25d |  |  |  | baseline start 2017-09-12 → 2017-09-08; baseline finish 2017-09-15 → 2017-09-13 |
| 2 | PO Receipt | 2017-09-12 A → 2017-09-08 A (-4d) | 2017-09-12 A → 2017-09-08 A (-4d) |  |  |  |  | baseline start 2017-09-12 → 2017-09-08; baseline finish 2017-09-12 → 2017-09-08 |
| 3 | Work Order | 2017-09-13 A → 2017-09-11 A (-2d) | 2017-09-13 A → 2017-09-11 A (-2d) |  |  |  |  | constraint none → start no earlier than 2017-09-11; baseline start 2017-09-13 → 2017-09-11; baseline finish 2017-09-13 → 2017-09-11 |
| 4 | CRM | 2017-09-15 A → 2017-09-13 A (-2d) | 2017-09-15 A → 2017-09-13 A (-2d) | 3h → 10h |  |  |  | constraint none → start no earlier than 2017-09-13; baseline start 2017-09-15 → 2017-09-13; baseline finish 2017-09-15 → 2017-09-13 |
| 6 | FIM - Ti Sheets-20 NOS | 2018-06-04 → 2018-01-24 A (-131d) | 2018-06-07 → 2018-01-24 A (-134d) | 7d → 1d | 0% → 100% | 0.62d → none |  | was named 4216-Fabrication Plan; constraint none → start no earlier than 2018-01-24; resources none → Crane; Helper; Store; baseline start 2018-06-04 → 2018-01-24; baseline finish 2018-06-07 → 2018-01-24 |
| 7 | **Raw Material Inspection** | 2018-06-02 → 2018-01-25 A (-128d) | 2018-06-02 → 2018-01-25 A (-128d) | 0.38d → 1d | 0% → 100% | 0.5d → none |  | baseline start 2018-06-02 → 2018-01-25; baseline finish 2018-06-02 → 2018-01-25 |
| 8 | Raw Material Inspection (Plates) | 2018-06-02 → 2018-01-25 A (-128d) | 2018-06-02 → 2018-01-25 A (-128d) | 3h → 1d | 0% → 100% | 0.5d → none | FIM - Ti Sheets → 6 | constraint start no earlier than 2018-06-02 → start no earlier than 2018-01-25; baseline start 2018-06-02 → 2018-01-25; baseline finish 2018-06-02 → 2018-01-25 |
| 11 | Plate Grinding Work | 2018-06-05 → 2018-02-22 A (-103d) | 2018-06-05 → 2018-02-23 A (-102d) | 1d → 3d | 0% → 100% | 0.62d → none | Plate Marking & prepunching → 10FS+2d | constraint none → start no earlier than 2018-02-22; baseline start 2018-06-05 → 2018-02-22; baseline finish 2018-06-05 → 2018-02-23 |
| 12 | Shell Plate Pre Bending Work | 2018-06-05 → 2018-02-23 A (-102d) | 2018-06-06 → 2018-02-27 A (-99d) | 1d → 4d | 0% → 100% | 0.62d → none |  | constraint none → start no earlier than 2018-02-23; baseline start 2018-06-05 → 2018-02-23; baseline finish 2018-06-06 → 2018-02-27 |
| 13 | Shell Rolling Work | 2018-06-06 → 2018-02-27 A (-99d) | 2018-06-06 → 2018-03-01 A (-97d) | 1.5d → 3d | 0% → 100% | 0.62d → none |  | constraint none → start no earlier than 2018-02-27; baseline start 2018-06-06 → 2018-02-27; baseline finish 2018-06-06 → 2018-03-01 |
| 14 | Shell Fitup | 2018-06-06 → 2018-03-01 A (-97d) | 2018-06-07 → 2018-03-07 A (-92d) | 1d → 9d | 0% → 100% | 0.62d → none |  | constraint none → start no earlier than 2018-03-01; baseline start 2018-06-06 → 2018-03-01; baseline finish 2018-06-07 → 2018-03-07 |
| 15 | Final Finishing | 2018-06-07 → 2018-03-07 A (-92d) | 2018-06-07 → 2018-03-12 A (-87d) | 1d → 6d | 0% → 100% | 0.62d → none |  | constraint none → start no earlier than 2018-03-05; baseline start 2018-06-07 → 2018-03-07; baseline finish 2018-06-07 → 2018-03-12 |
| 16 | **Project Closure** | 2018-06-08 → 2018-03-14 A (-86d) | 2018-06-16 → 2018-03-17 A (-91d) | 7d → 3d | 0% → 100% | 0d → none |  | baseline start 2018-06-08 → 2018-03-14; baseline finish 2018-06-16 → 2018-03-17 |
| 17 | Material Handover to Store | 2018-06-08 → 2018-03-14 A (-86d) | 2018-06-08 → 2018-03-15 A (-85d) | 1d → 4h | 0% → 100% | 0d → none | 15 → 15FS+2d | resources QC Engineer → Production Engineer; baseline start 2018-06-08 → 2018-03-14; baseline finish 2018-06-08 → 2018-03-15 |
| 18 | Final Documentation | 2018-06-11 → 2018-03-15 A (-88d) | 2018-06-12 → 2018-03-16 A (-88d) | 2d → 1d | 0% → 100% | 0d → none |  | baseline start 2018-06-11 → 2018-03-15; baseline finish 2018-06-12 → 2018-03-16 |
| 19 | Invoice to Customer | 2018-06-13 → 2018-03-16 A (-89d) | 2018-06-13 → 2018-03-16 A (-89d) | 1d → 3h | 0% → 100% | 0d → none |  | constraint none → start no earlier than 2018-03-14; baseline start 2018-06-13 → 2018-03-16; baseline finish 2018-06-13 → 2018-03-16 |
