# 4166-PGAD

How a schedule from MS Project changed from version to version. A marks actual dates.

## Version 1 (saved 2018-05-24, file 4166.mpp)

Note of the change: third commit

| ID | WBS | Task | Duration | Start | Finish | Predecessors | Complete |
| --- | --- | --- | --- | --- | --- | --- | --- |
| 1 | 1 | **Project Initiation** | 22d | 2017-04-13 A | 2017-05-10 A |  | 100% |
| 2 |  | LOA Receipt | 1d | 2017-04-13 A | 2017-04-13 A |  | 100% |
| 3 |  | Wo issue | 2d | 2017-04-14 A | 2017-04-15 A | 2 | 100% |
| 4 |  | CRM | 2d | 2017-04-17 A | 2017-04-18 A | 3 | 100% |
| 5 |  | ABG (BG) 10% | 2d | 2017-04-19 A | 2017-04-20 A | 4 | 100% |
| 6 |  | Service order receipt | 10d | 2017-04-27 A | 2017-05-09 A | 5FS+4d | 100% |
| 7 |  | Drawing Printing & Issue | 1d | 2017-05-10 A | 2017-05-10 A | 6 | 100% |
| 8 | 2 | **PR issue** | 0.5d | 2017-05-11 A | 2017-05-11 A |  | 100% |
| 9 |  | Plates | 4h | 2017-05-11 A | 2017-05-11 A | 7 | 100% |
| 10 |  | Rods | 4h | 2017-05-11 A | 2017-05-11 A | 7 | 100% |
| 11 |  | Mesh | 1h | 2017-05-11 A | 2017-05-11 A | 7 | 100% |
| 12 |  | Testing components | 1h | 2017-05-11 A | 2017-05-11 A | 7 | 100% |
| 13 | 3 | **Material Ordering** | 1.38d | 2017-05-15 A | 2017-05-16 A |  | 100% |
| 14 |  | Ti Plate (Lot 1) | 1d | 2017-05-15 A | 2017-05-16 A | 9FS+2d | 100% |
| 15 |  | Ti Plate (Lot 2) | 1d | 2017-05-15 A | 2017-05-16 A | 9FS+2d | 100% |
| 16 |  | Ti rod | 1d | 2017-05-15 A | 2017-05-16 A | 10FS+2d | 100% |
| 17 |  | SS mesh | 1d | 2017-05-15 A | 2017-05-16 A | 11FS+2d | 100% |
| 18 |  | Testing components | 1d | 2017-05-15 A | 2017-05-16 A | 12FS+2d | 100% |
| 19 | 4 | **Material receipt** | 182d | 2017-05-16 A | 2018-01-06 A |  | 100% |
| 20 |  | Ti plate (Lot 1) | 2.48d | 2017-05-16 A | 2017-05-18 A | 14 | 100% |
| 21 |  | Ti plate (Lot 2) | 2d | 2018-01-04 A | 2018-01-06 A | 15FS+180d | 100% |
| 22 |  | Ti rod | 2.45d | 2017-07-12 A | 2017-07-14 A | 13FS+45d | 100% |
| 23 |  | SS Mesh | 2.45d | 2017-07-12 A | 2017-07-14 A | 13FS+45d | 100% |
| 24 |  | Testing Components | 2.45d | 2017-07-12 A | 2017-07-14 A | 13FS+45d | 100% |
| 25 |  | Material Costing | 1d | 2018-01-06 A | 2018-01-08 A | 20, 21 | 100% |
| 26 | 6 | **QC** | 20d | 2017-07-14 A | 2017-08-08 A |  | 100% |
| 27 |  | Welder Qualification | 4d | 2017-07-14 A | 2017-07-19 A | 20, 22 | 100% |
| 28 |  | Chemical testing | 4d | 2017-08-03 A | 2017-08-08 A | 27FS+12d | 100% |
| 29 |  | Mechanical testing | 2d | 2017-07-27 A | 2017-07-29 A | 27FS+6d | 100% |
| 30 | 7 | **Fabrication** | 521.94d | 2017-04-13 A | 2018-03-17 A |  | 100% |
| 31 | 7.1 | **Lot 1 ( 20 Nos)** | 317.6d | 2017-04-13 A | 2017-11-04 A |  | 100% |
| 32 |  | Marking | 2d | 2017-07-14 A | 2017-07-15 A | 20, 22, 23 | 100% |
| 33 |  | Material identification | 3.62d | 2017-07-14 A | 2017-07-17 A | 20, 22 | 100% |
| 34 |  | Machining of Adaptor | 15.01d | 2017-07-17 A | 2017-07-27 A | 33 | 100% |
| 35 |  | Machining of Socket | 15.01d | 2017-07-17 A | 2017-07-27 A | 33 | 100% |
| 36 |  | Mechanical & Chemical Prep testing speciman | 6.38d | 2017-07-17 A | 2017-07-20 A | 33 | 100% |
| 37 |  | Cutting | 4d | 2017-07-17 A | 2017-07-19 A | 33 | 100% |
| 38 |  | Machining | 4d | 2017-07-19 A | 2017-07-21 A | 37 | 100% |
| 39 |  | Heat Treatment & Forming | 16.27d | 2017-07-21 A | 2017-08-01 A | 38 | 100% |
| 40 |  | Machining of Hemisphere | 50.05d | 2017-08-01 A | 2017-09-04 A | 39 | 100% |
| 41 |  | Machining of Slot & Hexagon | 8.36d | 2017-07-29 A | 2017-08-03 A | 35FS+5d, 34FS+5d | 100% |
| 42 |  | Component inspection | 3.93d | 2017-09-04 A | 2017-09-06 A | 40, 41 | 100% |
| 43 | 7.1.12 | **Top Hem to Socket Welding** | 22.13d | 2017-09-06 A | 2017-09-20 A |  | 100% |
| 44 |  | Hem to socket Fitup | 3.97d | 2017-09-06 A | 2017-09-08 A | 42 | 100% |
| 45 |  | Hem to socket root welding | 2d | 2017-09-08 A | 2017-09-11 A | 44 | 100% |
| 46 |  | RT inspection | 4.16d | 2017-09-11 A | 2017-09-13 A | 45 | 100% |
| 47 |  | Hem to Socket final welding | 8d | 2017-09-13 A | 2017-09-18 A | 46 | 100% |
| 48 |  | RT inspection | 4d | 2017-09-18 A | 2017-09-20 A | 47 | 100% |
| 49 | 7.1.13 | **Bottom Hem to Socket Welding** | 22.13d | 2017-09-06 A | 2017-09-20 A |  | 100% |
| 50 |  | Hem to socket Fitup | 3.97d | 2017-09-06 A | 2017-09-08 A | 42 | 100% |
| 51 |  | Hem to socket root welding | 2d | 2017-09-08 A | 2017-09-11 A | 50 | 100% |
| 52 |  | RT inspection | 4.16d | 2017-09-11 A | 2017-09-13 A | 51 | 100% |
| 53 |  | Hem to Socket final welding | 8d | 2017-09-13 A | 2017-09-18 A | 52 | 100% |
| 54 |  | RT inspection | 4d | 2017-09-18 A | 2017-09-20 A | 53 | 100% |
| 55 | 7.1.14 | **Hemisphere Welding (Dish Ends)** | 28.02d | 2017-09-20 A | 2017-10-09 A |  | 100% |
| 56 |  | Dish Fit Up | 4d | 2017-09-20 A | 2017-09-22 A | 48, 54 | 100% |
| 57 |  | Dish Welding (Root) | 4d | 2017-09-22 A | 2017-09-26 A | 56 | 100% |
| 58 |  | RT inspection | 4d | 2017-09-26 A | 2017-09-28 A | 57 | 100% |
| 59 |  | Dish Welding (Final) | 8.01d | 2017-09-28 A | 2017-10-04 A | 58 | 100% |
| 60 |  | Cleaning Process | 4d | 2017-10-04 A | 2017-10-06 A | 59 | 100% |
| 61 |  | RT inspection | 4d | 2017-10-06 A | 2017-10-09 A | 60 | 100% |
| 62 | 7.1.15 | **Final inspection** | 317.6d | 2017-04-13 A | 2017-11-04 A |  | 100% |
| 63 |  | Strain gauge fixing | 2d | 2017-10-13 A | 2017-10-16 A | 61FS+7d | 100% |
| 64 |  | Hydraulic proof pressure testing | 3.28d | 2017-10-16 A | 2017-10-17 A | 63 | 100% |
| 65 |  | Cyclic & Burst test | 5.02d | 2017-10-17 A | 2017-10-21 A | 64 | 100% |
| 66 |  | Cleaning | 2d | 2017-10-21 A | 2017-10-23 A | 65 | 100% |
| 67 |  | RT inspection | 2d | 2017-10-23 A | 2017-10-24 A | 66 | 100% |
| 68 |  | Final cleaning | 4d | 2017-10-24 A | 2017-10-26 A | 67 | 100% |
| 69 |  | Inspection clearance from client | 2d | 2017-10-26 A | 2017-10-27 A | 67FS+4d | 100% |
| 70 |  | Stenciling | 4d | 2017-10-27 A | 2017-10-31 A | 69 | 100% |

| ID | WBS | Task | Duration | Start | Finish | Predecessors | Complete |
| --- | --- | --- | --- | --- | --- | --- | --- |
| 71 |  | Sealing | 4d | 2017-10-31 A | 2017-11-02 A | 70 | 100% |
| 72 |  | Packing | 5.18d | 2017-11-02 A | 2017-11-04 A | 71 | 100% |
| 73 |  | Despatch | 1d | 2017-04-13 A | 2017-04-13 A | 72 | 100% |
| 74 | 7.2 | **Lot 2 ( 20 Nos)** | 227.11d | 2017-07-15 A | 2017-12-12 A |  | 100% |
| 75 |  | Marking | 2d | 2017-07-15 A | 2017-07-17 A | 20, 22, 23, 32 | 100% |
| 76 |  | Material identification | 3.62d | 2017-07-17 A | 2017-07-19 A | 20, 22, 33 | 100% |
| 77 |  | Machining of Adaptor | 15.02d | 2017-07-27 A | 2017-08-04 A | 76, 34 | 100% |
| 78 |  | Machining of Socket | 15.02d | 2017-07-27 A | 2017-08-04 A | 76, 35 | 100% |
| 79 |  | Mechanical & Chemical Prep testing speciman | 6.38d | 2017-07-20 A | 2017-07-25 A | 76, 36 | 100% |
| 80 |  | Cutting | 4d | 2017-07-19 A | 2017-07-21 A | 76, 37 | 100% |
| 81 |  | Machining | 4d | 2017-07-21 A | 2017-07-25 A | 80, 38 | 100% |
| 82 |  | Heat Treatment & Forming | 16.26d | 2017-08-01 A | 2017-08-10 A | 81, 39 | 100% |
| 83 |  | Machining of Hemisphere | 50.05d | 2017-09-04 A | 2017-10-06 A | 82, 40 | 100% |
| 84 |  | Machining of Slot & Hexagon | 8.36d | 2017-08-08 A | 2017-08-14 A | 77FS+5d, 78FS+5d, 41 | 100% |
| 85 |  | Component inspection | 3.93d | 2017-10-06 A | 2017-10-09 A | 83, 84, 42 | 100% |
| 86 | 7.2.12 | **Top Hem to Socket Welding** | 24.78d | 2017-10-09 A | 2017-10-26 A |  | 100% |
| 87 |  | Hem to socket Fitup | 3.97d | 2017-10-09 A | 2017-10-11 A | 85, 44 | 100% |
| 88 |  | Hem to socket root welding | 2d | 2017-10-11 A | 2017-10-12 A | 87, 45 | 100% |
| 89 |  | RT inspection | 4.81d | 2017-10-12 A | 2017-10-17 A | 88, 46 | 100% |
| 90 |  | Hem to Socket final welding | 8d | 2017-10-17 A | 2017-10-23 A | 89, 47 | 100% |
| 91 |  | RT inspection | 6d | 2017-10-23 A | 2017-10-26 A | 90, 48 | 100% |
| 92 | 7.2.13 | **Bottom Hem to Socket Welding** | 24.78d | 2017-10-09 A | 2017-10-26 A |  | 100% |
| 93 |  | Hem to socket Fitup | 3.97d | 2017-10-09 A | 2017-10-11 A | 85, 50 | 100% |
| 94 |  | Hem to socket root welding | 2d | 2017-10-11 A | 2017-10-12 A | 93, 51 | 100% |
| 95 |  | RT inspection | 4.81d | 2017-10-12 A | 2017-10-17 A | 94, 52 | 100% |
| 96 |  | Hem to Socket final welding | 8d | 2017-10-17 A | 2017-10-23 A | 95, 53 | 100% |
| 97 |  | RT inspection | 6d | 2017-10-23 A | 2017-10-26 A | 96, 54 | 100% |
| 98 | 7.2.14 | **Hemisphere Welding (Dish Ends)** | 30.21d | 2017-10-26 A | 2017-11-15 A |  | 100% |
| 99 |  | Dish Fit Up | 4d | 2017-10-26 A | 2017-10-30 A | 91, 97, 56 | 100% |
| 100 |  | Dish Welding (Root) | 4d | 2017-10-30 A | 2017-11-01 A | 99, 57 | 100% |
| 101 |  | RT inspection | 6d | 2017-11-01 A | 2017-11-04 A | 100, 58 | 100% |
| 102 |  | Dish Welding (Final) | 8.01d | 2017-11-04 A | 2017-11-09 A | 101, 59 | 100% |
| 103 |  | Cleaning Process | 4d | 2017-11-09 A | 2017-11-13 A | 102, 60 | 100% |
| 104 |  | RT inspection | 4.2d | 2017-11-13 A | 2017-11-15 A | 103, 61 | 100% |
| 105 | 7.2.15 | **Final inspection** | 35.17d | 2017-11-18 A | 2017-12-12 A |  | 100% |
| 106 |  | Strain gauge fixing | 2d | 2017-11-18 A | 2017-11-20 A | 104FS+7d, 63 | 100% |
| 107 |  | Hydraulic proof pressure testing | 3.27d | 2017-11-20 A | 2017-11-22 A | 106, 64 | 100% |
| 108 |  | Cyclic & Burst test | 5d | 2017-11-22 A | 2017-11-24 A | 107, 65 | 100% |
| 109 |  | Cleaning | 2d | 2017-11-24 A | 2017-11-27 A | 108, 66 | 100% |
| 110 |  | RT inspection | 2d | 2017-11-27 A | 2017-11-28 A | 109, 67 | 100% |
| 111 |  | Final cleaning | 4d | 2017-11-28 A | 2017-11-30 A | 110, 68 | 100% |
| 112 |  | Inspection clearance from client | 2.71d | 2017-11-30 A | 2017-12-02 A | 110FS+4d, 69 | 100% |
| 113 |  | Stenciling | 4d | 2017-12-02 A | 2017-12-05 A | 112, 70 | 100% |
| 114 |  | Sealing | 4d | 2017-12-05 A | 2017-12-07 A | 113, 71 | 100% |
| 115 |  | Packing | 5.18d | 2017-12-07 A | 2017-12-11 A | 114, 72 | 100% |
| 116 |  | Despatch | 1d | 2017-12-11 A | 2017-12-12 A | 115 | 100% |
| 117 | 7.3 | **Lot 3 ( 10 Nos)** | 521.94d | 2017-04-13 A | 2018-03-17 A |  | 100% |
| 118 |  | Marking | 1d | 2018-01-06 A | 2018-01-06 A | 22, 23, 21 | 100% |
| 119 |  | Material identification | 3.62d | 2018-01-06 A | 2018-01-09 A | 22, 21 | 100% |
| 120 |  | Machining of Adaptor | 7.51d | 2018-01-09 A | 2018-01-12 A | 119 | 100% |
| 121 |  | Machining of Socket | 7.51d | 2018-01-09 A | 2018-01-12 A | 119 | 100% |
| 122 |  | Mechanical & Chemical Prep testing speciman | 3.38d | 2018-01-09 A | 2018-01-10 A | 119 | 100% |
| 123 |  | Cutting | 2d | 2018-01-09 A | 2018-01-10 A | 119 | 100% |
| 124 |  | Machining | 2d | 2018-01-10 A | 2018-01-11 A | 123 | 100% |
| 125 |  | Heat Treatment & Forming | 8d | 2018-01-11 A | 2018-01-18 A | 124 | 100% |
| 126 |  | Machining of Hemisphere | 25.01d | 2018-01-18 A | 2018-02-03 A | 125 | 100% |
| 127 |  | Machining of Slot & Hexagon | 5d | 2018-01-18 A | 2018-01-20 A | 120, 121 | 100% |
| 128 |  | Component inspection | 1d | 2018-02-26 A | 2018-02-26 A | 126, 127 | 100% |
| 129 | 7.3.12 | **Top Hem to Socket Welding** | 6.75d | 2018-02-16 A | 2018-02-20 A |  | 100% |
| 130 |  | Hem to socket Fitup | 1d | 2018-02-16 A | 2018-02-16 A | 128FS-15d | 100% |
| 131 |  | Hem to socket root welding | 1d | 2018-02-16 A | 2018-02-17 A | 130 | 100% |
| 132 |  | RT inspection | 4h | 2018-02-17 A | 2018-02-17 A | 131 | 100% |
| 133 |  | Hem to Socket final welding | 4d | 2018-02-17 A | 2018-02-20 A | 132 | 100% |
| 134 |  | RT inspection | 2h | 2018-02-20 A | 2018-02-20 A | 133 | 100% |
| 135 | 7.3.13 | **Bottom Hem to Socket Welding** | 8.12d | 2018-02-20 A | 2018-02-26 A |  | 100% |
| 136 |  | Hem to socket Fitup | 2d | 2018-02-20 A | 2018-02-21 A | 134 | 100% |
| 137 |  | Hem to socket root welding | 1d | 2018-02-21 A | 2018-02-22 A | 136 | 100% |
| 138 |  | RT inspection | 4.6h | 2018-02-22 A | 2018-02-22 A | 137 | 100% |
| 139 |  | Hem to Socket final welding | 4d | 2018-02-22 A | 2018-02-26 A | 138 | 100% |
| 140 |  | RT inspection | 2h | 2018-02-26 A | 2018-02-26 A | 139 | 100% |

| ID | WBS | Task | Duration | Start | Finish | Predecessors | Complete | Constraint |
| --- | --- | --- | --- | --- | --- | --- | --- | --- |
| 141 | 7.3.14 | **Hemisphere Welding (Dish Ends)** | 10.24d | 2018-02-26 A | 2018-03-03 A |  | 100% |  |
| 142 |  | Dish Fit Up | 2d | 2018-02-26 A | 2018-02-27 A | 140 | 100% |  |
| 143 |  | Dish Welding (Root) | 2d | 2018-02-27 A | 2018-02-28 A | 142 | 100% |  |
| 144 |  | RT inspection | 4h | 2018-02-28 A | 2018-02-28 A | 143 | 100% |  |
| 145 |  | Dish Welding (Final) | 4d | 2018-02-28 A | 2018-03-02 A | 144 | 100% |  |
| 146 |  | Cleaning Process | 8h | 2018-03-02 A | 2018-03-03 A | 145 | 100% |  |
| 147 |  | RT inspection | 4h | 2018-03-03 A | 2018-03-03 A | 146 | 100% |  |
| 148 | 7.3.15 | **Final inspection** | 521.94d | 2017-04-13 A | 2018-03-17 A |  | 100% |  |
| 149 |  | Strain gauge fixing | 2.38d | 2018-03-08 A | 2018-03-09 A | 147 | 100% | finish no earlier than 2018-03-08 |
| 150 |  | Hydraulic proof pressure testing | 2d | 2018-03-09 A | 2018-03-12 A | 149 | 100% |  |
| 151 |  | Cyclic & Burst test | 2d | 2018-03-09 A | 2018-03-12 A | 149 | 100% |  |
| 152 |  | Cleaning | 1d | 2018-03-12 A | 2018-03-12 A | 151 | 100% |  |
| 153 |  | RT inspection | 4h | 2018-03-12 A | 2018-03-12 A | 152 | 100% |  |
| 154 |  | Final cleaning | 1d | 2018-03-12 A | 2018-03-13 A | 153 | 100% |  |
| 155 |  | Inspection clearance from client | 1d | 2018-03-12 A | 2018-03-13 A | 153 | 100% |  |
| 156 |  | Stenciling | 1d | 2018-03-13 A | 2018-03-13 A | 155 | 100% |  |
| 157 |  | Sealing | 1d | 2018-03-16 A | 2018-03-16 A | 156 | 100% | start no earlier than 2018-03-16 |
| 158 |  | Packing | 1d | 2018-03-16 A | 2018-03-17 A | 157 | 100% |  |
| 159 |  | Despatch | 1d | 2017-04-13 A | 2017-04-13 A | 158 | 100% |  |

## Version 2 (saved 2018-05-24, file 4211.mpp)

Note of the change: third commit

Last finish 2018-03-17 → 2018-04-30 (+44d). Complete tasks 138 → 58.

Added:

| ID | Task | Duration | Start | Finish | Predecessors | Resources |
| --- | --- | --- | --- | --- | --- | --- |
| 11 | **Mesh** | 0.25d | 2017-09-21 A | 2017-09-21 A | 7 |  |
| 14 | Ti Plate | 5.06d | 2017-09-21 A | 2017-09-28 A | 9FS+4d | Plate (Cost) [0.1%]; Purchase Engineer |
| 19 | Ti plate | 58.94d | 2017-11-03 A | 2018-01-17 A | 13FS+25d | Plate (Cost) [0.1%]; Purchase Engineer |
| 33 | Mechanical& Chemical Prep testing speciman | 1d | 2018-02-27 A | 2018-02-27 A | 29, 25, 32 | Gas Cutter; Milling Machine; Milling Operator [50%]; Production Department; QC Engineer; SC (Work) |
| 36 | Heat Treatment& Forming | 2.2d | 2018-01-06 A | 2018-01-09 A | 35 | Foreman [25%]; Helper [200%]; Fitter |
| 38 | Machining of Slot& Hexagon | 4.94d | 2018-02-23 A | 2018-02-27 A | 37 | Production Department; SC (Work) |

Removed: 11 Mesh; 14 Ti Plate (Lot 1); 15 Ti Plate (Lot 2); 20 Ti plate (Lot 1); 21 Ti plate (Lot 2); 31 Lot 1 ( 20 Nos); 36 Mechanical & Chemical Prep testing speciman; 39 Heat Treatment & Forming; 41 Machining of Slot & Hexagon; 65 Cyclic & Burst test; 74 Lot 2 ( 20 Nos); 75 Marking; 76 Material identification; 77 Machining of Adaptor; 78 Machining of Socket; 79 Mechanical & Chemical Prep testing speciman; 80 Cutting; 81 Machining; 82 Heat Treatment & Forming; 83 Machining of Hemisphere; 84 Machining of Slot & Hexagon; 85 Component inspection; 86 Top Hem to Socket Welding; 87 Hem to socket Fitup; 88 Hem to socket root welding; 89 RT inspection; 90 Hem to Socket final welding; 91 RT inspection; 92 Bottom Hem to Socket Welding; 93 Hem to socket Fitup; 94 Hem to socket root welding; 95 RT inspection; 96 Hem to Socket final welding; 97 RT inspection; 98 Hemisphere Welding (Dish Ends); 99 Dish Fit Up; 100 Dish Welding (Root); 101 RT inspection; 102 Dish Welding (Final); 103 Cleaning Process; 104 RT inspection; 105 Final inspection; 106 Strain gauge fixing; 107 Hydraulic proof pressure testing; 108 Cyclic & Burst test; 109 Cleaning; 110 RT inspection; 111 Final cleaning; 112 Inspection clearance from client; 113 Stenciling; 114 Sealing; 115 Packing; 116 Despatch; 117 Lot 3 ( 10 Nos); 118 Marking; 119 Material identification; 120 Machining of Adaptor; 121 Machining of Socket; 122 Mechanical & Chemical Prep testing speciman; 123 Cutting; 124 Machining; 125 Heat Treatment & Forming; 126 Machining of Hemisphere; 127 Machining of Slot & Hexagon; 128 Component inspection; 129 Top Hem to Socket Welding; 130 Hem to socket Fitup; 131 Hem to socket root welding; 132 RT inspection; 133 Hem to Socket final welding; 134 RT inspection; 135 Bottom Hem to Socket Welding; 136 Hem to socket Fitup; 137 Hem to socket root welding; 138 RT inspection; 139 Hem to Socket final welding; 140 RT inspection; 141 Hemisphere Welding (Dish Ends); 142 Dish Fit Up; 143 Dish Welding (Root); 144 RT inspection; 145 Dish Welding (Final); 146 Cleaning Process; 147 RT inspection; 148 Final inspection; 149 Strain gauge fixing; 150 Hydraulic proof pressure testing; 151 Cyclic & Burst test; 152 Cleaning; 153 RT inspection; 154 Final cleaning; 155 Inspection clearance from client; 156 Stenciling; 157 Sealing; 158 Packing; 159 Despatch

Changed:

| ID | Task | Start | Finish | Duration | Predecessors | Other |
| --- | --- | --- | --- | --- | --- | --- |
| 1 | **Project Initiation** | 2017-04-13 A → 2017-08-28 A (+137d) | 2017-05-10 A → 2017-10-30 A (+173d) | 22d → 48d |  | baseline start 2017-04-13 → 2017-08-28; baseline finish 2017-05-10 → 2017-10-30 |
| 2 | LOA Receipt | 2017-04-13 A → 2017-08-28 A (+137d) | 2017-04-13 A → 2017-08-28 A (+137d) | 1d → 0d |  | baseline start 2017-04-13 → 2017-08-28; baseline finish 2017-04-13 → 2017-08-28 |
| 3 | Wo issue | 2017-04-14 A → 2017-09-02 A (+141d) | 2017-04-15 A → 2017-09-04 A (+142d) |  |  | baseline start 2017-04-14 → 2017-09-02; baseline finish 2017-04-15 → 2017-09-04 |
| 4 | CRM | 2017-04-17 A → 2017-09-04 A (+140d) | 2017-04-18 A → 2017-09-05 A (+140d) |  |  | resources Marketing; PM; PMO Head; QC Engineer; Production Department; Purchase Engineer → PM; Marketing; Production Department; Purchase Engineer; QC Engineer; baseline start 2017-04-17 → 2017-09-04; baseline finish 2017-04-18 → 2017-09-05 |
| 5 | ABG (BG) 10% | 2017-04-19 A → 2017-09-08 A (+142d) | 2017-04-20 A → 2017-09-08 A (+141d) | 2d → 0d | 4 → 3FS+7d | baseline start 2017-04-19 → 2017-09-08; baseline finish 2017-04-20 → 2017-09-08 |
| 6 | Service order receipt | 2017-04-27 A → 2017-10-16 A (+172d) | 2017-05-09 A → 2017-10-30 A (+174d) |  | 5FS+4d → 4FS+30d | baseline start 2017-04-27 → 2017-10-16; baseline finish 2017-05-09 → 2017-10-30 |
| 7 | Drawing Printing & Issue | 2017-05-10 A → 2017-09-15 A (+128d) | 2017-05-10 A → 2017-09-15 A (+128d) |  | 6 → 5 | baseline start 2017-05-10 → 2017-09-15; baseline finish 2017-05-10 → 2017-09-15 |
| 8 | **PR issue** | 2017-05-11 A → 2017-09-12 A (+124d) | 2017-05-11 A → 2017-09-21 A (+133d) | 0.5d → 8.06d |  | baseline start 2017-05-11 → 2017-09-12; baseline finish 2017-05-11 → 2017-09-21 |
| 9 | Plates | 2017-05-11 A → 2017-09-12 A (+124d) | 2017-05-11 A → 2017-09-13 A (+125d) |  |  | resources PPC Engineer; Plate (Cost) [0.1%] → Plate (Cost) [0.1%]; PPC Engineer; baseline start 2017-05-11 → 2017-09-12; baseline finish 2017-05-11 → 2017-09-13 |
| 10 | Rods | 2017-05-11 A → 2017-09-21 A (+133d) | 2017-05-11 A → 2017-09-21 A (+133d) | 4h → 8h |  | baseline start 2017-05-11 → 2017-09-21; baseline finish 2017-05-11 → 2017-09-21 |
| 12 | Testing components | 2017-05-11 A → 2017-09-21 A (+133d) | 2017-05-11 A → 2017-09-21 A (+133d) | 1h → 2h |  | baseline start 2017-05-11 → 2017-09-21; baseline finish 2017-05-11 → 2017-09-21 |
| 13 | **Material Ordering** | 2017-05-15 A → 2017-09-21 A (+129d) | 2017-05-16 A → 2017-10-11 A (+148d) | 1.38d → 13.75d |  | baseline start 2017-05-15 → 2017-09-21; baseline finish 2017-05-16 → 2017-10-11 |
| 15 | Ti rod | 2017-05-15 A → 2017-09-21 A (+129d) | 2017-05-16 A → 2017-10-11 A (+148d) | 1d → 13.75d | 10FS+2d → 10FS+4d | resources Rod (Cost) [0.1%]; Purchase Engineer → Purchase Engineer; Rod (Cost) [0.1%]; baseline start 2017-05-15 → 2017-09-21; baseline finish 2017-05-16 → 2017-10-11 |
| 16 | SS mesh | 2017-05-15 A → 2017-09-26 A (+134d) | 2017-05-16 A → 2017-10-10 A (+147d) | 1d → 10.94d | MeshFS+2d → 11FS+2d | baseline start 2017-05-15 → 2017-09-26; baseline finish 2017-05-16 → 2017-10-10 |
| 17 | Testing components | 2017-05-15 A → 2017-09-26 A (+134d) | 2017-05-16 A → 2017-10-10 A (+147d) | 1d → 10.94d |  | baseline start 2017-05-15 → 2017-09-26; baseline finish 2017-05-16 → 2017-10-10 |
| 18 | **Material receipt** | 2017-05-16 A → 2017-11-03 A (+171d) | 2018-01-06 A → 2018-01-17 A (+11d) | 182d → 58.94d |  | baseline start 2017-05-16 → 2017-11-03; baseline finish 2018-01-06 → 2018-01-17 |
| 20 | Ti rod | 2017-07-12 A → 2017-11-03 A (+114d) | 2017-07-14 A → 2017-12-25 A (+164d) | 2.45d → 40.06d | 13FS+45d → 13FS+25d | resources Rod (Cost) [0.1%]; Purchase Engineer → Purchase Engineer; Rod (Cost) [0.1%]; baseline start 2017-07-12 → 2017-11-03; baseline finish 2017-07-14 → 2017-12-25 |
| 21 | SS Mesh | 2017-07-12 A → 2017-11-03 A (+114d) | 2017-07-14 A → 2017-12-22 A (+161d) | 2.45d → 39.94d | 13FS+45d → 13FS+25d | baseline start 2017-07-12 → 2017-11-03; baseline finish 2017-07-14 → 2017-12-22 |
| 22 | Testing Components | 2017-07-12 A → 2017-11-03 A (+114d) | 2017-07-14 A → 2017-12-22 A (+161d) | 2.45d → 39.94d | 13FS+45d → 13FS+25d | baseline start 2017-07-12 → 2017-11-03; baseline finish 2017-07-14 → 2017-12-22 |
| 23 | Material Costing | 2018-01-06 A → 2017-08-28 A (-131d) | 2018-01-08 A → 2017-11-09 A (-60d) | 1d → 56.94d | Ti plate (Lot 1), Ti plate (Lot 2) → none | resources Consumables (Cost) [0.1%]; Plate (Cost) [0.1%]; Rod (Cost) [0.1%] → none; baseline start 2018-01-06 → 2017-08-28; baseline finish 2018-01-08 → 2017-11-09 |
| 24 | **QC** | 2017-07-14 A → 2017-11-13 A (+122d) | 2017-08-08 A → 2018-02-08 A (+184d) | 20d → 67.51d |  | baseline start 2017-07-14 → 2017-11-13; baseline finish 2017-08-08 → 2018-02-08 |
| 25 | Welder Qualification | 2017-07-14 A → 2017-11-13 A (+122d) | 2017-07-19 A → 2018-01-20 A (+185d) | 4d → 54.01d | Ti plate (Lot 1), 20 → 19 | resources Production Department; TIG Welder [200%]; TIG Welding Machine [200%]; QC Engineer → Production Department; QC Engineer; TIG Welder; TIG Welding Machine; baseline start 2017-07-14 → 2017-11-13; baseline finish 2017-07-19 → 2018-01-20 |
| 26 | Chemical testing | 2017-08-03 A → 2017-11-30 A (+119d) | 2017-08-08 A → 2018-02-01 A (+177d) | 4d → 48.2d | 25FS+12d → 25FS+6d | baseline start 2017-08-03 → 2017-11-30; baseline finish 2017-08-08 → 2018-02-01 |
| 27 | Mechanical testing | 2017-07-27 A → 2017-12-07 A (+133d) | 2017-07-29 A → 2018-02-08 A (+194d) | 2d → 387.58h | 25FS+6d → 25FS+12d | resources SC (Work); QC Engineer → QC Engineer; SC (Work); baseline start 2017-07-27 → 2017-12-07; baseline finish 2017-07-29 → 2018-02-08 |
| 28 | **Fabrication** | 2017-04-13 A → 2017-11-25 A (+226d) | 2018-03-17 A → 2018-04-30 A (+44d) | 521.94d → 241.6d |  | baseline start 2017-07-14 → 2017-11-25; baseline finish 2018-03-08 → 2018-04-30 |
| 29 | Marking | 2017-07-14 A → 2017-11-25 A (+134d) | 2017-07-15 A → 2017-11-27 A (+135d) | 2d → 2.22d | Ti plate (Lot 1), 20, 21 → 19, 20 | resources Fitter; Helper; Plate (Cost) [0.1%] → Helper; Fitter; Plate (Cost) [0.1%]; baseline start 2017-07-14 → 2017-11-25; baseline finish 2017-07-15 → 2017-11-27 |
| 30 | Material identification | 2017-07-14 A → 2018-01-25 A (+195d) | 2017-07-17 A → 2018-01-25 A (+192d) | 3.62d → 0.06d | Ti plate (Lot 1), 20 → 18, 29 | resources Fitter; Helper; Store [50%]; Crane [50%]; Client; QC Engineer [200%] → Helper; Store [50%]; Crane [50%]; Client; Fitter; QC Engineer; baseline start 2017-07-14 → 2018-01-25; baseline finish 2017-07-17 → 2018-01-25 |
| 31 | Machining of Adaptor | 2017-07-17 A → 2018-02-14 A (+212d) | 2017-07-27 A → 2018-02-16 A (+204d) | 15.01d → 6d | 30 → 29, 30 | baseline start 2017-07-17 → 2018-02-14; baseline finish 2017-07-27 → 2018-04-02 |
| 32 | Machining of Socket | 2017-07-17 A → 2018-02-06 A (+204d) | 2017-07-27 A → 2018-02-08 A (+196d) | 15.01d → 6d | 30 → 29, 31 | baseline start 2017-07-17 → 2018-02-06; baseline finish 2017-07-27 → 2018-03-26 |
| 34 | Cutting | 2017-07-17 A → 2017-12-01 A (+137d) | 2017-07-19 A → 2017-12-01 A (+135d) | 4d → 2d | 30 → 29, 33 | resources Gas Cutter; OAGM; Helper → OAGM; Helper; Gas Cutter; baseline start 2017-07-17 → 2017-12-01; baseline finish 2017-07-19 → 2017-12-01 |
| 35 | Machining | 2017-07-19 A → 2017-12-05 A (+139d) | 2017-07-21 A → 2017-12-12 A (+144d) | 4d → 12d |  | resources Lathe Operator; Lathe → Lathe; Lathe Operator; baseline start 2017-07-19 → 2017-12-05; baseline finish 2017-07-21 → 2017-12-12 |
| 37 | Machining of Hemisphere | 2017-08-01 A → 2018-01-24 A (+176d) | 2017-09-04 A → 2018-02-06 A (+155d) | 50.05d → 19d | Heat Treatment & Forming → 36 | baseline start 2017-08-01 → 2018-01-24; baseline finish 2017-09-04 → 2018-02-06 |
| 39 | Component inspection | 2017-09-04 A → 2018-03-09 A (+186d) | 2017-09-06 A → 2018-03-09 A (+184d) | 3.93d → 0.25d | 37, Machining of Slot & Hexagon → 37, 38 | baseline start 2017-09-04 → 2018-03-09; baseline finish 2017-09-06 → 2018-03-09 |
| 40 | **Top Hem to Socket Welding** | 2017-09-06 A → 2018-03-12 A (+187d) | 2017-09-20 A → 2018-04-02 A (+194d) | 22.13d → 34.88d |  | baseline start 2017-09-06 → 2018-03-12; baseline finish 2017-09-20 → 2018-04-02 |
| 41 | Hem to socket Fitup | 2017-09-06 A → 2018-03-12 A (+187d) | 2017-09-08 A → 2018-03-12 A (+185d) | 3.97d → 1.04d |  | constraint none → finish no earlier than 2018-03-21; resources TIG Welder; TIG Welding Machine; Helper; Plate (Cost) [0.1%]; Rod (Cost) [0.1%] → Helper; TIG Welder; TIG Welding Machine; baseline start 2017-09-06 → 2018-03-12; baseline finish 2017-09-08 → 2018-03-12 |
| 42 | Hem to socket root welding | 2017-09-08 A → 2018-03-12 A (+185d) | 2017-09-11 A → 2018-03-21 A (+191d) | 2d → 17.38d | 41 → 41SS | constraint none → finish no earlier than 2018-03-21; resources TIG Welder; TIG Welding Machine; Helper → Helper; TIG Welder; TIG Welding Machine; baseline start 2017-09-08 → 2018-03-12; baseline finish 2017-09-11 → 2018-03-21 |
| 43 | RT inspection | 2017-09-11 A → 2018-03-12 A (+182d) | 2017-09-13 A → 2018-03-26 A (+194d) | 4.16d → 22.98d | 42 → 42SS | constraint none → finish no earlier than 2018-03-21; resources SC (Work); Production Department → Production Department; SC (Work); baseline start 2017-09-11 → 2018-03-12; baseline finish 2017-09-13 → 2018-03-26 |
| 44 | Hem to Socket final welding | 2017-09-13 A → 2018-03-12 A (+180d) | 2017-09-18 A → 2018-03-21 A (+184d) | 8d → 17.38d | 43 → 43SS | constraint none → finish no earlier than 2018-03-21; resources TIG Welder; TIG Welding Machine; Helper → Helper; TIG Welder; TIG Welding Machine; baseline start 2017-09-13 → 2018-03-12; baseline finish 2017-09-18 → 2018-03-21 |
| 45 | RT inspection | 2017-09-18 A → 2018-03-12 A (+175d) | 2017-09-20 A → 2018-04-02 A (+194d) | 4d → 34.88d | 44 → 44SS | resources SC (Work); Production Department → Production Department; SC (Work); baseline start 2017-09-18 → 2018-03-12; baseline finish 2017-09-20 → 2018-04-02 |
| 46 | **Bottom Hem to Socket Welding** | 2017-09-06 A → 2018-03-12 A (+187d) | 2017-09-20 A → 2018-04-02 A (+194d) | 22.13d → 34.83d |  | baseline start 2017-09-06 → 2018-03-12; baseline finish 2017-09-20 → 2018-04-02 |
| 47 | Hem to socket Fitup | 2017-09-06 A → 2018-03-12 A (+187d) | 2017-09-08 A → 2018-03-27 A (+200d) | 3.97d → 25.7d |  | resources TIG Welder; TIG Welding Machine; Helper; Plate (Cost) [0.1%]; Rod (Cost) [0.1%] → Helper; TIG Welder; TIG Welding Machine; baseline start 2017-09-06 → 2018-03-12; baseline finish 2017-09-08 → 2018-03-27 |
| 48 | Hem to socket root welding | 2017-09-08 A → 2018-03-12 A (+185d) | 2017-09-11 A → 2018-03-27 A (+197d) | 2d → 25.7d | 47 → 47SS | resources TIG Welder; TIG Welding Machine; Helper → Helper; TIG Welder; TIG Welding Machine; baseline start 2017-09-08 → 2018-03-12; baseline finish 2017-09-11 → 2018-03-27 |
| 49 | RT inspection | 2017-09-11 A → 2018-03-12 A (+182d) | 2017-09-13 A → 2018-03-22 A (+190d) | 4.16d → 18.69d | 48 → 48SS | resources SC (Work); Production Department → Production Department; SC (Work); baseline start 2017-09-11 → 2018-03-12; baseline finish 2017-09-13 → 2018-03-22 |
| 50 | Hem to Socket final welding | 2017-09-13 A → 2018-03-12 A (+180d) | 2017-09-18 A → 2018-03-27 A (+190d) | 8d → 25.7d | 49 → 49SS | resources TIG Welder; TIG Welding Machine; Helper → Helper; TIG Welder; TIG Welding Machine; baseline start 2017-09-13 → 2018-03-12; baseline finish 2017-09-18 → 2018-03-27 |
| 51 | RT inspection | 2017-09-18 A → 2018-03-12 A (+175d) | 2017-09-20 A → 2018-04-02 A (+194d) | 4d → 34.83d | 50 → 50SS | resources SC (Work); Production Department → Production Department; SC (Work); baseline start 2017-09-18 → 2018-03-12; baseline finish 2017-09-20 → 2018-04-02 |
| 52 | **Hemisphere Welding (Dish Ends)** | 2017-09-20 A → 2018-03-19 A (+180d) | 2017-10-09 A → 2018-03-29 A (+171d) | 28.02d → 17.5d |  | baseline start 2017-09-20 → 2018-03-19; baseline finish 2017-10-09 → 2018-03-29 |
| 53 | Dish Fit Up | 2017-09-20 A → 2018-03-19 A (+180d) | 2017-09-22 A → 2018-03-29 A (+188d) | 4d → 17.5d | 45, 51 → 45FS-5d, 51FS-5d | resources TIG Welder; TIG Welding Machine; Helper → Helper; TIG Welder; TIG Welding Machine; baseline start 2017-09-20 → 2018-03-19; baseline finish 2017-09-22 → 2018-03-29 |
| 54 | Dish Welding (Root) | 2017-09-22 A → 2018-03-19 A (+178d) | 2017-09-26 A → 2018-03-27 A (+182d) | 4d → 12d | 53 → 53SS | resources TIG Welder; TIG Welding Machine; Helper → Helper; TIG Welder; TIG Welding Machine; baseline start 2017-09-22 → 2018-03-19; baseline finish 2017-09-26 → 2018-03-27 |
| 55 | RT inspection | 2017-09-26 A → 2018-03-19 A (+174d) | 2017-09-28 A → 2018-03-23 A (+176d) | 4d → 8.75d | 54 → 54SS | resources SC (Work); Production Department → Production Department; SC (Work); baseline start 2017-09-26 → 2018-03-19; baseline finish 2017-09-28 → 2018-03-23 |
| 56 | Dish Welding (Final) | 2017-09-28 A → 2018-03-20 A (+173d) | 2017-10-04 A → 2018-03-28 A (+175d) | 8.01d → 11.09d | 55 → 55SS+3d | resources TIG Welder; TIG Welding Machine; Helper → Helper; TIG Welder; TIG Welding Machine; baseline start 2017-09-28 → 2018-03-20; baseline finish 2017-10-04 → 2018-03-28 |
| 57 | Cleaning Process | 2017-10-04 A → 2018-03-26 A (+173d) | 2017-10-06 A → 2018-03-26 A (+171d) | 4d → 1d |  | resources Fitter; Helper → Helper; Fitter; baseline start 2017-10-04 → 2018-03-26; baseline finish 2017-10-06 → 2018-03-26 |
| 58 | RT inspection | 2017-10-06 A → 2018-03-26 A (+171d) | 2017-10-09 A → 2018-03-26 A (+168d) | 4d → 4.75h | 57 → 57SS | resources SC (Work); Production Department → Production Department; SC (Work); baseline start 2017-10-06 → 2018-03-26; baseline finish 2017-10-09 → 2018-03-26 |
| 59 | **Final inspection** | 2017-04-13 A → 2018-03-26 A (+347d) | 2017-11-04 A → 2018-04-30 A (+177d) | 317.6d → 56.62d |  | baseline start 2017-10-13 → 2018-03-26; baseline finish 2017-11-04 → 2018-04-30 |
| 60 | Strain gauge fixing | 2017-10-13 A → 2018-03-26 A (+164d) | 2017-10-16 A → 2018-03-27 A (+162d) | 2d → 1.38d | 58FS+7d → 58 | resources Maintenance Engineer [200%]; Fitter; Helper → Fitter; Helper; baseline start 2017-10-13 → 2018-03-26; baseline finish 2017-10-16 → 2018-03-27 |
| 61 | Hydraulic proof pressure testing | 2017-10-16 A → 2018-04-26 A (+192d) | 2017-10-17 A → 2018-04-27 A (+192d) | 3.28d → 2d | 60 → 60FS+50d | resources Fitter [300%]; Foreman; Helper; QC Engineer [200%] → Foreman [50%]; Helper; Fitter [300%]; QC Engineer; baseline start 2017-10-16 → 2018-04-23; baseline finish 2017-10-17 → 2018-04-24 |
| 62 | Cleaning | 2017-10-21 A → 2018-04-27 A (+188d) | 2017-10-23 A → 2018-04-27 A (+186d) | 2d → 1d | Cyclic & Burst test → 61 | resources Fitter; Helper → Helper; Fitter; baseline start 2017-10-21 → 2018-04-24; baseline finish 2017-10-23 → 2018-04-24 |
| 63 | RT inspection | 2017-10-23 A → 2018-04-27 A (+186d) | 2017-10-24 A → 2018-04-27 A (+185d) | 2d → 1d | 62 → 62SS | resources SC (Work); Production Department → SC (Work); baseline start 2017-10-23 → 2018-04-24; baseline finish 2017-10-24 → 2018-04-25 |
| 64 | Final cleaning | 2017-10-24 A → 2018-04-27 A (+185d) | 2017-10-26 A → 2018-04-27 A (+183d) | 4d → 2h |  | resources Fitter; Helper → Helper; Fitter; baseline start 2017-10-24 → 2018-04-25; baseline finish 2017-10-26 → 2018-04-25 |
| 65 | Inspection clearance from client | 2017-10-26 A → 2018-04-27 A (+183d) | 2017-10-27 A → 2018-04-30 A (+185d) | 2d → 1d | 63FS+4d → 64 | baseline start 2017-10-26 → 2018-04-25; baseline finish 2017-10-27 → 2018-04-26 |
| 66 | Stenciling | 2017-10-27 A → 2018-04-30 A (+185d) | 2017-10-31 A → 2018-04-30 A (+181d) | 4d → 1d |  | resources Fitter; Helper → Helper; Fitter; baseline start 2017-10-27 → 2018-04-26; baseline finish 2017-10-31 → 2018-04-26 |
| 67 | Sealing | 2017-10-31 A → 2018-04-30 A (+181d) | 2017-11-02 A → 2018-04-30 A (+179d) | 4d → 1d | 66 → 66SS | resources Fitter; Helper → Helper; Fitter; baseline start 2017-10-31 → 2018-04-26; baseline finish 2017-11-02 → 2018-04-27 |
| 68 | Packing | 2017-11-02 A → 2018-04-30 A (+179d) | 2017-11-04 A → 2018-04-30 A (+177d) | 5.18d → 1d | 67 → 67SS | resources Helper [200%]; Store → Store; Helper [200%]; baseline start 2017-11-02 → 2018-04-27; baseline finish 2017-11-04 → 2018-04-27 |
| 69 | Despatch | 2017-04-13 A → 2018-04-30 A (+382d) | 2017-04-13 A → 2018-04-30 A (+382d) | 1d → 0.5d | 68 → 68SS | resources Helper [200%]; Store → Store; baseline start none → 2018-04-27; baseline finish none → 2018-04-30 |

## Version 3 (saved 2018-05-24, file 4230.mpp)

Note of the change: third commit

Last finish 2018-04-30 → 2018-05-02 (+2d). Complete tasks 58 → 71.

Added:

| ID | Task | Duration | Start | Finish | Predecessors | Resources |
| --- | --- | --- | --- | --- | --- | --- |
| 11 | Mesh | 1h | 2017-11-30 A | 2017-11-30 A | 7 | PPC Engineer |
| 23 | **Material Costing** | 0d | 2017-12-18 A | 2017-12-18 A |  |  |
| 24 | Material Costing - Plates | 0d | 2017-12-18 A | 2017-12-18 A |  |  |
| 25 | Material Costing - Rods | 0d | 2017-12-18 A | 2017-12-18 A |  |  |
| 26 | Material Costing - Others | 0d | 2017-12-18 A | 2017-12-18 A |  |  |
| 36 | Mechanical & Chemical Prep testing speciman | 1.5d | 2018-02-05 A | 2018-02-06 A | 33 | Gas Cutter; Milling Machine; Milling Operator [50%]; Production Department; QC Engineer; SC (Work) |
| 39 | Heat Treatment & Forming | 8d | 2018-01-24 A | 2018-02-03 A | 38 | Helper [200%]; Fitter; Foreman [50%]; Heat Treatment Furnace; Hydraulic Press |
| 41 | Machining of Slot & Hexagon | 2d | 2018-02-28 A | 2018-03-02 A | 35, 34 | Production Department; SC (Work) |
| 73 | Strain gauge fixing (3/10) | 1d | 2018-04-24 A | 2018-04-25 A | 61FS+49d | Fitter; Helper; Maintenance Engineer |
| 74 | Hydraulic proof pressure testing | 2d | 2018-04-25 A | 2018-04-26 A | 73 | Helper; Fitter [300%]; QC Engineer; Foreman |
| 75 | Cleaning | 1d | 2018-04-26 A | 2018-04-26 A | 74 | Helper; Fitter |
| 76 | RT inspection | 1d | 2018-04-26 A | 2018-04-27 A | 75 | SC (Work) |
| 77 | Final cleaning | 2d | 2018-04-27 A | 2018-04-30 A | 76 | Helper; Fitter |
| 78 | Inspection clearance from client | 1d | 2018-04-30 A | 2018-05-02 A | 77 | Client; QC Engineer |
| 79 | Stenciling | 1d | 2018-04-30 A | 2018-04-30 A | 78SS | Helper; Fitter |
| 80 | Sealing | 1d | 2018-04-30 A | 2018-04-30 A | 79SS | Helper; Fitter |
| 81 | Packing | 1d | 2018-04-30 A | 2018-04-30 A | 80SS | Store; Helper [200%] |
| 82 | Despatch | 1d | 2018-04-30 A | 2018-04-30 A | 81SS | Store |

Removed: 11 Mesh; 23 Material Costing; 33 Mechanical& Chemical Prep testing speciman; 36 Heat Treatment& Forming; 38 Machining of Slot& Hexagon

Changed:

| ID | Task | Start | Finish | Duration | Predecessors | Other |
| --- | --- | --- | --- | --- | --- | --- |
| 1 | **Project Initiation** | 2017-08-28 A → 2017-11-02 A (+66d) | 2017-10-30 A → 2017-11-28 A (+29d) | 48d → 21d |  | baseline start 2017-08-28 → 2017-11-02; baseline finish 2017-10-30 → 2017-11-28 |
| 2 | LOA Receipt | 2017-08-28 A → 2017-11-02 A (+66d) | 2017-08-28 A → 2017-11-02 A (+66d) | 0d → 1d |  | baseline start 2017-08-28 → 2017-11-02; baseline finish 2017-08-28 → 2017-11-02 |
| 3 | Wo issue | 2017-09-02 A → 2017-11-03 A (+62d) | 2017-09-04 A → 2017-11-04 A (+61d) |  |  | baseline start 2017-09-02 → 2017-11-03; baseline finish 2017-09-04 → 2017-11-04 |
| 4 | CRM | 2017-09-04 A → 2017-11-06 A (+63d) | 2017-09-05 A → 2017-11-09 A (+65d) | 2d → 4d |  | resources PM; Marketing; Production Department; Purchase Engineer; QC Engineer → PM; Marketing; QC Engineer; Production Department; baseline start 2017-09-04 → 2017-11-06; baseline finish 2017-09-05 → 2017-11-09 |
| 5 | ABG (BG) 10% | 2017-09-08 A → 2017-11-08 A (+61d) | 2017-09-08 A → 2017-11-09 A (+62d) | 0d → 2d | 3FS+7d → 4 | baseline start 2017-09-08 → 2017-11-08; baseline finish 2017-09-08 → 2017-11-09 |
| 6 | Service order receipt | 2017-10-16 A → 2017-11-16 A (+31d) | 2017-10-30 A → 2017-11-28 A (+29d) |  | 4FS+30d → 5FS+4d | baseline start 2017-10-16 → 2017-11-16; baseline finish 2017-10-30 → 2017-11-28 |
| 7 | Drawing Printing & Issue | 2017-09-15 A → 2017-11-29 A (+75d) | 2017-09-15 A → 2017-11-29 A (+75d) |  | 5 → 6 | baseline start 2017-09-15 → 2017-11-29; baseline finish 2017-09-15 → 2017-11-29 |
| 8 | **PR issue** | 2017-09-12 A → 2017-11-29 A (+78d) | 2017-09-21 A → 2017-11-30 A (+70d) | 8.06d → 0.5d |  | baseline start 2017-09-12 → 2017-11-29; baseline finish 2017-09-21 → 2017-11-30 |
| 9 | Plates | 2017-09-12 A → 2017-11-30 A (+79d) | 2017-09-13 A → 2017-11-30 A (+78d) |  |  | baseline start 2017-09-12 → 2017-11-30; baseline finish 2017-09-13 → 2017-11-30 |
| 10 | Rods | 2017-09-21 A → 2017-11-29 A (+69d) | 2017-09-21 A → 2017-11-30 A (+70d) | 8h → 4h |  | baseline start 2017-09-21 → 2017-11-29; baseline finish 2017-09-21 → 2017-11-30 |
| 12 | Testing components | 2017-09-21 A → 2017-11-30 A (+70d) | 2017-09-21 A → 2017-11-30 A (+70d) | 2h → 1h |  | baseline start 2017-09-21 → 2017-11-30; baseline finish 2017-09-21 → 2017-11-30 |
| 13 | **Material Ordering** | 2017-09-21 A → 2017-12-02 A (+72d) | 2017-10-11 A → 2017-12-04 A (+54d) | 13.75d → 1.38d |  | baseline start 2017-09-21 → 2017-12-02; baseline finish 2017-10-11 → 2017-12-04 |
| 14 | Ti Plate | 2017-09-21 A → 2017-12-02 A (+72d) | 2017-09-28 A → 2017-12-04 A (+67d) | 5.06d → 1d | 9FS+4d → 9FS+2d | baseline start 2017-09-21 → 2017-12-02; baseline finish 2017-09-28 → 2017-12-04 |
| 15 | Ti rod | 2017-09-21 A → 2017-12-02 A (+72d) | 2017-10-11 A → 2017-12-04 A (+54d) | 13.75d → 1d | 10FS+4d → 10FS+2d | resources Purchase Engineer; Rod (Cost) [0.1%] → Purchase Engineer; baseline start 2017-09-21 → 2017-12-02; baseline finish 2017-10-11 → 2017-12-04 |
| 16 | SS mesh | 2017-09-26 A → 2017-12-02 A (+67d) | 2017-10-10 A → 2017-12-04 A (+55d) | 10.94d → 1d | MeshFS+2d → 11FS+2d | baseline start 2017-09-26 → 2017-12-02; baseline finish 2017-10-10 → 2017-12-04 |
| 17 | Testing components | 2017-09-26 A → 2017-12-02 A (+67d) | 2017-10-10 A → 2017-12-04 A (+55d) | 10.94d → 1d |  | baseline start 2017-09-26 → 2017-12-02; baseline finish 2017-10-10 → 2017-12-04 |
| 18 | **Material receipt** | 2017-11-03 A → 2018-01-18 A (+76d) | 2018-01-17 A → 2018-02-02 A (+16d) | 58.94d → 11.5d |  | baseline start 2017-11-03 → 2018-01-18; baseline finish 2018-01-17 → 2018-02-02 |
| 19 | Ti plate | 2017-11-03 A → 2018-01-18 A (+76d) | 2018-01-17 A → 2018-02-02 A (+16d) | 58.94d → 11.5d | 13FS+25d → 13FS+45d | resources Plate (Cost) [0.1%]; Purchase Engineer → Purchase Engineer; baseline start 2017-11-03 → 2018-01-18; baseline finish 2018-01-17 → 2018-02-02 |
| 20 | Ti rod | 2017-11-03 A → 2018-01-18 A (+76d) | 2017-12-25 A → 2018-02-02 A (+39d) | 40.06d → 11.5d | 13FS+25d → 13FS+45d | resources Purchase Engineer; Rod (Cost) [0.1%] → Purchase Engineer; baseline start 2017-11-03 → 2018-01-18; baseline finish 2017-12-25 → 2018-02-02 |
| 21 | SS Mesh | 2017-11-03 A → 2018-01-18 A (+76d) | 2017-12-22 A → 2018-02-02 A (+42d) | 39.94d → 11.5d | 13FS+25d → 13FS+45d | baseline start 2017-11-03 → 2018-01-18; baseline finish 2017-12-22 → 2018-02-02 |
| 22 | Testing Components | 2017-11-03 A → 2018-01-18 A (+76d) | 2017-12-22 A → 2018-02-02 A (+42d) | 39.94d → 11.5d | 13FS+25d → 13FS+45d | baseline start 2017-11-03 → 2018-01-18; baseline finish 2017-12-22 → 2018-02-02 |
| 27 | **QC** | 2017-11-13 A → 2018-02-02 A (+81d) | 2018-02-08 A → 2018-02-20 A (+12d) | 67.51d → 14d |  | baseline start 2017-11-13 → 2018-02-02; baseline finish 2018-02-08 → 2018-02-20 |
| 28 | Welder Qualification | 2017-11-13 A → 2018-02-02 A (+81d) | 2018-01-20 A → 2018-02-03 A (+14d) | 54.01d → 1.5d |  | baseline start 2017-11-13 → 2018-02-02; baseline finish 2018-01-20 → 2018-02-03 |
| 29 | Chemical testing | 2017-11-30 A → 2018-02-19 A (+81d) | 2018-02-01 A → 2018-02-20 A (+19d) | 48.2d → 1d | 28FS+6d → 28FS+12d | baseline start 2017-11-30 → 2018-02-19; baseline finish 2018-02-01 → 2018-02-20 |
| 30 | Mechanical testing | 2017-12-07 A → 2018-02-12 A (+67d) | 2018-02-08 A → 2018-02-13 A (+5d) | 387.58h → 1d | 28FS+12d → 28FS+6d | baseline start 2017-12-07 → 2018-02-12; baseline finish 2018-02-08 → 2018-02-13 |
| 31 | **Fabrication** | 2017-11-25 A → 2017-12-07 A (+12d) | 2018-04-30 A → 2018-05-02 A (+2d) | 241.6d → 224.8d |  | baseline start 2017-11-25 → 2017-12-07; baseline finish 2018-04-30 → 2018-04-27 |
| 32 | Marking | 2017-11-25 A → 2017-12-07 A (+12d) | 2017-11-27 A → 2018-02-02 A (+67d) | 2.22d → 0.5d |  | baseline start 2017-11-25 → 2017-12-07; baseline finish 2017-11-27 → 2018-02-02 |
| 33 | Material identification | 2018-01-25 A → 2018-02-02 A (+8d) | 2018-01-25 A → 2018-02-06 A (+12d) | 0.06d → 6d | 18, 32 → 19 | resources Helper; Store [50%]; Crane [50%]; Client; Fitter; QC Engineer → Helper; Store; Crane; Client; Fitter; QC Engineer; baseline start 2018-01-25 → 2018-02-02; baseline finish 2018-01-25 → 2018-02-06 |
| 34 | Machining of Adaptor | 2018-02-14 A → 2018-02-07 A (-7d) | 2018-02-16 A → 2018-02-07 A (-9d) | 6d → 2d | 32, 33 → 33 | baseline start 2018-02-14 → 2018-02-07; baseline finish 2018-04-02 → 2018-02-07 |
| 35 | Machining of Socket | 2018-02-06 A → 2018-02-05 A (-1d) | 2018-02-08 A → 2018-02-07 A (-1d) | 6d → 5d | 32, 34 → 33 | baseline start 2018-02-06 → 2018-02-05; baseline finish 2018-03-26 → 2018-02-07 |
| 37 | Cutting | 2017-12-01 A → 2018-01-24 A (+54d) | 2017-12-01 A → 2018-01-24 A (+54d) |  | 32, Mechanical& Chemical Prep testing speciman → 33 | baseline start 2017-12-01 → 2018-01-24; baseline finish 2017-12-01 → 2018-01-24 |
| 38 | Machining | 2017-12-05 A → 2018-01-29 A (+55d) | 2017-12-12 A → 2018-01-30 A (+49d) | 12d → 2d |  | baseline start 2017-12-05 → 2018-01-29; baseline finish 2017-12-12 → 2018-01-30 |
| 40 | Machining of Hemisphere | 2018-01-24 A → 2018-02-09 A (+16d) | 2018-02-06 A → 2018-03-13 A (+35d) | 19d → 50d | Heat Treatment& Forming → 39 | baseline start 2018-01-24 → 2018-02-09; baseline finish 2018-02-06 → 2018-03-13 |
| 42 | Component inspection |  |  | 0.25d → 1d | 40, Machining of Slot& Hexagon → 41 |  |
| 43 | **Top Hem to Socket Welding** |  | 2018-04-02 A → 2018-03-17 A (-16d) | 34.88d → 5.39d |  | baseline finish 2018-04-02 → 2018-03-17 |
| 44 | Hem to socket Fitup |  |  | 1.04d → 1d |  | constraint finish no earlier than 2018-03-21 → none |
| 45 | Hem to socket root welding |  | 2018-03-21 A → 2018-03-13 A (-8d) | 17.38d → 1.68d | 44SS → 44 | constraint finish no earlier than 2018-03-21 → none; baseline finish 2018-03-21 → 2018-03-13 |
| 46 | RT inspection | 2018-03-12 A → 2018-03-13 A (+1d) | 2018-03-26 A → 2018-03-14 A (-12d) | 22.98d → 1d | 45SS → 45 | constraint finish no earlier than 2018-03-21 → none; baseline start 2018-03-12 → 2018-03-13; baseline finish 2018-03-26 → 2018-03-14 |
| 47 | Hem to Socket final welding | 2018-03-12 A → 2018-03-14 A (+2d) | 2018-03-21 A → 2018-03-16 A (-5d) | 17.38d → 2d | 46SS → 46 | constraint finish no earlier than 2018-03-21 → none; baseline start 2018-03-12 → 2018-03-14; baseline finish 2018-03-21 → 2018-03-16 |
| 48 | RT inspection | 2018-03-12 A → 2018-03-16 A (+4d) | 2018-04-02 A → 2018-03-17 A (-16d) | 34.88d → 1d | 47SS → 47 | baseline start 2018-03-12 → 2018-03-16; baseline finish 2018-04-02 → 2018-03-17 |
| 49 | **Bottom Hem to Socket Welding** |  | 2018-04-02 A → 2018-03-16 A (-17d) | 34.83d → 4.12d |  | baseline finish 2018-04-02 → 2018-03-16 |
| 50 | Hem to socket Fitup |  | 2018-03-27 A → 2018-03-12 A (-15d) | 25.7d → 1d |  | baseline finish 2018-03-27 → 2018-03-12 |
| 51 | Hem to socket root welding |  | 2018-03-27 A → 2018-03-13 A (-14d) | 25.7d → 6.67h | 50SS → 50 | baseline finish 2018-03-27 → 2018-03-13 |
| 52 | RT inspection |  | 2018-03-22 A → 2018-03-13 A (-9d) | 18.69d → 1d | 51SS → 51 | baseline finish 2018-03-22 → 2018-03-13 |
| 53 | Hem to Socket final welding | 2018-03-12 A → 2018-03-13 A (+1d) | 2018-03-27 A → 2018-03-15 A (-12d) | 25.7d → 2d | 52SS → 52 | baseline start 2018-03-12 → 2018-03-13; baseline finish 2018-03-27 → 2018-03-15 |
| 54 | RT inspection | 2018-03-12 A → 2018-03-15 A (+3d) | 2018-04-02 A → 2018-03-16 A (-17d) | 34.83d → 1h | 53SS → 53 | baseline start 2018-03-12 → 2018-03-15; baseline finish 2018-04-02 → 2018-03-16 |
| 55 | **Hemisphere Welding (Dish Ends)** |  | 2018-03-29 A → 2018-03-27 A (-2d) | 17.5d → 5.92d |  | baseline finish 2018-03-29 → 2018-03-27 |
| 56 | Dish Fit Up |  | 2018-03-29 A → 2018-03-23 A (-6d) | 17.5d → 4.55d | 48FS-5d, 54FS-5d → 48FS+1d, 54FS+1d | constraint none → finish no earlier than 2018-03-23; baseline finish 2018-03-29 → 2018-03-23 |
| 57 | Dish Welding (Root) | 2018-03-19 A → 2018-03-20 A (+1d) | 2018-03-27 A → 2018-03-23 A (-4d) | 12d → 3.55d |  | constraint none → finish no earlier than 2018-03-23; baseline start 2018-03-19 → 2018-03-20; baseline finish 2018-03-27 → 2018-03-23 |
| 58 | RT inspection | 2018-03-19 A → 2018-03-22 A (+3d) |  | 8.75d → 1d |  | constraint none → finish no earlier than 2018-03-23; baseline start 2018-03-19 → 2018-03-22 |
| 59 | Dish Welding (Final) | 2018-03-20 A → 2018-03-22 A (+2d) | 2018-03-28 A → 2018-03-27 A (-1d) | 11.09d → 6.62d | 58SS+3d → 58SS | constraint none → finish no earlier than 2018-03-26; baseline start 2018-03-20 → 2018-03-22; baseline finish 2018-03-28 → 2018-03-27 |
| 60 | Cleaning Process | 2018-03-26 A → 2018-03-22 A (-4d) |  | 1d → 3d | 59 → 59SS | baseline start 2018-03-26 → 2018-03-22 |
| 61 | RT inspection |  |  | 4.75h → 1.5h | 60SS → 60FS-1d |  |
| 62 | **Final inspection** |  | 2018-04-30 A → 2018-05-02 A (+2d) | 56.62d → 58.3d |  | baseline finish 2018-04-30 → 2018-04-27 |
| 63 | Strain gauge fixing (7/10) |  |  | 1.38d → 2d |  | was named Strain gauge fixing; resources Fitter; Helper → Fitter; Helper; Maintenance Engineer |
| 64 | Hydraulic proof pressure testing | 2018-04-26 A → 2018-03-27 A (-30d) | 2018-04-27 A → 2018-03-30 A (-28d) | 2d → 6d | 63FS+50d → 63 | resources Foreman [50%]; Helper; Fitter [300%]; QC Engineer → Helper; Fitter [300%]; QC Engineer; Foreman; baseline start 2018-04-23 → 2018-03-27; baseline finish 2018-04-24 → 2018-03-30 |
| 65 | Cleaning | 2018-04-27 A → 2018-03-29 A (-29d) | 2018-04-27 A → 2018-03-30 A (-28d) |  |  | baseline start 2018-04-24 → 2018-03-29; baseline finish 2018-04-24 → 2018-03-30 |
| 66 | RT inspection | 2018-04-27 A → 2018-03-30 A (-28d) | 2018-04-27 A → 2018-03-30 A (-28d) | 1d → 0.5d | 65SS → 65 | baseline start 2018-04-24 → 2018-03-30; baseline finish 2018-04-25 → 2018-03-30 |
| 67 | Final cleaning | 2018-04-27 A → 2018-03-30 A (-28d) | 2018-04-27 A → 2018-03-31 A (-27d) | 2h → 2d |  | baseline start 2018-04-25 → 2018-03-30; baseline finish 2018-04-25 → 2018-03-31 |
| 68 | Inspection clearance from client | 2018-04-27 A → 2018-03-31 A (-27d) | 2018-04-30 A → 2018-03-31 A (-30d) | 1d → 1h |  | baseline start 2018-04-25 → 2018-03-31; baseline finish 2018-04-26 → 2018-03-31 |
| 69 | Stenciling | 2018-04-30 A → 2018-03-31 A (-30d) | 2018-04-30 A → 2018-03-31 A (-30d) | 1d → 1h |  | baseline start 2018-04-26 → 2018-03-31; baseline finish 2018-04-26 → 2018-03-31 |
| 70 | Sealing | 2018-04-30 A → 2018-03-31 A (-30d) | 2018-04-30 A → 2018-03-31 A (-30d) | 1d → 1h | 69SS → 69 | baseline start 2018-04-26 → 2018-03-31; baseline finish 2018-04-27 → 2018-03-31 |
| 71 | Packing | 2018-04-30 A → 2018-03-31 A (-30d) | 2018-04-30 A → 2018-03-31 A (-30d) | 1d → 1h | 70SS → 70 | baseline start 2018-04-27 → 2018-03-31; baseline finish 2018-04-27 → 2018-03-31 |
| 72 | Despatch | 2018-04-30 A → 2018-03-31 A (-30d) | 2018-04-30 A → 2018-03-31 A (-30d) | 0.5d → 1h | 71SS → 71 | baseline start 2018-04-27 → 2018-03-31; baseline finish 2018-04-30 → 2018-03-31 |
