# Develop-Schedule

How a schedule from MS Project changed from version to version. A marks actual dates.

## Version 1 (saved 2024-09-23, file Exam-CM-Control-Cost-2003.mpp)

Note of the change: second commit

| ID | WBS | Task | Duration | Start | Finish | Predecessors | Complete | Total float |
| --- | --- | --- | --- | --- | --- | --- | --- | --- |
| 1 | 1 | **DemoProject** | 63.07d? | 2010-04-12 A | 2010-07-08 |  | 78% | 0d |
| 2 |  | Project Kickoff Meeting | 1d | 2010-04-12 A | 2010-04-13 A |  | 100% |  |
| 3 | 1.2 | **Resource Identification** | 7.5d | 2010-04-13 A | 2010-04-22 A |  | 100% |  |
| 4 |  | Identify software & tools requirment | 6.92d | 2010-04-13 A | 2010-04-22 A | 2 | 100% |  |
| 5 |  | Identify hardware requirment | 7.5d | 2010-04-13 A | 2010-04-22 A | 2 | 100% |  |
| 6 |  | Identify Team | 6.43d | 2010-04-13 A | 2010-04-21 A | 2 | 100% |  |
| 7 |  | Identify Org resource useful project | 6d | 2010-04-13 A | 2010-04-21 A | 2 | 100% |  |
| 8 |  | Read org Process/Policies | 6.25d | 2010-04-13 A | 2010-04-21 A | 2 | 100% |  |
| 9 |  | Resource Identification Complete | 0d | 2010-04-13 A | 2010-04-13 A | 2 | 100% |  |
| 10 | 1.3 | **Develop PMP** | 3.08d | 2010-04-22 A | 2010-04-27 A |  | 100% |  |
| 11 |  | Develop Communication Plan | 2.5d | 2010-04-22 A | 2010-04-27 A | 3 | 100% |  |
| 12 |  | Develop Quality Mgmt Plan | 2.5d | 2010-04-22 A | 2010-04-27 A | 3 | 100% |  |
| 13 |  | Develop & Baseline Schedule | 2.5d | 2010-04-22 A | 2010-04-27 A | 3 | 100% |  |
| 14 |  | Develop & Baseline Estimates | 1.25d | 2010-04-22 A | 2010-04-23 A | 4 | 100% |  |
| 15 |  | Develop Conf Mgmt Plan | 1.25d | 2010-04-22 A | 2010-04-23 A | 3 | 100% |  |
| 16 |  | Develop Procurement Plan | 2.25d | 2010-04-22 A | 2010-04-26 A | 3 | 100% |  |
| 17 |  | Develop Reward Reco Plan | 2d | 2010-04-22 A | 2010-04-26 A | 3 | 100% |  |
| 18 |  | Develop Ground Rule Presentation | 1.25d | 2010-04-22 A | 2010-04-23 A | 3 | 100% |  |
| 19 |  | PMP Reviwed & Signed Off | 0d | 2010-04-22 A | 2010-04-22 A | 3 | 100% |  |
| 20 | 1.4 | **Procurement** | 24.5d | 2010-04-22 A | 2010-05-26 A |  | 100% |  |
| 21 |  | Procure Laptop | 12.5d | 2010-04-27 A | 2010-05-26 A | 16 | 100% |  |
| 22 |  | Procure Desktop, Servers | 15.62d | 2010-04-27 A | 2010-05-18 A | 16 | 100% |  |
| 23 |  | Procure Leaseline | 10d | 2010-04-22 A | 2010-05-05 A | 16FS-3d | 100% |  |
| 24 |  | Procure software & tools required | 15.62d | 2010-04-27 A | 2010-05-18 A | 16 | 100% |  |
| 25 |  | Procurement Complete | 0d | 2010-04-26 A | 2010-04-26 A | 16 | 100% |  |
| 26 | 1.5 | **Setup & Training** | 8.65d | 2010-05-26 A | 2010-06-08 A |  | 100% |  |
| 27 |  | Setup Development Environment | 5d | 2010-05-26 A | 2010-06-02 A | 20 | 100% |  |
| 28 |  | Setup Project Management System | 3.12d | 2010-05-26 A | 2010-05-31 A | 20 | 100% |  |
| 29 |  | Team Kickoff Meeting | 1.3d | 2010-06-02 A | 2010-06-03 A | 27, 28 | 100% |  |
| 30 |  | Train Team on Process & Systems | 1.09d | 2010-06-03 A | 2010-06-04 A | 29 | 100% |  |
| 31 |  | Provide Access on Systems & tools to team | 1.25d | 2010-06-04 A | 2010-06-08 A | 30 | 100% |  |
| 32 |  | Setup & Training Complete | 0d | 2010-06-04 A | 2010-06-04 A | 30 | 100% |  |
| 33 | 1.6 | **Requirment Detailing** | 13.67d | 2010-06-08 A | 2010-06-25 A |  | 100% |  |
| 34 |  | Send 3 People onsite | 13.67d | 2010-06-08 A | 2010-06-25 A | 26 | 100% |  |
| 35 |  | Requirement Collection by onsite People | 13.67d | 2010-06-08 A | 2010-06-25 A | 26 | 100% |  |
| 36 | 1.7 | **Intial Architecture Knowledge Transfer from SME to Team** | 3.17d | 2010-06-08 A | 2010-06-11 A |  | 100% |  |
| 37 |  | Define High Level Architecture | 3.17d | 2010-06-08 A | 2010-06-11 A | 26 | 100% |  |
| 38 | 1.8 | **Developemnt** | 63.07d? | 2010-04-12 | 2010-07-08 |  |  | 0d |
| 39 | 1.8.1 | **Client Management (15-Jan)** | 19d | 2010-06-11 | 2010-07-08 |  |  | 0d |
| 40 |  | Develop Wireframe & UI | 6d | 2010-06-11 | 2010-06-21 | 36 |  | 13d |
| 41 |  | Create Schema | 3d | 2010-06-11 | 2010-06-16 | 36 |  | 0d |
| 42 |  | Develop Data Layer | 3d | 2010-06-16 | 2010-06-21 | 41 |  | 0d |
| 43 |  | Develop Business Layer | 5d | 2010-06-21 | 2010-06-28 | 42 |  | 0d |
| 44 |  | Execute Unit Test Cases | 1d | 2010-06-28 | 2010-06-29 | 43 |  | 0d |
| 45 |  | Built | 1d | 2010-06-29 | 2010-06-30 | 44 |  | 0d |
| 46 |  | Validation Testing | 1d | 2010-06-30 | 2010-07-01 | 45 |  | 5d |
| 47 |  | Usability Testing | 1d | 2010-06-30 | 2010-07-01 | 45 |  | 5d |
| 48 |  | Functionality Testing | 1d | 2010-06-30 | 2010-07-01 | 45 |  | 0d |
| 49 |  | Interation Testing | 1d | 2010-07-01 | 2010-07-02 | 48 |  | 0d |
| 50 |  | System Testing | 1d | 2010-07-02 | 2010-07-05 | 49 |  | 0d |
| 51 |  | UAT of "Client Management" | 3d | 2010-07-05 | 2010-07-08 | 50 |  | 0d |
| 52 |  | Client Management Module Compelete | 0d | 2010-07-08 | 2010-07-08 | 51 |  | 0d |
| 53 |  | Celebrate Milestone | 0d | 2010-07-08 | 2010-07-08 | 52 |  | 0d |
| 54 | 1.8.2 | **Account Opening (10-Feb)** | 1d? | 2010-04-12 | 2010-04-13 |  |  | 56.17d |
| 55 |  | Develop Wireframe & UI | 1d? | 2010-04-12 | 2010-04-13 |  |  | 56.17d |
| 56 |  | Create Schema | 1d? | 2010-04-12 | 2010-04-13 |  |  | 56.17d |
| 57 |  | Develop Data Layer | 1d? | 2010-04-12 | 2010-04-13 |  |  | 56.17d |
| 58 |  | Develop Business Layer | 1d? | 2010-04-12 | 2010-04-13 |  |  | 56.17d |
| 59 |  | Execute Unit Test Cases | 1d? | 2010-04-12 | 2010-04-13 |  |  | 56.17d |
| 60 |  | Built | 1d? | 2010-04-12 | 2010-04-13 |  |  | 56.17d |
| 61 |  | Validation Testing | 1d? | 2010-04-12 | 2010-04-13 |  |  | 56.17d |
| 62 |  | Usability Testing | 1d? | 2010-04-12 | 2010-04-13 |  |  | 56.17d |
| 63 |  | Functionality Testing | 1d? | 2010-04-12 | 2010-04-13 |  |  | 56.17d |
| 64 |  | Interation Testing | 1d? | 2010-04-12 | 2010-04-13 |  |  | 56.17d |
| 65 |  | System Testing | 1d? | 2010-04-12 | 2010-04-13 |  |  | 56.17d |
| 66 |  | UAT of "Account Opening" | 1d? | 2010-04-12 | 2010-04-13 |  |  | 56.17d |
| 67 |  | Account Opening Module Complete | 1d? | 2010-04-12 | 2010-04-13 |  |  | 56.17d |

## Version 2 (saved 2024-09-23, file Exam-CM-Cost-Estimate-2003.mpp)

Note of the change: second commit

Last finish 2010-07-08 → 2010-06-30 (-8d). Complete tasks 30 → 0.

Added:

| ID | Task | Duration | Start | Finish |
| --- | --- | --- | --- | --- |
| 68 | Deposits System (28-Feb) | 1d? | 2010-04-12 | 2010-04-13 |
| 72 | Withdrawal (15-Mar) | 1d? | 2010-04-12 | 2010-04-13 |
| 77 | Security (4-May) | 1d? | 2010-04-12 | 2010-04-13 |
| 82 | Loan Processing (20-May) | 1d? | 2010-04-12 | 2010-04-13 |
| 87 | Mortgage (5-Jun) | 1d? | 2010-04-12 | 2010-04-13 |
| 92 | Demand Draft (15-Jun) | 1d? | 2010-04-12 | 2010-04-13 |
| 93 | Cheque Issuance (22-Jun) | 1d? | 2010-04-12 | 2010-04-13 |
| 94 | Batch Processing (15-Jul) | 1d? | 2010-04-12 | 2010-04-13 |

Changed:

| ID | Task | Start | Finish | Duration | Complete | Total float | Other |
| --- | --- | --- | --- | --- | --- | --- | --- |
| 1 | **DemoProject** | 2010-04-12 A → 2010-04-12 | 2010-07-08 → 2010-06-30 (-8d) | 63.07d? → 57.17d? | 78% → 0% |  | baseline start 2010-04-12 → none; baseline finish 2010-06-30 → none |
| 2 | Project Kickoff Meeting | 2010-04-12 A → 2010-04-12 | 2010-04-13 A → 2010-04-13 |  | 100% → 0% | none → 0d | baseline start 2010-04-12 → none; baseline finish 2010-04-13 → none |
| 3 | **Resource Identification** | 2010-04-13 A → 2010-04-13 | 2010-04-22 A → 2010-04-21 (-1d) | 7.5d → 6d | 100% → 0% | none → 0d | baseline start 2010-04-13 → none; baseline finish 2010-04-21 → none |
| 4 | Identify software & tools requirment | 2010-04-13 A → 2010-04-13 | 2010-04-22 A → 2010-04-21 (-1d) | 6.92d → 6d | 100% → 0% | none → 0d | baseline start 2010-04-13 → none; baseline finish 2010-04-21 → none |
| 5 | Identify hardware requirment | 2010-04-13 A → 2010-04-13 | 2010-04-22 A → 2010-04-21 (-1d) | 7.5d → 6d | 100% → 0% | none → 0d | baseline start 2010-04-13 → none; baseline finish 2010-04-21 → none |
| 6 | Identify Team | 2010-04-13 A → 2010-04-13 | 2010-04-21 A → 2010-04-21 | 6.43d → 6d | 100% → 0% | none → 0d | baseline start 2010-04-13 → none; baseline finish 2010-04-21 → none |
| 7 | Identify Org resource useful project | 2010-04-13 A → 2010-04-13 | 2010-04-21 A → 2010-04-21 |  | 100% → 0% | none → 0d | baseline start 2010-04-13 → none; baseline finish 2010-04-21 → none |
| 8 | Read org Process/Policies | 2010-04-13 A → 2010-04-13 | 2010-04-21 A → 2010-04-21 | 6.25d → 6d | 100% → 0% | none → 0d | baseline start 2010-04-13 → none; baseline finish 2010-04-21 → none |
| 9 | Resource Identification Complete | 2010-04-13 A → 2010-04-13 | 2010-04-13 A → 2010-04-21 (+8d) | 0d → 6d | 100% → 0% | none → 0d | baseline start 2010-04-13 → none; baseline finish 2010-04-21 → none |
| 10 | **Develop PMP** | 2010-04-22 A → 2010-04-21 (-1d) | 2010-04-27 A → 2010-04-23 (-4d) | 3.08d → 2d | 100% → 0% | none → 0d | baseline start 2010-04-21 → none; baseline finish 2010-04-23 → none |
| 11 | Develop Communication Plan | 2010-04-22 A → 2010-04-21 (-1d) | 2010-04-27 A → 2010-04-23 (-4d) | 2.5d → 2d | 100% → 0% | none → 48.17d | baseline start 2010-04-21 → none; baseline finish 2010-04-23 → none |
| 12 | Develop Quality Mgmt Plan | 2010-04-22 A → 2010-04-21 (-1d) | 2010-04-27 A → 2010-04-23 (-4d) | 2.5d → 2d | 100% → 0% | none → 48.17d | baseline start 2010-04-21 → none; baseline finish 2010-04-23 → none |
| 13 | Develop & Baseline Schedule | 2010-04-22 A → 2010-04-21 (-1d) | 2010-04-27 A → 2010-04-23 (-4d) | 2.5d → 2d | 100% → 0% | none → 48.17d | baseline start 2010-04-21 → none; baseline finish 2010-04-23 → none |
| 14 | Develop & Baseline Estimates | 2010-04-22 A → 2010-04-21 (-1d) | 2010-04-23 A → 2010-04-23 | 1.25d → 2d | 100% → 0% | none → 48.17d | baseline start 2010-04-21 → none; baseline finish 2010-04-23 → none |
| 15 | Develop Conf Mgmt Plan | 2010-04-22 A → 2010-04-21 (-1d) | 2010-04-23 A → 2010-04-23 | 1.25d → 2d | 100% → 0% | none → 48.17d | baseline start 2010-04-21 → none; baseline finish 2010-04-23 → none |
| 16 | Develop Procurement Plan | 2010-04-22 A → 2010-04-21 (-1d) | 2010-04-26 A → 2010-04-23 (-3d) | 2.25d → 2d | 100% → 0% | none → 0d | baseline start 2010-04-21 → none; baseline finish 2010-04-23 → none |
| 17 | Develop Reward Reco Plan | 2010-04-22 A → 2010-04-21 (-1d) | 2010-04-26 A → 2010-04-23 (-3d) |  | 100% → 0% | none → 48.17d | baseline start 2010-04-21 → none; baseline finish 2010-04-23 → none |
| 18 | Develop Ground Rule Presentation | 2010-04-22 A → 2010-04-21 (-1d) | 2010-04-23 A → 2010-04-23 | 1.25d → 2d | 100% → 0% | none → 48.17d | baseline start 2010-04-21 → none; baseline finish 2010-04-23 → none |
| 19 | PMP Reviwed & Signed Off | 2010-04-22 A → 2010-04-21 (-1d) | 2010-04-22 A → 2010-04-21 (-1d) |  | 100% → 0% | none → 50.17d | baseline start 2010-04-21 → none; baseline finish 2010-04-21 → none |
| 20 | **Procurement** | 2010-04-22 A → 2010-04-20 (-2d) | 2010-05-26 A → 2010-05-20 (-6d) | 24.5d → 22d | 100% → 0% | none → 0d | baseline start 2010-04-20 → none; baseline finish 2010-05-20 → none |
| 21 | Procure Laptop | 2010-04-27 A → 2010-04-23 (-4d) | 2010-05-26 A → 2010-05-20 (-6d) | 12.5d → 10d | 100% → 0% | none → 0d | baseline start 2010-04-23 → none; baseline finish 2010-05-20 → none |
| 22 | Procure Desktop, Servers | 2010-04-27 A → 2010-04-23 (-4d) | 2010-05-18 A → 2010-05-13 (-5d) | 15.62d → 14d | 100% → 0% | none → 5d | baseline start 2010-04-23 → none; baseline finish 2010-05-13 → none |
| 23 | Procure Leaseline | 2010-04-22 A → 2010-04-20 (-2d) | 2010-05-05 A → 2010-05-10 (+5d) | 10d → 14d | 100% → 0% | none → 8d | resources ProcurementTeam; Leaseline [0.71 Mbps] → ProcurementTeam; Leaseline [1 Mbps]; baseline start 2010-04-20 → none; baseline finish 2010-05-10 → none |
| 24 | Procure software & tools required | 2010-04-27 A → 2010-04-23 (-4d) | 2010-05-18 A → 2010-05-13 (-5d) | 15.62d → 14d | 100% → 0% | none → 5d | baseline start 2010-04-23 → none; baseline finish 2010-05-13 → none |
| 25 | Procurement Complete | 2010-04-26 A → 2010-04-23 (-3d) | 2010-04-26 A → 2010-04-23 (-3d) |  | 100% → 0% | none → 19d | baseline start 2010-04-23 → none; baseline finish 2010-04-23 → none |
| 26 | **Setup & Training** | 2010-05-26 A → 2010-05-20 (-6d) | 2010-06-08 A → 2010-05-31 (-8d) | 8.65d → 7d | 100% → 0% | none → 0d | baseline start 2010-05-20 → none; baseline finish 2010-05-31 → none |
| 27 | Setup Development Environment | 2010-05-26 A → 2010-05-20 (-6d) | 2010-06-02 A → 2010-05-26 (-7d) | 5d → 4d | 100% → 0% | none → 0d | baseline start 2010-05-20 → none; baseline finish 2010-05-26 → none |
| 28 | Setup Project Management System | 2010-05-26 A → 2010-05-20 (-6d) | 2010-05-31 A → 2010-05-26 (-5d) | 3.12d → 4d | 100% → 0% | none → 0d | baseline start 2010-05-20 → none; baseline finish 2010-05-26 → none |
| 29 | Team Kickoff Meeting | 2010-06-02 A → 2010-05-26 (-7d) | 2010-06-03 A → 2010-05-27 (-7d) | 1.3d → 1d | 100% → 0% | none → 0d | baseline start 2010-05-26 → none; baseline finish 2010-05-27 → none |
| 30 | Train Team on Process & Systems | 2010-06-03 A → 2010-05-27 (-7d) | 2010-06-04 A → 2010-05-28 (-7d) | 1.09d → 1d | 100% → 0% | none → 0d | baseline start 2010-05-27 → none; baseline finish 2010-05-28 → none |
| 31 | Provide Access on Systems & tools to team | 2010-06-04 A → 2010-05-28 (-7d) | 2010-06-08 A → 2010-05-31 (-8d) | 1.25d → 1d | 100% → 0% | none → 0d | baseline start 2010-05-28 → none; baseline finish 2010-05-31 → none |
| 32 | Setup & Training Complete | 2010-06-04 A → 2010-05-28 (-7d) | 2010-06-04 A → 2010-05-28 (-7d) |  | 100% → 0% | none → 1d | baseline start 2010-05-28 → none; baseline finish 2010-05-28 → none |
| 33 | **Requirment Detailing** | 2010-06-08 A → 2010-05-31 (-8d) | 2010-06-25 A → 2010-06-17 (-8d) |  | 100% → 0% | none → 8.5d | baseline start 2010-05-31 → none; baseline finish 2010-06-17 → none |
| 34 | Send 3 People onsite | 2010-06-08 A → 2010-05-31 (-8d) | 2010-06-25 A → 2010-06-17 (-8d) |  | 100% → 0% | none → 8.5d | baseline start 2010-05-31 → none; baseline finish 2010-06-17 → none |
| 35 | Requirement Collection by onsite People | 2010-06-08 A → 2010-05-31 (-8d) | 2010-06-25 A → 2010-06-17 (-8d) |  | 100% → 0% | none → 8.5d | baseline start 2010-05-31 → none; baseline finish 2010-06-17 → none |
| 36 | **Intial Architecture Knowledge Transfer from SME to Team** | 2010-06-08 A → 2010-05-31 (-8d) | 2010-06-11 A → 2010-06-03 (-8d) |  | 100% → 0% | none → 0d | baseline start 2010-05-31 → none; baseline finish 2010-06-03 → none |
| 37 | Define High Level Architecture | 2010-06-08 A → 2010-05-31 (-8d) | 2010-06-11 A → 2010-06-03 (-8d) |  | 100% → 0% | none → 0d | baseline start 2010-05-31 → none; baseline finish 2010-06-03 → none |
| 38 | **Developemnt** |  | 2010-07-08 → 2010-06-30 (-8d) | 63.07d? → 57.17d? |  |  | baseline start 2010-04-12 → none; baseline finish 2010-06-30 → none |
| 39 | **Client Management (15-Jan)** | 2010-06-11 → 2010-06-03 (-8d) | 2010-07-08 → 2010-06-30 (-8d) |  |  |  | baseline start 2010-06-03 → none; baseline finish 2010-06-30 → none |
| 40 | Develop Wireframe & UI | 2010-06-11 → 2010-06-03 (-8d) | 2010-06-21 → 2010-06-11 (-10d) |  |  |  | baseline start 2010-06-03 → none; baseline finish 2010-06-11 → none |
| 41 | Create Schema | 2010-06-11 → 2010-06-03 (-8d) | 2010-06-16 → 2010-06-08 (-8d) |  |  |  | baseline start 2010-06-03 → none; baseline finish 2010-06-08 → none |
| 42 | Develop Data Layer | 2010-06-16 → 2010-06-08 (-8d) | 2010-06-21 → 2010-06-11 (-10d) |  |  |  | baseline start 2010-06-08 → none; baseline finish 2010-06-11 → none |
| 43 | Develop Business Layer | 2010-06-21 → 2010-06-11 (-10d) | 2010-06-28 → 2010-06-18 (-10d) |  |  |  | baseline start 2010-06-11 → none; baseline finish 2010-06-18 → none |
| 44 | Execute Unit Test Cases | 2010-06-28 → 2010-06-18 (-10d) | 2010-06-29 → 2010-06-21 (-8d) |  |  |  | baseline start 2010-06-18 → none; baseline finish 2010-06-21 → none |
| 45 | Built | 2010-06-29 → 2010-06-21 (-8d) | 2010-06-30 → 2010-06-22 (-8d) |  |  |  | baseline start 2010-06-21 → none; baseline finish 2010-06-22 → none |
| 46 | Validation Testing | 2010-06-30 → 2010-06-22 (-8d) | 2010-07-01 → 2010-06-23 (-8d) |  |  |  | baseline start 2010-06-22 → none; baseline finish 2010-06-23 → none |
| 47 | Usability Testing | 2010-06-30 → 2010-06-22 (-8d) | 2010-07-01 → 2010-06-23 (-8d) |  |  |  | baseline start 2010-06-22 → none; baseline finish 2010-06-23 → none |
| 48 | Functionality Testing | 2010-06-30 → 2010-06-22 (-8d) | 2010-07-01 → 2010-06-23 (-8d) |  |  |  | baseline start 2010-06-22 → none; baseline finish 2010-06-23 → none |
| 49 | Interation Testing | 2010-07-01 → 2010-06-23 (-8d) | 2010-07-02 → 2010-06-24 (-8d) |  |  |  | baseline start 2010-06-23 → none; baseline finish 2010-06-24 → none |
| 50 | System Testing | 2010-07-02 → 2010-06-24 (-8d) | 2010-07-05 → 2010-06-25 (-10d) |  |  |  | baseline start 2010-06-24 → none; baseline finish 2010-06-25 → none |
| 51 | UAT of "Client Management" | 2010-07-05 → 2010-06-25 (-10d) | 2010-07-08 → 2010-06-30 (-8d) |  |  |  | baseline start 2010-06-25 → none; baseline finish 2010-06-30 → none |
| 52 | Client Management Module Compelete | 2010-07-08 → 2010-06-30 (-8d) | 2010-07-08 → 2010-06-30 (-8d) |  |  |  | baseline start 2010-06-30 → none; baseline finish 2010-06-30 → none |
| 53 | Celebrate Milestone | 2010-07-08 → 2010-06-30 (-8d) | 2010-07-08 → 2010-06-30 (-8d) |  |  |  | baseline start 2010-06-30 → none; baseline finish 2010-06-30 → none |

## Version 3 (saved 2024-09-23, file Exam-CM-Determine-Budget-2003.mpp)

Note of the change: second commit

Last finish stays 2010-06-30.

Removed: 68 Deposits System (28-Feb); 72 Withdrawal (15-Mar); 77 Security (4-May); 82 Loan Processing (20-May); 87 Mortgage (5-Jun); 92 Demand Draft (15-Jun); 93 Cheque Issuance (22-Jun); 94 Batch Processing (15-Jul)

Changed:

| ID | Task | Other |
| --- | --- | --- |
| 1 | **DemoProject** | baseline start none → 2010-04-12; baseline finish none → 2010-06-30 |
| 2 | Project Kickoff Meeting | baseline start none → 2010-04-12; baseline finish none → 2010-04-13 |
| 3 | **Resource Identification** | baseline start none → 2010-04-13; baseline finish none → 2010-04-21 |
| 4 | Identify software & tools requirment | baseline start none → 2010-04-13; baseline finish none → 2010-04-21 |
| 5 | Identify hardware requirment | baseline start none → 2010-04-13; baseline finish none → 2010-04-21 |
| 6 | Identify Team | baseline start none → 2010-04-13; baseline finish none → 2010-04-21 |
| 7 | Identify Org resource useful project | baseline start none → 2010-04-13; baseline finish none → 2010-04-21 |
| 8 | Read org Process/Policies | baseline start none → 2010-04-13; baseline finish none → 2010-04-21 |
| 9 | Resource Identification Complete | baseline start none → 2010-04-13; baseline finish none → 2010-04-21 |
| 10 | **Develop PMP** | baseline start none → 2010-04-21; baseline finish none → 2010-04-23 |
| 11 | Develop Communication Plan | baseline start none → 2010-04-21; baseline finish none → 2010-04-23 |
| 12 | Develop Quality Mgmt Plan | baseline start none → 2010-04-21; baseline finish none → 2010-04-23 |
| 13 | Develop & Baseline Schedule | baseline start none → 2010-04-21; baseline finish none → 2010-04-23 |
| 14 | Develop & Baseline Estimates | baseline start none → 2010-04-21; baseline finish none → 2010-04-23 |
| 15 | Develop Conf Mgmt Plan | baseline start none → 2010-04-21; baseline finish none → 2010-04-23 |
| 16 | Develop Procurement Plan | baseline start none → 2010-04-21; baseline finish none → 2010-04-23 |
| 17 | Develop Reward Reco Plan | baseline start none → 2010-04-21; baseline finish none → 2010-04-23 |
| 18 | Develop Ground Rule Presentation | baseline start none → 2010-04-21; baseline finish none → 2010-04-23 |
| 19 | PMP Reviwed & Signed Off | baseline start none → 2010-04-21; baseline finish none → 2010-04-21 |
| 20 | **Procurement** | baseline start none → 2010-04-20; baseline finish none → 2010-05-20 |
| 21 | Procure Laptop | baseline start none → 2010-04-23; baseline finish none → 2010-05-20 |
| 22 | Procure Desktop, Servers | baseline start none → 2010-04-23; baseline finish none → 2010-05-13 |
| 23 | Procure Leaseline | baseline start none → 2010-04-20; baseline finish none → 2010-05-10 |
| 24 | Procure software & tools required | baseline start none → 2010-04-23; baseline finish none → 2010-05-13 |
| 25 | Procurement Complete | baseline start none → 2010-04-23; baseline finish none → 2010-04-23 |
| 26 | **Setup & Training** | baseline start none → 2010-05-20; baseline finish none → 2010-05-31 |
| 27 | Setup Development Environment | baseline start none → 2010-05-20; baseline finish none → 2010-05-26 |
| 28 | Setup Project Management System | baseline start none → 2010-05-20; baseline finish none → 2010-05-26 |
| 29 | Team Kickoff Meeting | baseline start none → 2010-05-26; baseline finish none → 2010-05-27 |
| 30 | Train Team on Process & Systems | baseline start none → 2010-05-27; baseline finish none → 2010-05-28 |
| 31 | Provide Access on Systems & tools to team | baseline start none → 2010-05-28; baseline finish none → 2010-05-31 |
| 32 | Setup & Training Complete | baseline start none → 2010-05-28; baseline finish none → 2010-05-28 |
| 33 | **Requirment Detailing** | baseline start none → 2010-05-31; baseline finish none → 2010-06-17 |
| 34 | Send 3 People onsite | baseline start none → 2010-05-31; baseline finish none → 2010-06-17 |
| 35 | Requirement Collection by onsite People | baseline start none → 2010-05-31; baseline finish none → 2010-06-17 |
| 36 | **Intial Architecture Knowledge Transfer from SME to Team** | baseline start none → 2010-05-31; baseline finish none → 2010-06-03 |
| 37 | Define High Level Architecture | baseline start none → 2010-05-31; baseline finish none → 2010-06-03 |
| 38 | **Developemnt** | baseline start none → 2010-04-12; baseline finish none → 2010-06-30 |
| 39 | **Client Management (15-Jan)** | baseline start none → 2010-06-03; baseline finish none → 2010-06-30 |
| 40 | Develop Wireframe & UI | baseline start none → 2010-06-03; baseline finish none → 2010-06-11 |
| 41 | Create Schema | baseline start none → 2010-06-03; baseline finish none → 2010-06-08 |
| 42 | Develop Data Layer | baseline start none → 2010-06-08; baseline finish none → 2010-06-11 |
| 43 | Develop Business Layer | baseline start none → 2010-06-11; baseline finish none → 2010-06-18 |
| 44 | Execute Unit Test Cases | baseline start none → 2010-06-18; baseline finish none → 2010-06-21 |
| 45 | Built | baseline start none → 2010-06-21; baseline finish none → 2010-06-22 |
| 46 | Validation Testing | baseline start none → 2010-06-22; baseline finish none → 2010-06-23 |
| 47 | Usability Testing | baseline start none → 2010-06-22; baseline finish none → 2010-06-23 |
| 48 | Functionality Testing | baseline start none → 2010-06-22; baseline finish none → 2010-06-23 |
| 49 | Interation Testing | baseline start none → 2010-06-23; baseline finish none → 2010-06-24 |
| 50 | System Testing | baseline start none → 2010-06-24; baseline finish none → 2010-06-25 |
| 51 | UAT of "Client Management" | baseline start none → 2010-06-25; baseline finish none → 2010-06-30 |
| 52 | Client Management Module Compelete | baseline start none → 2010-06-30; baseline finish none → 2010-06-30 |
| 53 | Celebrate Milestone | baseline start none → 2010-06-30; baseline finish none → 2010-06-30 |
