# MSF Application Development

How a schedule from MS Project changed from version to version. A marks actual dates.

## Version 1 (saved 2008-04-04, file PMI-Demo-ChangeMade.mpp)

| ID | WBS | Task | Duration | Start | Finish | Predecessors | Complete | Total float |
| --- | --- | --- | --- | --- | --- | --- | --- | --- |
| 1 | 1 | **Project Kick-Off** | 6d? | 2007-01-01 A | 2007-01-08 A |  | 100% |  |
| 2 | 1.1 | **Form Team** | 6d? | 2007-01-01 A | 2007-01-08 A |  | 100% |  |
| 3 |  | PSM Travels Delhi | 1d? | 2007-01-01 A | 2007-01-01 A |  | 100% |  |
| 4 |  | Define team roles | 3d | 2007-01-01 A | 2007-01-03 A |  | 100% |  |
| 5 |  | Identify required skills | 2d | 2007-01-01 A | 2007-01-02 A |  | 100% |  |
| 6 |  | Identify resources | 4d | 2007-01-03 A | 2007-01-08 A | 5, 4 | 100% |  |
| 7 |  | Assign roles to resources | 2d | 2007-01-05 A | 2007-01-08 A | 6 | 100% |  |
| 8 |  | Team formed | 0d | 2007-01-08 A | 2007-01-08 A | 7 | 100% |  |
| 9 | 2 | **Envisioning** | 44.66d? | 2007-01-09 A | 2007-03-12 | 8 | 94% | 244.25d |
| 10 |  | Define preliminary business requirements (ongoing) | 29d | 2007-01-09 A | 2007-02-16 A | 8 | 100% |  |
| 11 |  | Purchase Telerik | 1d? | 2007-01-09 A | 2007-01-09 A |  | 100% |  |
| 12 |  | Purchase Dreamviewer | 1d? | 2007-01-09 A | 2007-01-09 A |  | 100% |  |
| 13 |  | Risk management | 1d | 2007-01-09 A | 2007-01-09 A | 8 | 100% |  |
| 14 | 2.5 | **Define Project Structure** | 9d | 2007-01-09 A | 2007-01-19 | 8 | 94% | 279.91d |
| 15 |  | Define project tracking process | 5d | 2007-01-09 A | 2007-01-15 A |  | 100% |  |
| 16 |  | Define problem resolution process | 4d | 2007-01-09 A | 2007-01-12 A |  | 100% |  |
| 17 |  | Define issue tracking process | 3d | 2007-01-09 A | 2007-01-11 |  | 63% | 285.91d |
| 18 |  | Define change control procedures | 4d | 2007-01-12 A | 2007-01-17 A | 17 | 100% |  |
| 19 |  | Define accountability and expectations | 2d | 2007-01-18 A | 2007-01-19 A | 18 | 100% |  |
| 20 |  | Project structure determined | 0d | 2007-01-19 A | 2007-01-19 A | 15, 16, 19 | 100% |  |
| 21 | 2.6 | **Research and Gather Assumptions** | 25.16d? | 2007-01-09 A | 2007-02-13 |  | 83% | 263.75d |
| 22 |  | Team Travel to US | 1d? | 2007-01-09 A | 2007-01-09 A |  | 100% |  |
| 23 |  | Conduct preliminary user interviews | 2d | 2007-01-09 A | 2007-01-10 A |  | 100% |  |
| 24 |  | Define usage scenarios | 10d | 2007-01-11 A | 2007-01-24 | 23 | 58% | 275.71d |
| 25 |  | Develop preliminary user profile | 5d | 2007-01-25 A | 2007-01-31 A | 24 | 100% |  |
| 26 |  | Develop preliminary vision statement | 1d | 2007-02-01 A | 2007-02-01 A | 25 | 100% |  |
| 27 |  | Establish design goals | 8d | 2007-01-25 A | 2007-02-05 | 24 | 85% | 268.91d |
| 28 |  | Develop preliminary solution concept | 5.16d | 2007-02-06 A | 2007-02-13 A | 27, 26 | 100% |  |
| 29 | 2.7 | **Develop Preliminary Project Scope** | 19.5d? | 2007-02-13 A | 2007-03-12 A | 28, 26 | 100% |  |
| 30 |  | PM Travel to US | 1d? | 2007-02-13 A | 2007-02-14 A |  | 100% |  |
| 31 |  | Define critical success factors | 2d | 2007-02-13 A | 2007-02-15 A |  | 100% |  |
| 32 |  | Define success metrics | 1d | 2007-02-15 A | 2007-02-16 A | 31 | 100% |  |
| 33 |  | Define major deliverables (preliminary) | 3d | 2007-02-16 A | 2007-02-21 A | 32 | 100% |  |
| 34 |  | Draft vision/scope | 4.29d | 2007-02-21 A | 2007-02-27 A | 33 | 100% |  |
| 35 |  | Review vision/scope | 2d | 2007-02-26 A | 2007-02-28 A | 34 | 100% |  |
| 36 |  | Update vision/scope | 3d | 2007-02-28 A | 2007-03-05 A | 35 | 100% |  |
| 37 |  | Buffer | 4d | 2007-03-05 A | 2007-03-09 A | 36 | 100% |  |
| 38 |  | Perform milestone review | 1.5d | 2007-03-09 A | 2007-03-12 A | 36, 37 | 100% |  |
| 39 |  | Vision approved | 0d | 2007-03-12 A | 2007-03-12 A | 38, 33, 20, 13 | 100% |  |
| 40 | 3 | **Planning** | 58.75d? | 2007-03-12 A | 2007-05-31 | 39 | 96% | 186d |
| 41 |  | Update risk assessment | 1d | 2007-03-12 A | 2007-03-13 A | 39 | 100% |  |
| 42 |  | Conduct user interviews | 10d | 2007-03-12 A | 2007-03-26 A | 39 | 100% |  |
| 43 | 3.3 | **Functional Specification Creation** | 32d? | 2007-03-12 A | 2007-04-25 |  | 95% | 212.75d |
| 44 |  | BA Travel to Mumbai Office | 1d? | 2007-03-12 A | 2007-03-13 A |  | 100% |  |
| 45 |  | Develop functional specification - drop 0 | 5d | 2007-03-13 A | 2007-03-20 | 42FS-9% | 76% | 238.75d |
| 46 |  | Develop functional specification - drop 1 | 5.31d | 2007-03-20 A | 2007-03-27 A | 45 | 100% |  |
| 47 |  | Develop functional specification - drop 2 | 5.31d | 2007-03-27 A | 2007-04-03 A | 46 | 100% |  |
| 48 |  | Develop functional specification - drop n | 5.31d | 2007-04-03 A | 2007-04-10 A | 47 | 100% |  |
| 49 |  | Functional specification baseline | 0d | 2007-04-25 A | 2007-04-25 A | 48, 54 | 100% |  |
| 50 | 3.4 | **Development Plan** | 28.25d | 2007-03-16 A | 2007-04-25 |  | 93% | 212.5d |
| 51 | 3.4.1 | **Create Development Plan** | 28d | 2007-03-16 A | 2007-04-25 |  | 92% | 212.75d |
| 52 |  | Conduct conceptual design | 13.27d | 2007-03-16 A | 2007-04-04 A | 45SS+3d | 100% |  |
| 53 |  | Conduct logical design | 16.76d | 2007-03-22 A | 2007-04-13 A | 52SS+4d | 100% |  |
| 54 |  | Conduct physical design | 19d | 2007-03-29 A | 2007-04-25 | 53SS+5d | 80% | 212.75d |
| 55 |  | Develop development schedule | 5d | 2007-04-18 A | 2007-04-25 A | 54SS+7.5% | 100% |  |
| 56 | 3.5 | **Test Plan** | 35d | 2007-03-16 A | 2007-05-04 A |  | 100% |  |
| 57 |  | Develop test plan | 30d | 2007-03-16 A | 2007-04-27 A | 45SS+3d | 100% |  |
| 58 |  | Develop test schedule | 5d | 2007-04-27 A | 2007-05-04 A | 57, 49 | 100% |  |
| 59 | 3.6 | **User Education Plan** | 20.25d | 2007-03-16 A | 2007-04-13 A |  | 100% |  |
| 60 |  | Develop user education plan | 17.5d | 2007-03-16 A | 2007-04-10 A | 45SS+3d | 100% |  |
| 61 |  | Develop user education schedule | 2.75d | 2007-04-10 A | 2007-04-13 A | 60 | 100% |  |
| 62 | 3.7 | **Logistics Plan** | 48d | 2007-03-12 A | 2007-05-17 A |  | 100% |  |
| 63 | 3.7.1 | **Develop Logistics Plan** | 41d | 2007-03-12 A | 2007-05-08 A |  | 100% |  |
| 64 |  | Perform infrastructure analysis | 15d | 2007-03-12 A | 2007-04-02 A |  | 100% |  |
| 65 |  | Develop security plan | 2.89d | 2007-03-20 A | 2007-03-23 A | 45 | 100% |  |
| 66 |  | Develop deployment plan | 16d | 2007-04-03 A | 2007-04-25 A | 45FS-3d, 65, 54SS+3d, 64 | 100% |  |
| 67 |  | Order components | 15d | 2007-04-17 A | 2007-05-08 A | 66SS+10d | 100% |  |
| 68 |  | Logistics plan complete | 0d | 2007-05-08 A | 2007-05-08 A | 65, 67 | 100% |  |
| 69 |  | Create logistics schedule | 7d | 2007-05-08 A | 2007-05-17 A | 68 | 100% |  |
| 70 | 3.8 | **Product Management Plan** | 18d | 2007-03-12 A | 2007-04-05 A |  | 100% |  |

| ID | WBS | Task | Duration | Start | Finish | Predecessors | Complete | Total float |
| --- | --- | --- | --- | --- | --- | --- | --- | --- |
| 71 |  | Develop product management plan | 14d | 2007-03-16 A | 2007-04-05 A | 45SS+3d | 100% |  |
| 72 |  | Develop product management schedule | 5d | 2007-03-12 A | 2007-03-19 A |  | 100% |  |
| 73 | 3.9 | **Program Management Plan** | 45d | 2007-03-16 A | 2007-05-18 | 45SS+3d | 87% | 195.75d |
| 74 |  | Create program management plan | 37.5d | 2007-03-16 A | 2007-05-08 A | 45SS+3d | 100% |  |
| 75 |  | Create program management schedule | 20d | 2007-04-16 A | 2007-05-18 | 74 | 63% | 195.75d |
| 76 |  | Project plan baseline established | 0d | 2007-05-17 A | 2007-05-17 A | 50, 56, 59, 62, 70, 73, 71 | 100% |  |
| 77 | 3.11 | **Consolidate Project Plans** | 10.75d | 2007-05-17 A | 2007-05-31 A | 76 | 100% |  |
| 78 |  | Review aggregate plan | 4d | 2007-05-17 A | 2007-05-23 A |  | 100% |  |
| 79 |  | Create aggregate schedule | 2d | 2007-05-23 A | 2007-05-25 A | 78, 69, 75, 55, 58, 61, 72 | 100% |  |
| 80 |  | Buffer | 4d | 2007-05-25 A | 2007-05-31 A | 79 | 100% |  |
| 81 |  | Determine ship date | 0d | 2007-05-31 A | 2007-05-31 A | 80 | 100% |  |
| 82 |  | Vision/scope frozen | 0d | 2007-05-31 A | 2007-05-31 A | 81 | 100% |  |
| 83 |  | Perform milestone review | 0.75d | 2007-05-31 A | 2007-05-31 A | 82 | 100% |  |
| 84 |  | Project plan approved | 0d | 2007-05-31 A | 2007-05-31 A | 77, 83, 41 | 100% |  |
| 85 | 4 | **Developing** | 81d | 2007-05-31 | 2007-09-21 |  |  | 0d |
| 86 |  | Update risk assessment | 1d | 2007-05-31 | 2007-06-01 | 84 |  | 79d |
| 87 |  | Equipment for development/proof of concept arrives | 0d | 2007-05-31 | 2007-05-31 | 84 |  | 0d |
| 88 |  | Set up development environment/lab | 5d | 2007-05-31 | 2007-06-07 | 87 |  | 0d |
| 89 | 4.4 | **Internal Release #1** | 24d | 2007-05-31 | 2007-07-04 |  |  | 0d |
| 90 |  | Develop target components | 9d | 2007-05-31 | 2007-06-13 | 84 |  | 15d |
| 91 |  | Test individual components | 5d | 2007-06-07 | 2007-06-14 | 88 |  | 0d |
| 92 |  | Test integrated application | 6d | 2007-06-11 | 2007-06-19 | 91SS+2d |  | 0d |
| 93 |  | Develop performance enhancement materials | 4d | 2007-05-31 | 2007-06-06 | 84 |  | 8d |
| 94 |  | Test and review materials | 3d | 2007-06-06 | 2007-06-11 | 93 |  | 8d |
| 95 |  | Develop distribution procedures | 9d | 2007-06-11 | 2007-06-22 | 94 |  | 8d |
| 96 |  | Create distribution product | 2d | 2007-06-19 | 2007-06-21 | 91, 92 |  | 0d |
| 97 |  | Distribute to appropriate parties | 1d | 2007-06-21 | 2007-06-22 | 96 |  | 0d |
| 98 |  | Buffer | 8d | 2007-06-22 | 2007-07-04 | 97 |  | 0d |
| 99 |  | Internal release #1 complete | 0d | 2007-07-04 | 2007-07-04 | 89, 98 |  | 0d |
| 100 |  | Review results from internal release | 2d | 2007-07-04 | 2007-07-06 | 99 |  | 0d |
| 101 |  | Perform post-release review | 1d | 2007-07-06 | 2007-07-09 | 100 |  | 0d |
| 102 | 4.8 | **Internal Release #n** | 24d | 2007-07-04 | 2007-08-07 |  |  | 0d |
| 103 |  | Develop target components | 10d | 2007-07-04 | 2007-07-18 | 99 |  | 3d |
| 104 |  | Test individual components | 4d | 2007-07-04 | 2007-07-10 | 99 |  | 9d |
| 105 |  | Test integrated application | 5d | 2007-07-04 | 2007-07-11 | 99 |  | 18d |
| 106 |  | Develop performance enhancement materials | 4d | 2007-07-09 | 2007-07-13 | 101 |  | 0d |
| 107 |  | Test and review materials | 3d | 2007-07-13 | 2007-07-18 | 106 |  | 0d |
| 108 |  | Develop distribution procedures | 3d | 2007-07-18 | 2007-07-23 | 107 |  | 0d |
| 109 |  | Create distribution product | 4d | 2007-07-23 | 2007-07-27 | 104, 103, 108 |  | 0d |
| 110 |  | Buffer | 6d | 2007-07-27 | 2007-08-06 | 109 |  | 0d |
| 111 |  | Distribute to appropriate parties | 1d | 2007-08-06 | 2007-08-07 | 105, 110 |  | 0d |
| 112 |  | Internal release #n complete | 1d | 2007-08-07 | 2007-08-08 | 102, 111 |  | 0d |
| 113 |  | Review results from internal release | 2d | 2007-08-08 | 2007-08-10 | 112 |  | 0d |
| 114 |  | Functional specification freeze | 1d | 2007-08-10 | 2007-08-13 | 113 |  | 0d |
| 115 |  | Final feature development | 10d | 2007-08-13 | 2007-08-27 | 114 |  | 0d |
| 116 |  | Final logistics development | 9d | 2007-08-13 | 2007-08-24 | 114 |  | 1d |
| 117 |  | Final performance support development | 5d | 2007-08-13 | 2007-08-20 | 114 |  | 5d |
| 118 |  | Feature complete | 0d | 2007-08-27 | 2007-08-27 | 115, 117, 116 |  | 0d |
| 119 | 4.16 | **Update Plans and Schedules** | 13d | 2007-08-27 | 2007-09-13 |  |  | 0d |
| 120 |  | Update development plan | 4d | 2007-08-27 | 2007-08-31 | 118 |  | 0d |
| 121 |  | Update testing plan | 3d | 2007-08-27 | 2007-08-30 | 120SS |  | 10d |
| 122 |  | Update logistics plan | 13d | 2007-08-27 | 2007-09-13 | 120SS |  | 0d |
| 123 |  | Update program management plan | 3d | 2007-08-27 | 2007-08-30 | 120SS |  | 10d |
| 124 |  | Update product management plan | 3d | 2007-08-27 | 2007-08-30 | 120SS |  | 10d |
| 125 |  | Update user education plan | 6d | 2007-08-27 | 2007-09-04 | 120SS |  | 7d |
| 126 |  | Buffer | 3d | 2007-09-13 | 2007-09-18 | 120, 121, 122, 125, 123, 124 |  | 0d |
| 127 |  | Perform milestone review | 2d | 2007-09-18 | 2007-09-20 | 126 |  | 0d |
| 128 |  | Scope complete | 1d | 2007-09-20 | 2007-09-21 | 119, 127, 86 |  | 0d |
| 129 | 5 | **Stabilizing** | 73d | 2007-09-21 | 2008-01-02 |  |  | 0d |
| 130 |  | Update risk assessment | 0.99d | 2007-09-21 | 2007-09-24 | 128, 109 |  | 71.01d |
| 131 | 5.2 | **Beta Release 1** | 32d | 2007-09-21 | 2007-11-06 |  |  | 0d |
| 132 |  | Develop beta plan | 3d | 2007-09-21 | 2007-09-26 | 109, 128 |  | 0d |
| 133 |  | Solicit and select users | 2d | 2007-09-26 | 2007-09-28 | 132 |  | 0d |
| 134 |  | Prepare beta package | 8d | 2007-09-26 | 2007-10-08 | 126, 133SS |  | 0d |
| 135 |  | Begin beta | 0d | 2007-10-08 | 2007-10-08 | 134 |  | 0d |
| 136 |  | Provide beta support | 8d | 2007-10-08 | 2007-10-18 | 135 |  | 0d |
| 137 |  | Gather user feedback | 7d | 2007-10-18 | 2007-10-29 | 136 |  | 0d |
| 138 |  | Close beta support | 0d | 2007-10-29 | 2007-10-29 | 137 |  | 0d |
| 139 |  | Fix bugs | 10d | 2007-10-23 | 2007-11-06 | 138FS-4d |  | 0d |
| 140 |  | End beta | 0d | 2007-11-06 | 2007-11-06 | 136, 139 |  | 0d |

| ID | WBS | Task | Duration | Start | Finish | Predecessors | Total float |
| --- | --- | --- | --- | --- | --- | --- | --- |
| 141 |  | Beta release n | 1d | 2007-11-06 | 2007-11-07 | 140 | 0d |
| 142 |  | Fix bugs | 10d | 2007-11-07 | 2007-11-21 | 141 | 0d |
| 143 |  | Bug convergence | 1d | 2007-11-21 | 2007-11-22 | 142 | 0d |
| 144 |  | Fix high priority bugs | 10d | 2007-11-22 | 2007-12-06 | 143 | 0d |
| 145 |  | Zero bug release | 0d | 2007-12-06 | 2007-12-06 | 144 | 0d |
| 146 |  | Perform final bug triage | 5d | 2007-12-06 | 2007-12-13 | 145 | 0d |
| 147 | 5.9 | **Release Candidate 1** | 7d | 2007-12-13 | 2007-12-24 | 146 | 0d |
| 148 |  | Development team evaluation | 2d | 2007-12-13 | 2007-12-17 |  | 0d |
| 149 |  | Customer/user evaluation | 2d | 2007-12-17 | 2007-12-19 | 148 | 0d |
| 150 |  | Support evaluation | 3d | 2007-12-19 | 2007-12-24 | 149 | 0d |
| 151 |  | Release candidate n | 6d | 2007-12-24 | 2008-01-01 | 150 | 0d |
| 152 |  | Golden release | 0d | 2008-01-01 | 2008-01-01 | 151 | 0d |
| 153 |  | Release | 1d | 2008-01-01 | 2008-01-02 | 152, 130 | 0d |
| 154 |  | Post project review | 2d | 2008-02-13 | 2008-02-15 | 153FS+30d | 0d |

## Version 2 (saved 2008-04-05, file PMI-Demo.mpp)

Last finish stays 2008-02-15. Complete tasks 61 → 59.

Changed:

| ID | Task | Start | Finish | Complete | Total float | Other |
| --- | --- | --- | --- | --- | --- | --- |
| 4 | Define team roles |  |  |  |  | resources Program management; Product management; Development; Testing; Logistics management → Program management; Product management; Development; Testing-Manul; Logistics management |
| 5 | Identify required skills |  |  |  |  | resources Program management; Product management; Development; Testing; Logistics management → Program management; Product management; Development; Testing-Manul; Logistics management |
| 6 | Identify resources |  |  |  |  | resources Program management; Product management; Development; Testing; Logistics management → Program management; Product management; Development; Testing-Manul; Logistics management |
| 7 | Assign roles to resources |  |  |  |  | resources Program management; Product management; Development; Testing; Logistics management → Program management; Product management; Development; Testing-Manul; Logistics management |
| 9 | **Envisioning** |  |  | 94% → 92% |  |  |
| 11 | Purchase Telerik | 2007-01-09 A → 2007-01-09 | 2007-01-09 A → 2007-01-09 | 100% → 0% | none → 287.91d | resources Telerik Software → Telerik Software [0.1%] |
| 12 | Purchase Dreamviewer | 2007-01-09 A → 2007-01-09 | 2007-01-09 A → 2007-01-09 | 100% → 0% | none → 287.91d | resources Dreamweaver → Dreamweaver [0.1%] |
| 15 | Define project tracking process |  |  |  |  | resources Program management [3.8%]; Product management [15.4%]; User education [25%]; Testing [25%]; Development [25%]; Logistics management [25%] → Program management [3.8%]; Product management [15.4%]; User education [25%]; Testing-Manul [25%]; Development [25%]; Logistics management [25%] |
| 16 | Define problem resolution process |  |  |  |  | resources Program management [25%]; Development [25%]; Testing [25%] → Program management [25%]; Development [25%]; Testing-Manul [25%] |
| 17 | Define issue tracking process |  |  |  |  | resources Development [25%]; Testing [25%]; Program management [50%] → Development [25%]; Testing-Manul [25%]; Program management [50%] |
| 18 | Define change control procedures |  |  |  |  | resources Testing [25%]; Program management [25%]; Development [25%]; Product management [25%] → Testing-Manul [25%]; Program management [25%]; Development [25%]; Product management [25%] |
| 32 | Define success metrics |  |  |  |  | resources Product management; Testing → Product management; Testing-Manul |
| 34 | Draft vision/scope |  |  |  |  | resources Program management; Product management; Development; Testing; Logistics management → Program management; Product management; Development; Testing-Manul; Logistics management |
| 35 | Review vision/scope |  |  |  |  | resources Program management; Product management; Development; Testing; Logistics management; User education → Program management; Product management; Development; Testing-Manul; Logistics management; User education |
| 38 | Perform milestone review |  |  |  |  | resources Program management; Product management; Development; Testing; Logistics management; User education → Program management; Product management; Development; Testing-Manul; Logistics management; User education |
| 39 | Vision approved |  |  |  |  | resources Program management; Product management; Development; Testing; Logistics management → Program management; Product management; Development; Testing-Manul; Logistics management |
| 42 | Conduct user interviews |  |  |  |  | resources Product management [50%]; Development [25%]; Testing [25%]; Logistics management [25%]; Program management [50%] → Product management [50%]; Development [25%]; Testing-Manul [25%]; Logistics management [25%]; Program management [50%] |
| 45 | Develop functional specification - drop 0 |  |  |  |  | resources Program management [80%]; Product management [30%]; Development [40%]; Testing [50%]; Logistics management [40%]; User education [40%] → Program management [80%]; Product management [30%]; Development [40%]; Testing-Manul [50%]; Logistics management [40%]; User education [40%] |
| 46 | Develop functional specification - drop 1 |  |  |  |  | resources Program management [80%]; Product management [30%]; Development [40%]; Testing [50%]; Logistics management [40%]; User education [40%] → Program management [80%]; Product management [30%]; Development [40%]; Testing-Manul [50%]; Logistics management [40%]; User education [40%] |
| 47 | Develop functional specification - drop 2 |  |  |  |  | resources Program management [80%]; Product management [30%]; Development [40%]; Testing [50%]; Logistics management [40%]; User education [40%] → Program management [80%]; Product management [30%]; Development [40%]; Testing-Manul [50%]; Logistics management [40%]; User education [40%] |
| 48 | Develop functional specification - drop n |  |  |  |  | resources Program management [80%]; Product management [30%]; Development [40%]; Testing [50%]; Logistics management [40%]; User education [40%] → Program management [80%]; Product management [30%]; Development [40%]; Testing-Manul [50%]; Logistics management [40%]; User education [40%] |
| 52 | Conduct conceptual design |  |  |  |  | resources Development [80%]; Program management [40%]; Testing [25%]; Product management [20%] → Development [80%]; Program management [40%]; Testing-Manul [25%]; Product management [20%] |
| 53 | Conduct logical design |  |  |  |  | resources Development [50%]; Program management [50%]; Testing [25%]; Logistics management [25%]; User education [25%] → Development [50%]; Program management [50%]; Testing-Manul [25%]; Logistics management [25%]; User education [25%] |
| 54 | Conduct physical design |  |  |  |  | resources Development [80%]; Testing [50%]; Program management [10%] → Development [80%]; Testing-Manul [50%]; Program management [10%] |
| 55 | Develop development schedule |  |  |  |  | resources Development; Testing [10%] → Development; Testing-Manul [10%] |
| 56 | **Test Plan** |  |  |  |  | resources Testing → Testing-Manul |
| 57 | Develop test plan |  |  |  |  | resources Testing; Program management [25%] → Testing-Manul; Program management [25%] |
| 58 | Develop test schedule |  |  |  |  | resources Testing; Program management [10%] → Testing-Manul; Program management [10%] |
| 60 | Develop user education plan |  |  |  |  | resources User education; Testing [20%]; Product management [10%]; Customer [0.1%] → User education; Testing-Manul [20%]; Product management [10%]; Customer [0.1%] |
| 66 | Develop deployment plan |  |  |  |  | resources Logistics management; Testing [20%]; User education [10%]; Customer [0.1%] → Logistics management; Testing-Manul [20%]; User education [10%]; Customer [0.1%] |
| 76 | Project plan baseline established |  |  |  |  | resources Program management; Product management; Development; Testing; Logistics management → Program management; Product management; Development; Testing-Manul; Logistics management |
| 78 | Review aggregate plan |  |  |  |  | resources Program management [9.4%]; Product management [30%]; Development [30%]; Testing [30%]; Logistics management [30%]; User education [30%] → Program management [9.4%]; Product management [30%]; Development [30%]; Testing-Manul [30%]; Logistics management [30%]; User education [30%] |
| 81 | Determine ship date |  |  |  |  | resources Program management; Product management; Development; Testing; Logistics management; User education → Program management; Product management; Development; Testing-Manul; Logistics management; User education |
| 83 | Perform milestone review |  |  |  |  | resources Program management; Product management; Development; Testing; Logistics management; User education; Customer [0.1%] → Program management; Product management; Development; Testing-Manul; Logistics management; User education; Customer [0.1%] |
| 84 | Project plan approved |  |  |  |  | resources Program management; Product management; Development; Testing; Logistics management → Program management; Product management; Development; Testing-Manul; Logistics management |
| 86 | Update risk assessment |  |  |  |  | resources Program management [1.2%]; Product management [1.2%]; Development [1.2%]; Testing [1.2%]; Logistics management [3%]; User education [3%] → Program management [1.2%]; Product management [1.2%]; Development [1.2%]; Testing-Manul [1.2%]; Logistics management [3%]; User education [3%] |
| 91 | Test individual components |  |  |  |  | resources Testing; Development [25%] → Testing-Manul; Development [25%] |
| 92 | Test integrated application |  |  |  |  | resources Testing; Development [25%] → Testing-Manul; Development [25%] |
| 94 | Test and review materials |  |  |  |  | resources Testing → Testing-Manul |
| 95 | Develop distribution procedures |  |  |  |  | resources Logistics management; Testing [30%] → Logistics management; Testing-Manul [30%] |
| 96 | Create distribution product |  |  |  |  | resources Program management; Development; Testing; Logistics management; User education → Program management; Development; Testing-Manul; Logistics management; User education |
| 99 | Internal release #1 complete |  |  |  |  | resources Program management; Product management; Development; Testing; Logistics management → Program management; Product management; Development; Testing-Manul; Logistics management |
| 103 | Develop target components |  |  |  |  | resources Development; Testing [50%]; Logistics management → Development; Testing-Manul [50%]; Logistics management |
| 104 | Test individual components |  |  |  |  | resources Testing → Testing-Manul |
| 105 | Test integrated application |  |  |  |  | resources Testing → Testing-Manul |
| 107 | Test and review materials |  |  |  |  | resources Testing → Testing-Manul |
| 109 | Create distribution product |  |  |  |  | resources Development; Testing; Logistics management; User education → Development; Testing-Manul; Logistics management; User education |
| 112 | Internal release #n complete |  |  |  |  | resources Program management; Product management; Development; Testing; Logistics management → Program management; Product management; Development; Testing-Manul; Logistics management |
| 113 | Review results from internal release |  |  |  |  | resources Program management; Product management; Development; Testing; Logistics management; User education → Program management; Product management; Development; Testing-Manul; Logistics management; User education |
| 115 | Final feature development |  |  |  |  | resources Development; Testing [50%] → Development; Testing-Manul [50%] |
| 116 | Final logistics development |  |  |  |  | resources Logistics management; Testing [50%] → Logistics management; Testing-Manul [50%] |
| 117 | Final performance support development |  |  |  |  | resources User education; Testing [50%] → User education; Testing-Manul [50%] |
| 121 | Update testing plan |  |  |  |  | resources Testing → Testing-Manul |
| 126 | Buffer |  |  |  |  | resources Program management; Product management; Development; Testing; Logistics management; User education → Program management; Product management; Development; Testing-Manul; Logistics management; User education |
| 127 | Perform milestone review |  |  |  |  | resources Program management; Product management; Development; Testing; Logistics management; User education → Program management; Product management; Development; Testing-Manul; Logistics management; User education |
| 128 | Scope complete |  |  |  |  | resources Program management; Product management; Development; Testing; Logistics management → Program management; Product management; Development; Testing-Manul; Logistics management |
| 130 | Update risk assessment |  |  |  |  | resources Program management [0%]; Product management [0%]; Development [0%]; Testing [0.3%]; Logistics management [3.3%]; User education [10%]; Support organization [10%]; Customer [0.1%] → Program management [0%]; Product management [0%]; Development [0%]; Testing-Manul [0.3%]; Logistics management [3.3%]; User education [10%]; Support organization [10%]; Customer [0.1%] |
| 134 | Prepare beta package |  |  |  |  | resources Program management; Development; Logistics management; Testing → Program management; Development; Logistics management; Testing-Manul |
| 142 | Fix bugs |  |  |  |  | resources Development; Testing; Program management [25%] → Development; Testing-Manul; Program management [25%] |
| 148 | Development team evaluation |  |  |  |  | resources Development; Logistics management [80%]; Program management [50%]; Product management [30%]; User education [50%]; Testing [75%] → Development; Logistics management [80%]; Program management [50%]; Product management [30%]; User education [50%]; Testing-Manul [75%] |
